# 07.09.26

Schedule from MS Project, 2023-03-10 to 2027-03-10, A marks actual dates.
DEXP

## Calendars

- Стандартный: Mon-Fri 09:00-13:00, 14:00-18:00; Sat-Sun off.

## Resources

| Resource |
| --- |
| Макаревич А |
| Дедов В |
| Бобренок В |
| Тимофеев В |
| Зорькин В |
| Бундин В |
| Труфанов А |
| Некрасов А |
| Шуранов Ю |
| Домоводов К |
| Амрулин Р |
| Карабанов |
| Олег |
| оплот |
| Коленкоров |
| Мультан |
| Малинина М |
| Лобанов И |
| Дворник |
| Подрядчик |
| Олег лукас |
| Черепанов И |
| оперторы2 |
| оператор2 |
| Тракресурс |
| Сапелин С |
| Технолог |
| Фрезер ЧПУ |
| Пинчук А |
| КИнжекул |
| ТО_2 |
| ТО_1 |
| ТО_М |
| ТО |
| Кладовщики |

## Schedule

| ID | WBS | Task | Type | Duration | Start | Finish | Complete | Remaining | Total slack | Constraint | Resources | Work | Actual work |
| --- | --- | --- | --- | --- | --- | --- | --- | --- | --- | --- | --- | --- | --- |
| 1 | 1 | **1 цех** |  | 431.5d? | 2023-03-10 09:00 A | 2024-11-02 13:00 | 99% | 6.11d? |  |  |  | 22522h | 22271.1h |
| 2 | 1.1 | Разобрать улитки с охладителя 2 линия, 4 улитки на печах и улитки циклонов - замена подшипников, каких нет сообщить |  | 2d | 2026-09-07 09:00 | 2026-09-08 18:00 |  |  | 130.59d | start no earlier than 2026-09-05 09:00 | Макаревич А | 16h |  |
| 3 | 1.2 | Ревизия утечек воздуха на квадропаке (важно проверить пневмораспределителях) и вакуумную систему | manual | 2h | 2026-09-06 09:00 | 2026-09-06 11:00 |  |  |  | start no earlier than 2026-09-06 09:00 | Дедов В | 2h |  |
| 4 | 1.3 | Комплексное ТО квадропака, проверка всех соединений, протяжка болтов на всех узлах | manual | 4h | 2026-09-06 09:00 | 2026-09-06 13:00 |  |  |  | start no earlier than 2026-09-06 09:00 | Дедов В | 4h |  |
| 5 | 1.4 | Сделать основную кнопку на НОТИСЕ, чтоб срабатывало от нее, а не от блока управления |  | 1h | 2026-09-07 09:00 | 2026-09-07 10:00 |  |  | 132.47d | start no earlier than 2026-09-05 09:00 | Дедов В | 1h |  |
| 6 | 1.5 | Убрать все кабеля на полу в зоне фасовки, теко-нотис (кабельный менеджмент) |  | 2h | 2026-09-07 09:00 | 2026-09-07 11:00 |  |  | 132.34d | start no earlier than 2026-09-05 09:00 | Дедов В | 2h |  |
| 7 | 1.6 | Клемная коробка на жирах сделать, сейчас вся висит на хомутах 2 линия |  | 1h | 2026-09-07 09:00 | 2026-09-07 10:00 |  |  | 132.47d | start no earlier than 2026-09-05 09:00 | Дедов В | 1h |  |
| 8 | 1.7 | Дефектовка двигателя от питателя прекондиционера/ прозвонить (возможно подготовить для сдачи на перемотку) |  | 2h | 2026-09-04 09:00 | 2026-09-04 11:00 |  |  | 133.34d | start no earlier than 2026-09-04 09:00 | Бобренок В | 2h |  |
| 9 | 1.8 | Ошибка на баке жиротопки 2 линия Err.4 /разобраться и устранить причину |  | 1h | 2026-09-04 09:00 | 2026-09-04 10:00 |  |  | 133.47d | start no earlier than 2026-09-04 09:00 | Бобренок В | 1h |  |
| 10 | 1.9 | Установить новые газлифты, которые получил Бобренок на жиротопку 2 этаж |  | 2h | 2026-09-07 09:00 | 2026-09-07 11:00 |  |  | 132.34d | start no earlier than 2026-09-07 09:00 | Тимофеев В | 2h |  |
| 11 | 1.10 | **Не работают роль ставни на жирах, не стопоряться сделать/устранить неисправность** |  | 1d | 2026-09-08 09:00 | 2026-09-08 18:00 |  |  | 130.59d |  | Тимофеев В | 16.33h |  |
| 12 | 1.10.1 | Вызвать подрядчика/контроль |  | 10min | 2026-09-08 09:00 | 2026-09-08 09:10 |  |  | 131.57d | start no earlier than 2026-09-08 09:00 | Зорькин В | 0.17h |  |
| 13 | 1.10.2 | получить счет на ремонт |  | 1d | 2026-09-08 09:00 | 2026-09-08 18:00 |  |  | 130.59d | start no earlier than 2026-09-08 09:00 | Зорькин В | 8h |  |
| 14 | 1.10.3 | согласовать с подрядчиком дату ремонта |  | 10min | 2026-09-08 09:00 | 2026-09-08 09:10 |  |  | 131.57d | start no earlier than 2026-09-08 09:00 | Зорькин В | 0.17h |  |
| 15 | 1.11 | закреить отбойник корридор навесок (заанкерить) |  | 1h | 2026-09-03 09:00 | 2026-09-03 10:00 |  |  | 134.47d | start no earlier than 2026-09-03 08:00 | Бобренок В | 1h |  |
| 16 | 1.12 | Переподключение кондиционера срежима кондиционера на автоматический |  | 15min | 2026-09-02 09:00 A | 2026-09-02 09:15 A | 100% |  |  | start no earlier than 2026-09-02 09:00 | Бобренок В | 0.25h | 0.25h |
| 17 | 1.13 | Замена редуктора поворотного стола |  | 1h | 2026-09-02 09:00 A | 2026-09-02 10:00 A | 100% |  |  | start no earlier than 2026-09-02 09:00 | Бобренок В | 1h | 1h |
| 18 | 1.14 | Программирование частотника теко 0,4 привод смещения ленты |  | 2h | 2026-09-02 09:00 A | 2026-09-02 11:00 A | 100% |  |  | start no earlier than 2026-09-02 09:00 | Тимофеев В | 2h | 2h |
| 19 | 1.15 | Прозвонить кабель паллетных весов ошибка Error 10 |  | 1h | 2026-09-07 09:00 | 2026-09-07 10:00 |  |  | 132.47d | start no earlier than 2026-09-05 09:00 | Дедов В | 1h |  |
| 20 | 1.16 | Замена подшипников на ножевом узле |  | 2h | 2026-09-01 09:00 A | 2026-09-01 11:00 A | 100% |  |  | start no earlier than 2026-09-01 09:00 | Бундин В | 2h | 2h |
| 21 | 1.17 | Замена насоса на водяной рубашке жиротопке 2 этаж |  | 2h | 2026-09-01 09:00 A | 2026-09-01 11:00 A | 100% |  |  | start no earlier than 2026-09-01 09:00 | Бундин В | 2h | 2h |
| 22 | 1.18 | Замена контактора 1 линия 2 зона экструдера |  | 1h | 2026-09-01 09:00 A | 2026-09-01 10:00 A | 100% |  |  | start no earlier than 2026-09-01 09:00 | Бундин В | 1h | 1h |
| 23 | 1.19 | Редуктор смесителя 1 линия, собрать информацию, что не так, что нужно сделать |  | 30min | 2026-09-02 09:00 A | 2026-09-02 09:30 A | 100% |  |  | start no earlier than 2026-09-02 09:00 | Тимофеев В | 0.5h | 0.5h |
| 24 | 1.20 | Ремонт мухобойки 1 цех в корридоре завоза навесок |  | 1h | 2026-09-01 09:00 A | 2026-09-01 10:00 A | 100% |  |  | start no earlier than 2026-09-01 09:00 | Труфанов А | 1h | 1h |
| 25 | 1.21 | капает с кондиционера ближе к жировику (устранить) |  | 2h | 2026-08-31 09:00 A | 2026-08-31 11:00 A | 100% |  |  | start no earlier than 2026-08-31 09:00 | Бундин В; Тимофеев В | 4h | 4h |
| 26 | 1.22 | отвезти внутренний блок с 1 цеха на синий склад | manual | 1h | 2026-08-30 09:00 A | 2026-08-30 10:00 A | 100% |  |  | start no earlier than 2026-08-30 09:00 | Бундин В | 1h | 1h |
| 27 | 1.23 | чистка фильтра кондиционера между печками | manual | 1h | 2026-08-31 09:00 A | 2026-08-31 10:00 A | 100% |  |  | start no earlier than 2026-08-31 09:00 | Бундин В | 1h | 1h |
| 28 | 1.24 | ревизия приточной вентиляции (протяжка контактов и т.д.) | manual | 3h | 2026-08-31 09:00 A | 2026-08-31 12:00 A | 100% |  |  | start no earlier than 2026-08-31 09:00 | Дедов В | 3h | 3h |
| 29 | 1.25 | прикрутить лоток между барабанами, чтобы не бил о лопасти 1 линия | manual | 1h | 2026-08-30 09:00 A | 2026-08-30 10:00 A | 100% |  |  | start no earlier than 2026-08-30 09:00 | Бундин В | 1h | 1h |
| 30 | 1.26 | улитка на подиуме за цехом, прикрутить отвод в бок (отвод под подиумом) | manual | 1h | 2026-08-31 09:00 A | 2026-08-31 10:00 A | 100% |  |  | start no earlier than 2026-08-31 09:00 | Бундин В | 1h | 1h |
| 31 | 1.27 | течет вода с поломоечной машинки - разобраться | manual | 2h | 2026-08-31 09:00 A | 2026-08-31 11:00 A | 100% |  |  | start no earlier than 2026-08-31 09:00 | Дедов В | 2h | 2h |

| ID | WBS | Task | Duration | Start | Finish | Complete | Remaining | Total slack | Constraint | Resources | Work | Actual work |
| --- | --- | --- | --- | --- | --- | --- | --- | --- | --- | --- | --- | --- |
| 32 | 1.28 | **почистить шнек сухого гидрализата (1 линия)** | 0.12d | 2026-08-28 08:00 A | 2026-08-28 10:00 A | 100% |  |  |  | Бобренок В | 3h | 3h |
| 33 | 1.28.1 | замена пошипников | 1h | 2026-08-28 08:00 A | 2026-08-28 10:00 A | 100% |  |  | start no earlier than 2026-08-28 08:00 | Тимофеев В; Некрасов А | 2h | 2h |
| 34 | 1.29 | замена фильтров на приточке | 1h | 2026-08-27 09:00 A | 2026-08-27 10:00 A | 100% |  |  | start no earlier than 2026-08-27 09:00 | Дедов В | 1h | 1h |
| 35 | 1.30 | **продумать как сделать герметичную крышку на смесителе сухого гидрализата** | 7.25d | 2026-08-27 09:00 A | 2026-09-07 11:00 | 40% | 4.35d | 132.34d |  |  | 14h | 8h |
| 36 | 1.30.1 | изготовить крышку (расскажу по телефону) | 4h | 2026-08-27 09:00 A | 2026-08-27 13:00 A | 100% |  |  | start no earlier than 2026-08-27 09:00 | Бобренок В; Шуранов Ю | 8h | 8h |
| 37 | 1.30.2 | изготовить крышку для 2 линии (как сделал Слава) | 4h | 2026-09-01 09:00 | 2026-09-01 13:00 |  |  | 136.09d | start no earlier than 2026-09-01 09:00 | Макаревич А | 4h |  |
| 38 | 1.30.3 | установка на струбцинах с уплотнителями | 2h | 2026-09-07 09:00 | 2026-09-07 11:00 |  |  | 132.34d | start no earlier than 2026-09-07 09:00 | Тимофеев В | 2h |  |
| 39 | 1.31 | **метал от тенов печи, устранить причину** | 10.5d | 2026-08-24 09:00 A | 2026-09-07 13:00 | 38% | 6.55d | 132.09d |  |  | 10.42h | 2.42h |
| 40 | 1.31.1 | выяснить сгорел тен русский или китайский (будет ночью остановка) | 15min | 2026-08-27 09:00 A | 2026-08-27 09:15 A | 100% |  |  | start no earlier than 2026-08-27 09:00 | Бобренок В | 0.25h | 0.25h |
| 41 | 1.31.2 | вскрыть 2 зону и посмотреть какой тен (мойка) | 1h | 2026-08-31 09:00 A | 2026-08-31 10:00 A | 100% |  |  | start no earlier than 2026-09-02 09:00 | Некрасов А | 1h | 1h |
| 42 | 1.31.3 | осмотр состояния тенов/ планирование замены | 10min | 2026-08-27 09:00 A | 2026-08-27 09:10 A | 100% |  |  | start no earlier than 2026-08-27 09:00 | Бобренок В | 0.17h | 0.17h |
| 43 | 1.31.4 | выяснить статус поставки тенов из китая | 1h | 2026-08-24 09:00 A | 2026-08-24 10:00 A | 100% |  |  | start no earlier than 2026-08-24 09:00 | Шуранов Ю | 1h | 1h |
| 44 | 1.31.5 | замена заброкованных осмотром тенов | 4h | 2026-09-07 09:00 | 2026-09-07 13:00 |  |  | 132.09d | start no earlier than 2026-09-07 09:00 | Некрасов А; Тимофеев В | 8h |  |
| 45 | 1.32 | замена плата 485 в контроллере 2 линия | 1h | 2026-08-21 09:00 A | 2026-08-21 10:00 A | 100% |  |  | start no earlier than 2026-08-21 09:00 | Дедов В | 1h | 1h |
| 46 | 1.33 | перемонтаж частотный привод сух гидролизат | 2h | 2026-09-02 09:00 A | 2026-09-02 11:00 A | 100% |  |  | start no earlier than 2026-09-04 09:00 | Некрасов А; Дедов В | 4h | 4h |
| 47 | 1.34 | поменять светильник где вывозят готовую продукцию (с люлки) | 2h | 2026-08-31 09:00 A | 2026-08-31 11:00 A | 100% |  |  | start no earlier than 2026-08-31 09:00 | Тимофеев В; Бундин В | 4h | 4h |
| 48 | 1.35 | на нотис настроить кнопку, чтобы работала в цикле | 1h | 2026-08-20 09:00 A | 2026-08-20 10:00 A | 100% |  |  | start no earlier than 2026-08-20 09:00 | Дедов В | 1h | 1h |
| 49 | 1.36 | изготовление герметичной крышки под мойкой экструдера (объясню по телефону) занкрепить на анкера | 2h | 2026-08-19 08:00 A | 2026-08-19 11:00 A | 100% |  |  | start no earlier than 2026-08-19 08:00 | Бобренок В | 2h | 2h |
| 50 | 1.37 | **проверка пылесоса, почему не стартует (в слесарке)** | 1d? | 2026-08-25 09:00 A | 2026-08-25 18:00 A | 100% |  |  |  | Бобренок В | 16h | 16h |
| 51 | 1.37.1 | заказать двигатель и выяснить на гарантии он или нет | 1d? | 2026-08-25 09:00 A | 2026-08-25 18:00 A | 100% |  |  | start no earlier than 2026-08-25 08:00 | Шуранов Ю | 8h | 8h |
| 52 | 1.38 | ремонт свет в раздевалке | 30min | 2026-08-14 09:00 A | 2026-08-14 09:30 A | 100% |  |  | start no earlier than 2026-08-14 09:00 | Бундин В | 0.5h | 0.5h |
| 53 | 1.39 | стиральная машинка проверка насоса слива, разборка, фото шильдик. Не качает. | 2h | 2026-08-15 09:00 A | 2026-08-17 11:00 A | 100% |  |  | start no earlier than 2026-08-15 09:00 | Бундин В | 2h | 2h |
| 54 | 1.40 | **настройка пробники на толстую цветную пленку** | 9.38d? | 2026-08-14 09:00 A | 2026-08-27 12:00 A | 100% |  |  |  |  | 25.25h | 25.25h |
| 55 | 1.40.1 | тест пленки на пробнике с Луговских В в 11 00 | 1h | 2026-08-14 09:00 A | 2026-08-14 10:00 A | 100% |  |  | start no earlier than 2026-08-14 09:00 | Тимофеев В | 1h | 1h |
| 56 | 1.40.2 | установить протяжной ролик к турбе от ТЕКО 1.5 с синего,снять с синего примерка | 2h | 2026-08-17 09:00 A | 2026-08-17 11:00 A | 100% |  |  | start no earlier than 2026-08-17 09:00 | Тимофеев В | 2h | 2h |
| 57 | 1.40.3 | настройка пробника с режимом фотометки | 1h | 2026-08-27 09:00 A | 2026-08-27 10:00 A | 100% |  |  | start no earlier than 2026-08-27 09:00 | Дедов В | 1h | 1h |
| 58 | 1.40.4 | получить пневмоцилиндр | 15min | 2026-08-20 09:00 A | 2026-08-20 09:15 A | 100% |  |  | start no earlier than 2026-08-20 09:00 | Тимофеев В | 0.25h | 0.25h |
| 59 | 1.40.5 | изготовление крепления вспомогательной протяжки | 6h | 2026-08-21 09:00 A | 2026-08-21 16:00 A | 100% |  |  | start no earlier than 2026-08-21 09:00 | Тимофеев В | 6h | 6h |
| 60 | 1.40.6 | подключение частотника через реле от двигателя протяжки (спросить Константина) | 1d? | 2026-08-25 09:00 A | 2026-08-25 18:00 A | 100% |  |  | start no earlier than 2026-08-25 08:00 | Бундин В | 8h | 8h |
| 61 | 1.40.7 | настройка частотника для работы пробника | 3h | 2026-08-27 09:00 A | 2026-08-27 12:00 A | 100% |  |  | start no earlier than 2026-08-27 09:00 | Тимофеев В; Шуранов Ю | 6h | 6h |
| 62 | 1.40.8 | жалобы, что пробники бьют периодически током- проверить соединения, контакты и т.д. | 1h | 2026-08-26 08:00 A | 2026-08-26 10:00 A | 100% |  |  | start no earlier than 2026-08-26 08:00 | Бобренок В | 1h | 1h |
| 63 | 1.41 | настройка параметров ЧП сухой ГДЗ сбиты, переставлен с линии 2. Снял Слава, найти. Настройка в птц | 15min | 2026-08-20 09:00 A | 2026-08-20 09:15 A | 100% |  |  | start no earlier than 2026-08-20 09:00 | Дедов В | 0.25h | 0.25h |

| ID | WBS | Task | Type | Duration | Start | Finish | Predecessors | Complete | Remaining | Total slack | Free slack | Constraint | Resources | Work | Actual work |
| --- | --- | --- | --- | --- | --- | --- | --- | --- | --- | --- | --- | --- | --- | --- | --- |
| 64 | 1.42 | **ТЕКО ремонт кнопки, которую снял Бобренок В , вернуть то что снял с 3ц** |  | 17.16d | 2026-08-13 09:00 A | 2026-09-07 10:15 |  | 56% | 7.62d | 132.44d |  |  |  | 2.25h | 1.25h |
| 65 | 1.42.1 | осмотр |  | 30min | 2026-08-13 09:00 A | 2026-08-13 09:30 A |  | 100% |  |  |  | start no earlier than 2026-08-13 09:00 | Домоводов К | 0.5h | 0.5h |
| 66 | 1.42.2 | заявка в ТЕКО платы |  | 30min | 2026-08-18 09:00 A | 2026-08-18 09:30 A | 65 | 100% |  |  |  | start no earlier than 2026-08-18 09:00 | Зорькин В | 0.5h | 0.5h |
| 67 | 1.42.3 | контроль поставки |  | 15min | 2026-09-04 09:00 A | 2026-09-04 09:15 A | 66FS+10d | 100% |  |  |  | start no earlier than 2026-09-04 09:00 | Зорькин В | 0.25h | 0.25h |
| 68 | 1.42.4 | монтаж платы на место |  | 1h | 2026-09-07 09:15 | 2026-09-07 10:15 | 67FS+1d |  |  | 132.44d |  | start no earlier than 2026-08-13 09:00 | Тимофеев В | 1h |  |
| 69 | 1.43 | установить вент решетки на трассу кондиционера |  | 30min | 2026-08-12 09:00 A | 2026-08-12 09:30 A |  | 100% |  |  |  | start no earlier than 2026-08-12 09:00 | Труфанов А; Некрасов А | 1h | 1h |
| 70 | 1.44 | течь сливной трубы кондиционара править трассу |  | 2h | 2026-08-12 09:00 A | 2026-08-12 11:00 A |  | 100% |  |  |  | start no earlier than 2026-08-12 09:00 | Труфанов А; Некрасов А | 4h | 4h |
| 71 | 1.45 | слить конденсат и чистка фильтров, продуть радиаторы компрессора | manual | 2h | 2026-08-09 09:00 A | 2026-08-09 11:00 A |  | 100% |  |  |  | start no earlier than 2026-08-09 09:00 | Бундин В | 2h | 2h |
| 72 | 1.46 | заменить камеру над квадропаком (слева) -камера у нас в слесарке, взять в помощь оператора | manual | 1h | 2026-08-09 09:00 A | 2026-08-09 10:00 A |  | 100% |  |  |  | start no earlier than 2026-08-09 09:00 | Бундин В | 1h | 1h |
| 73 | 1.47 | дверь тяжело открывается в гидрализаторную (попробовать поправить, задевает металл-металл) |  | 1h | 2026-08-06 09:00 A | 2026-08-06 10:00 A |  | 100% |  |  |  | start no earlier than 2026-08-06 08:00 | Труфанов А | 1h | 1h |
| 74 | 1.48 | заменить плафон в душе | manual | 1h | 2026-08-06 09:00 A | 2026-08-06 10:00 A |  | 100% |  |  |  | start no earlier than 2026-08-06 09:00 | Бундин В | 1h | 1h |
| 75 | 1.49 | ТО пробники и Теко 0,4 (чистка тен, ножей, смазка) |  | 4h | 2026-08-05 08:00 A | 2026-08-05 13:00 A |  | 100% |  |  |  | start no earlier than 2026-08-05 08:00 | Макаревич А | 4h | 4h |
| 76 | 1.50 | **палетообмостчик заказ** |  | 33.39d | 2026-08-12 09:00 A | 2026-09-28 12:05 |  | 27% | 24.22d | 117.21d |  |  |  | 4.25h | 1.17h |
| 77 | 1.50.1 | получить договор + счет |  | 1h | 2026-08-12 09:00 A | 2026-08-12 10:00 A |  | 100% |  |  |  | start no earlier than 2026-08-12 09:00 | Зорькин В | 1h | 1h |
| 78 | 1.50.2 | **согласвоание договор** |  | 2.89d | 2026-08-12 10:00 A | 2026-08-17 09:05 A | 77 | 100% |  |  |  |  |  | 0.17h | 0.17h |
| 79 | 1.50.2.1 | передать Маше |  | 5min | 2026-08-12 10:00 A | 2026-08-12 10:05 A |  | 100% |  |  |  | start no earlier than 2026-08-12 09:00 | Домоводов К | 0.08h | 0.08h |
| 80 | 1.50.2.2 | контроль |  | 5min | 2026-08-17 09:00 A | 2026-08-17 09:05 A | 79FS+3d | 100% |  |  |  | start no earlier than 2026-08-17 09:00 | Домоводов К | 0.08h | 0.08h |
| 81 | 1.50.3 | оплата подать счет | milestone | 0d | 2026-08-12 09:00 A | 2026-08-12 09:00 A |  | 100% |  |  |  | start no earlier than 2026-08-12 09:00 | Домоводов К |  |  |
| 82 | 1.50.4 | доставка конетроль |  | 5min | 2026-09-25 09:00 | 2026-09-25 09:05 | 81FS+30d |  |  | 117.21d | 0d | start no earlier than 2026-09-25 09:00 | Зорькин В | 0.08h |  |
| 83 | 1.50.5 | монтаж |  | 3h | 2026-09-28 09:05 | 2026-09-28 12:05 | 82FS+1d |  |  | 117.21d |  | start no earlier than 2026-08-10 08:00 | Тимофеев В | 3h |  |
| 84 | 1.51 | **замена сетка печи линия 1** |  | 39.09d? | 2026-08-12 09:00 A | 2026-10-06 09:45 |  | 5% | 36.98d? | 111.5d |  |  |  | 9.5h | 0.75h |
| 85 | 1.51.1 | замерить параметры сетки |  | 15min | 2026-08-12 09:00 A | 2026-08-12 09:15 A |  | 100% |  |  |  | start no earlier than 2026-08-12 09:00 | Домоводов К; Тимофеев В | 0.5h | 0.5h |
| 86 | 1.51.2 | получить счет на сетку КИТАЙ |  | 15min | 2026-08-17 09:00 A | 2026-08-17 09:15 A | 85 | 100% |  |  |  | start no earlier than 2026-08-17 09:00 | Зорькин В | 0.25h | 0.25h |
| 87 | 1.51.3 | контроль оплата | milestone | 0d | 2026-08-21 09:00 A | 2026-08-21 09:00 A | 86FS+2d | 100% |  |  |  | start no earlier than 2026-08-21 09:00 | Зорькин В |  |  |
| 88 | 1.51.4 | контроль доставки |  | 15min | 2026-10-02 09:00 | 2026-10-02 09:15 | 87FS+30d |  |  | 111.5d | 0d | start no earlier than 2026-08-10 08:00 | Зорькин В | 0.25h |  |
| 89 | 1.51.5 | приемка |  | 30min | 2026-10-02 09:15 | 2026-10-02 09:45 | 88 |  |  | 111.5d | 0d | start no earlier than 2026-08-10 08:00 | Зорькин В | 0.5h |  |
| 90 | 1.51.6 | замена |  | 1d? | 2026-10-05 09:45 | 2026-10-06 09:45 | 89FS+1d |  |  | 111.5d |  | start no earlier than 2026-08-10 08:00 | Тимофеев В | 8h |  |

| ID | WBS | Task | Type | Duration | Start | Finish | Predecessors | Complete | Remaining | Actual finish | Total slack | Free slack | Constraint | Resources | Work | Actual work |
| --- | --- | --- | --- | --- | --- | --- | --- | --- | --- | --- | --- | --- | --- | --- | --- | --- |
| 91 | 1.52 | **зависает диспелей на расходомере 2л** |  | 16.06d | 2026-08-11 09:00 A | 2026-09-02 09:30 |  | 82% | 2.92d |  | 135.53d |  |  |  | 2.75h | 2.25h |
| 92 | 1.52.1 | контроль поставки |  | 15min | 2026-08-11 09:00 A | 2026-08-11 09:15 A |  | 100% |  |  |  |  | start no earlier than 2026-08-11 09:00 | Домоводов К | 0.25h | 0.25h |
| 93 | 1.52.2 | замена кабель к монитору |  | 30min | 2026-08-19 09:00 A | 2026-08-19 09:30 A | 92 | 100% |  |  |  |  | start no earlier than 2026-08-19 09:00 | Домоводов К | 0.5h | 0.5h |
| 94 | 1.52.3 | объеденить минус шину контроллера с нулевым проводом оборудования ч/з резистор 10 Ом |  | 30min | 2026-09-02 09:00 | 2026-09-02 09:30 |  |  |  |  | 135.53d |  | start no earlier than 2026-09-02 09:00 | Домоводов К | 0.5h |  |
| 95 | 1.52.4 | замена кабель от ЧП к контроллеру на экранированный |  | 30min | 2026-08-24 09:00 A | 2026-08-24 09:30 A |  | 100% |  |  |  |  | start no earlier than 2026-08-24 09:00 | Домоводов К | 0.5h | 0.5h |
| 96 | 1.52.5 | замена блок питания 5в |  | 1h | 2026-08-13 09:00 A | 2026-08-13 10:00 A |  | 100% |  |  |  |  | start no earlier than 2026-08-13 09:00 | Труфанов А | 1h | 1h |
| 97 | 1.53 | подключить розетку на правой ноге квадропака (отключить квадропак на 5 минут) |  | 2h | 2026-08-11 09:00 A | 2026-08-11 11:00 A |  | 100% |  |  |  |  | start no earlier than 2026-08-11 09:00 | Бобренок В | 2h | 2h |
| 98 | 1.54 | **перенос вентилятор охладителя линия2 в реверс, убрать шкаф** |  | 23.5d | 2026-08-18 09:00 A | 2026-09-18 13:00 |  | 70% | 7.11d |  | 123.09d |  |  |  | 34h | 21h |
| 99 | 1.54.1 | проектирование рамы |  | 2d | 2026-08-19 09:00 A | 2026-08-20 18:00 A |  | 100% |  |  |  |  | start no earlier than 2026-08-19 09:00 | Зорькин В | 16h | 16h |
| 100 | 1.54.2 | чертеж рамы под вентилятор |  | 2h | 2026-08-18 09:00 A | 2026-08-18 11:00 A |  | 100% |  |  |  |  | start no earlier than 2026-08-18 09:00 | Зорькин В; Домоводов К | 4h | 4h |
| 101 | 1.54.3 | заявка вент фитинги |  | 1h | 2026-08-21 09:00 A | 2026-08-21 10:00 A | 100 | 100% |  |  |  |  | start no earlier than 2026-08-21 09:00 | Зорькин В | 1h | 1h |
| 102 | 1.54.4 | конроль поставки |  | 15min | 2026-09-04 10:00 | 2026-09-04 10:15 | 101FS+10d |  |  |  | 131.44d | 0d | start no earlier than 2026-08-12 09:00 | Зорькин В | 0.25h |  |
| 103 | 1.54.5 | сборка рама |  | 4h | 2026-09-07 10:15 | 2026-09-07 15:15 | 102FS+1d |  |  |  | 131.44d | 8.34d | start no earlier than 2026-09-07 09:00 | Некрасов А; Труфанов А | 8h |  |
| 104 | 1.54.6 | модернизация венттилятора |  | 4h | 2026-09-18 09:00 | 2026-09-18 13:00 | 103 |  |  |  | 123.09d |  | start no earlier than 2026-09-18 09:00 | Тимофеев В; Бундин В | 4.75h |  |
| 105 | 1.55 | **ревизия красного смесителя 2 линия (просыпается мука)** |  | 11.25d | 2026-08-17 09:00 A | 2026-09-01 11:00 |  | 92% | 0.87d |  | 136.34d |  |  |  | 3.25h | 3h |
| 106 | 1.55.1 | подтянуть торцевое уплотнение смесителя |  | 30min | 2026-08-17 09:00 A | 2026-08-17 09:30 A |  | 100% |  |  |  |  | start no earlier than 2026-08-17 09:00 | Бундин В | 0.5h | 0.5h |
| 107 | 1.55.2 | запрос штатное уплотнеие у производителя / заявка |  | 30min | 2026-08-19 09:00 A | 2026-08-19 09:30 A |  | 100% |  |  |  |  | start no earlier than 2026-08-19 09:00 | Шуранов Ю | 0.5h | 0.5h |
| 108 | 1.55.3 | контроль поставки |  | 15min | 2026-08-26 09:30 | 2026-08-26 09:45 | 107FS+5d |  |  |  | 140.5d |  | start no earlier than 2026-08-12 09:00 | Зорькин В | 0.25h |  |
| 109 | 1.55.4 | замена |  | 2h | 2026-09-01 09:00 A | 2026-09-01 11:00 A | 108FS+1d | 100% |  |  |  |  | start no earlier than 2026-09-04 09:00 | Тимофеев В | 2h | 2h |
| 110 | 1.56 | шум зл двигателя 2 линия / смазка |  | 1h | 2026-08-10 08:00 A | 2026-08-10 10:00 A |  | 100% |  |  |  |  | start no earlier than 2026-08-10 08:00 | Тимофеев В | 1h | 1h |
| 111 | 1.57 | натяжка транспортер №2 линия 2 |  | 2h | 2026-08-12 09:00 A | 2026-08-12 11:00 A |  | 100% |  |  |  |  | start no earlier than 2026-08-12 09:00 | Тимофеев В | 2h | 2h |
| 112 | 1.58 | монтаж- подключение внутреннего блока кондиционера |  | 2h | 2026-08-05 09:00 A | 2026-08-05 11:00 A |  | 100% |  |  |  |  | start no earlier than 2026-08-05 09:00 | Труфанов А; Тимофеев В | 4h | 4h |
| 113 | 1.59 | **теко 0,4 -восстановить или заменить блок для тепловухи** |  | 1d? | 2026-08-04 09:00 A | 2026-08-04 18:00 |  | 100% |  | 2026-08-05 18:00 |  |  |  | Макаревич А | 17h | 17h |
| 114 | 1.59.1 | проверить подключение транспортера и тепловуху |  | 1d? | 2026-08-05 09:00 A | 2026-08-05 18:00 A |  | 100% |  |  |  |  | start no earlier than 2026-08-05 09:00 | Шуранов Ю | 8h | 8h |
| 115 | 1.60 | замена перегоревших светильников, монтаж доп. Светильников (Шуранов- покажу) |  | 4h | 2026-08-05 09:00 A | 2026-08-05 13:00 A |  | 100% |  |  |  |  | start no earlier than 2026-08-12 09:00 | Труфанов А; Тимофеев В | 8h | 8h |
| 116 | 1.61 | включить мухоловку 1 линия экструдер | manual | 0.5h | 2026-08-02 09:00 A | 2026-08-02 09:30 A |  | 100% |  |  |  |  | start no earlier than 2026-08-02 09:00 | Бобренок В | 0.5h | 0.5h |
| 117 | 1.62 | пропадает питание на весах смесителя 2 линия- проверить | manual | 1h | 2026-08-01 09:00 A | 2026-08-01 10:00 A |  | 100% |  |  |  |  | start no earlier than 2026-08-01 09:00 | Бундин В | 1h | 1h |
| 118 | 1.63 | эксперимент с лейкой жиры |  | 2h | 2026-08-06 09:00 A | 2026-08-06 11:00 A |  | 100% |  |  |  |  | start no earlier than 2026-08-07 09:00 | Тимофеев В | 2h | 2h |
| 119 | 1.64 | камера над компрессором снять и поменять (камеры у нас в кабинете) |  | 1h | 2026-08-03 09:00 A | 2026-08-03 10:00 A |  | 100% |  |  |  |  | start no earlier than 2026-08-03 09:00 | Макаревич А; Тимофеев В | 2h | 2h |
| 120 | 1.65 | на мезонине смотрит на квадропак, поменять и сделать чуть ниже обзор |  | 1h | 2026-08-03 09:00 A | 2026-08-03 10:00 A |  | 100% |  |  |  |  | start no earlier than 2026-08-03 09:00 | Макаревич А; Тимофеев В | 2h | 2h |
| 121 | 1.66 | камера 1 линия повернуть чуть правее и приподнять |  | 1h | 2026-08-03 09:00 A | 2026-08-03 10:00 A |  | 100% |  |  |  |  | start no earlier than 2026-08-03 09:00 | Макаревич А; Тимофеев В | 2h | 2h |
| 122 | 1.67 | камера на углу, где вывозят готовую продукцию с люльки поменять (камеры у нас в кабинете) |  | 2h | 2026-08-03 09:00 A | 2026-08-03 11:00 A |  | 100% |  |  |  |  | start no earlier than 2026-08-03 09:00 | Макаревич А; Тимофеев В | 4h | 4h |
| 123 | 1.68 | повесить камеру над входом в фасовку, чтобы смотрела на коридор и как обрабатывают руки, монтаж кабеля |  | 3h | 2026-08-03 09:00 A | 2026-08-03 12:00 A |  | 100% |  |  |  |  | start no earlier than 2026-08-03 09:00 | Макаревич А; Тимофеев В | 6h | 6h |

| ID | WBS | Task | Type | Duration | Start | Finish | Predecessors | Complete | Remaining | Total slack | Free slack | Constraint | Resources | Work | Actual work |
| --- | --- | --- | --- | --- | --- | --- | --- | --- | --- | --- | --- | --- | --- | --- | --- |
| 124 | 1.69 | **снять камеру зона экструдера и повесить на жирах со стороны экструдера, монтаж кабель** |  | 0.25d | 2026-09-09 09:00 | 2026-09-09 11:00 |  |  |  | 130.34d |  |  |  | 4h |  |
| 125 | 1.69.1 | на мойке попробовать снять камеру |  | 2h | 2026-09-09 09:00 | 2026-09-09 11:00 |  |  |  | 130.34d |  | start no earlier than 2026-09-09 09:00 | Труфанов А; Некрасов А | 4h |  |
| 126 | 1.70 | открутить полочку на столе на жирах, сделать ребра жесткости |  | 1h | 2026-07-31 09:00 A | 2026-07-31 10:00 A |  | 100% |  |  |  | start no earlier than 2026-07-31 08:00 | Бундин В | 1h | 1h |
| 127 | 1.71 | слив конденсата с компрессора и продуть радиаторы и фильтры |  | 1h | 2026-07-31 08:00 A | 2026-07-31 10:00 A |  | 100% |  |  |  | start no earlier than 2026-07-31 08:00 | Тимофеев В | 1h | 1h |
| 128 | 1.72 | Ревизия головы от Нотис/заключение |  | 1h | 2026-07-27 08:00 A | 2026-07-27 10:00 A |  | 100% |  |  |  | start no earlier than 2026-07-27 08:00 | Дедов В | 1h | 1h |
| 129 | 1.73 | Снять клавиатуру с головы нотис, подготовить ее к замене лежит на верстаке |  | 30min | 2026-07-29 08:00 A | 2026-07-29 09:30 A |  | 100% |  |  |  | start no earlier than 2026-07-29 08:00 | Дедов В | 0.5h | 0.5h |
| 130 | 1.74 | Ремонт клавиатуры от головы нотис, клаву получить на складе, голову взять у нас в кабинете |  | 1h | 2026-09-01 09:00 A | 2026-09-01 10:00 A |  | 100% |  |  |  | start no earlier than 2026-09-01 08:00 | Бундин В | 1h | 1h |
| 131 | 1.75 | Вернуть голову с восстановленной клавиатурой на НОТИС в 3 цех |  | 30min | 2026-09-04 09:00 | 2026-09-04 09:30 |  |  |  | 133.53d |  | start no earlier than 2026-09-04 09:00 | Тимофеев В | 0.5h |  |
| 132 | 1.76 | **ремонт кондиционер зона фасовки** |  | 0.5d | 2026-07-16 09:00 A | 2026-07-16 13:00 A |  | 100% |  |  |  |  |  | 6h | 6h |
| 133 | 1.76.1 | демонтаж внутреннего блока |  | 2h | 2026-07-16 09:00 A | 2026-07-16 11:00 A |  | 100% |  |  |  | start no earlier than 2026-07-16 09:00 | Некрасов А; Труфанов А | 4h | 4h |
| 134 | 1.76.2 | разборка, отделить испаритель от рамы |  | 1h | 2026-07-16 11:00 A | 2026-07-16 12:00 A | 133 | 100% |  |  |  | start no earlier than 2026-07-15 09:00 | Бундин В | 1h | 1h |
| 135 | 1.76.3 | опресовка в воде |  | 1h | 2026-07-16 12:00 A | 2026-07-16 13:00 A | 134 | 100% |  |  |  | start no earlier than 2026-07-15 09:00 | Бундин В | 1h | 1h |
| 136 | 1.77 | редуктор конвейера выгрузки пакетов квадропак -> обеспечить гибкое соединеине к раме, жесткое будет ломать либо вал либо редутор |  | 2h | 2026-07-16 09:00 A | 2026-07-16 11:00 A |  | 100% |  |  |  | start no earlier than 2026-07-16 09:00 | Некрасов А | 2h | 2h |
| 137 | 1.78 | **выполнить смотровые люки состояния цепи средниий и верхние этажи. На торцевой крышке с стороны экструдера.** |  | 37d | 2026-07-14 09:00 A | 2026-09-02 18:00 |  | 13% | 32.29d | 134.59d |  |  |  | 9.17h | 1.17h |
| 138 | 1.78.1 | заявка шарниры нерж + бугельный зажим |  | 1h | 2026-07-14 09:00 A | 2026-07-14 10:00 A |  | 100% |  |  |  | start no earlier than 2026-07-14 08:00 | Домоводов К | 1h | 1h |
| 139 | 1.78.2 | контроль доставка |  | 10min | 2026-08-17 09:00 A | 2026-08-17 09:10 A | 138FS+7d | 100% |  |  |  | start no earlier than 2026-08-17 09:00 | Шуранов Ю | 0.17h | 0.17h |
| 140 | 1.78.3 | монтаж 1 линия |  | 4h | 2026-09-02 09:00 | 2026-09-02 13:00 | 139FS+1d |  |  | 134.59d | 0d | start no earlier than 2026-09-02 09:00 | Макаревич А | 4h |  |
| 141 | 1.78.4 | монтаж 2 линия |  | 4h | 2026-09-02 14:00 | 2026-09-02 18:00 | 140 |  |  | 134.59d |  | start no earlier than 2026-07-14 08:00 | Макаревич А | 4h |  |
| 142 | 1.79 | монтаж светильник под площадку дозатора квадропака |  | 4h | 2026-07-10 09:00 A | 2026-07-10 13:00 A |  | 100% |  |  |  | start no earlier than 2026-07-10 09:00 | Бобренок В | 4h | 4h |
| 143 | 1.80 | **замена вентилятор вытяжка с экструдеров** |  | 2.25d | 2026-07-13 09:00 A | 2026-07-15 11:00 A |  | 100% |  |  |  |  |  | 13h | 13h |
| 144 | 1.80.1 | подключение воздуховоды |  | 4h | 2026-07-13 09:00 A | 2026-07-13 13:00 A |  | 100% |  |  |  | start no earlier than 2026-07-13 09:00 | Некрасов А; Бундин В | 8h | 8h |
| 145 | 1.80.2 | установить крыльчатку на мотор |  | 1h | 2026-07-14 09:00 A | 2026-07-14 10:00 A |  | 100% |  |  |  | start no earlier than 2026-07-14 08:00 | Труфанов А | 1h | 1h |
| 146 | 1.80.3 | устарнить причину вибрации мотора |  | 2h | 2026-07-15 09:00 A | 2026-07-15 11:00 A |  | 100% |  |  |  | start no earlier than 2026-07-15 09:00 | Некрасов А; Труфанов А | 4h | 4h |
| 147 | 1.81 | **сборка дозатор на квадропак** |  | 42.25d | 2026-07-09 08:00 A | 2026-09-07 11:00 |  | 82% | 7.8d | 132.34d |  |  |  | 35.5h | 29.5h |
| 148 | 1.81.1 | установить переключатель блокировки сброса дозатором |  | 30min | 2026-08-15 09:00 A | 2026-08-17 09:30 A |  | 100% |  |  |  | start no earlier than 2026-08-15 09:00 | Труфанов А | 0.5h | 0.5h |
| 149 | 1.81.2 | упорядочить схему |  | 30min | 2026-08-15 09:00 A | 2026-08-17 09:30 A |  | 100% |  |  |  | start no earlier than 2026-08-15 09:00 | Труфанов А | 0.5h | 0.5h |
| 150 | 1.81.3 | транспортировка дозатора в слесарку |  | 1h | 2026-08-04 08:00 A | 2026-08-04 10:00 A |  | 100% |  |  |  | start no earlier than 2026-08-04 08:00 | Труфанов А; Тимофеев В | 2h | 2h |
| 151 | 1.81.4 | установить розетку для дозатора. Вывод кабель сверлить платформу, что бы он был не под ногами и удобен при уборке |  | 2h | 2026-07-09 08:00 A | 2026-07-09 11:00 A |  | 100% |  |  |  | start no earlier than 2026-07-09 08:00 | Бобренок В | 2h | 2h |
| 152 | 1.81.5 | закрепить монитор фото Зорькин |  | 2h | 2026-07-09 08:00 A | 2026-07-09 11:00 A |  | 100% |  |  |  | start no earlier than 2026-07-09 08:00 | Бобренок В | 2h | 2h |
| 153 | 1.81.6 | подключение дозатора к машине / поиск кабеля в 3 цехе / изучение документации |  | 4h | 2026-07-14 09:00 A | 2026-07-14 13:00 A |  | 100% |  |  |  | start no earlier than 2026-07-14 09:00 | Труфанов А | 4h | 4h |
| 154 | 1.81.7 | подключить реле аварии дозатора паралельно датчику отсутствия пакета квадропака (схема прилагается) |  | 1h | 2026-08-12 09:00 A | 2026-08-12 10:00 A | 153 | 100% |  |  |  | start no earlier than 2026-08-12 09:00 | Труфанов А | 1h | 1h |
| 155 | 1.81.8 | калибровка весов и разгон наполнения, тестирование работы |  | 4h | 2026-08-12 09:00 A | 2026-08-12 13:00 A |  | 100% |  |  |  | start no earlier than 2026-08-12 09:00 | Труфанов А | 4h | 4h |
| 156 | 1.81.9 | монтаж кабель выравнивания потенциалов площадка дозатора и площадка квадропака |  | 30min | 2026-08-15 09:00 A | 2026-08-17 09:30 A |  | 100% |  |  |  | start no earlier than 2026-08-15 09:00 | Труфанов А | 0.5h | 0.5h |
| 157 | 1.81.10 | контроль поставки маткериал | milestone | 0d | 2026-08-27 09:00 A | 2026-08-27 09:00 A |  | 100% |  |  |  | start no earlier than 2026-08-27 09:00 | Зорькин В |  |  |
| 158 | 1.81.11 | тестирование весов / разгон |  | 2h | 2026-09-01 09:00 | 2026-09-01 11:00 | 157 |  |  | 135.84d | 2.75d | start no earlier than 2026-09-01 09:00 | Зорькин В | 2h |  |
| 159 | 1.81.12 | подключить синхронизацию пуска дозатора паралельно катушки открытия заслонки квадропака |  | 4h | 2026-08-04 11:00 A | 2026-08-04 16:00 A | 154 | 100% |  |  |  | start no earlier than 2026-07-16 09:00 | Труфанов А | 4h | 4h |
| 160 | 1.81.13 | монтаж перила на площадку - подготовка |  | 2h | 2026-08-14 09:00 A | 2026-08-14 11:00 A |  | 100% |  |  |  | start no earlier than 2026-08-14 09:00 | Тимофеев В | 2h | 2h |
| 161 | 1.81.14 | монтаж перила на площадку |  | 2h | 2026-08-17 09:00 A | 2026-08-17 11:00 A |  | 100% |  |  |  | start no earlier than 2026-08-17 09:00 | Тимофеев В; Бобренок В | 4h | 4h |
| 162 | 1.81.15 | сверлить для крепления перил |  | 2h | 2026-09-04 09:00 | 2026-09-04 11:00 | 158 |  |  | 133.09d | 0.75d | start no earlier than 2026-09-04 09:00 | Макаревич А | 2h |  |
| 163 | 1.81.16 | закрыть металлом пустые места между площадками квадропак и дозатор |  | 2h | 2026-09-07 09:00 | 2026-09-07 11:00 | 162 |  |  | 132.34d |  | start no earlier than 2026-09-07 09:00 | Тимофеев В | 2h |  |
| 164 | 1.81.17 | Сделать перегородки в бункер дозатора для увеличения объема секций |  | 3h | 2026-09-02 09:00 A | 2026-09-02 12:00 A |  | 100% |  |  |  | start no earlier than 2026-09-04 09:00 | Тимофеев В | 3h | 3h |
| 165 | 1.82 | навести сортиировка / порядок пандус 1ц |  | 4h | 2026-07-10 09:00 A | 2026-07-10 13:00 A |  | 100% |  |  |  | start no earlier than 2026-07-10 09:00 | Тимофеев В; Амрулин Р | 7h | 7h |

| ID | WBS | Task | Type | Duration | Start | Finish | Predecessors | Complete | Remaining | Total slack | Free slack | Constraint | Resources | Work | Actual work |
| --- | --- | --- | --- | --- | --- | --- | --- | --- | --- | --- | --- | --- | --- | --- | --- |
| 166 | 1.83 | **Кондиционер зоны экструдера** |  | 0.5d | 2026-07-07 09:00 A | 2026-07-07 13:00 A |  | 100% |  |  |  |  |  | 4h | 4h |
| 167 | 1.83.1 | Чистка сливной магистрали |  | 4h | 2026-07-07 09:00 A | 2026-07-07 13:00 A |  | 100% |  |  |  | start no earlier than 2026-07-07 09:00 | Бундин В | 4h | 4h |
| 168 | 1.84 | **установить датчик давления на экструдер** |  | 42.5d | 2026-07-06 08:00 A | 2026-09-02 13:00 |  | 68% | 13.63d | 135.09d |  |  |  | 15.25h | 11h |
| 169 | 1.84.1 | контроль поставка фитинги |  | 15min | 2026-08-28 09:00 | 2026-08-28 09:15 |  |  |  | 138.06d | 2.97d | start no earlier than 2026-08-28 09:00 | Зорькин В | 0.25h |  |
| 170 | 1.84.2 | монтаж кронштейны для фиксации датчикоа давления 1+2 линия |  | 2h | 2026-07-10 09:00 A | 2026-07-10 11:00 A |  | 100% |  |  |  | start no earlier than 2026-07-10 09:00 | Макаревич А; Некрасов А | 4h | 4h |
| 171 | 1.84.3 | установить датчики давления через гидравлические шланги |  | 2h | 2026-07-06 08:00 A | 2026-07-06 11:00 A |  | 100% |  |  |  | start no earlier than 2026-07-06 08:00 | Дедов В | 2h | 2h |
| 172 | 1.84.4 | доработка кожух нож узла для закрытия |  | 2h | 2026-07-07 09:00 A | 2026-07-07 11:00 A |  | 100% |  |  |  | start no earlier than 2026-07-07 09:00 | Бобренок В | 2h | 2h |
| 173 | 1.84.5 | Прокинуть кабель ШВВП 2х0,75 от датчиков давления до регистраторов, сделать по красоте. |  | 3h | 2026-07-10 09:00 A | 2026-07-10 12:00 A |  | 100% |  |  |  | start no earlier than 2026-07-10 09:00 | Бобренок В | 3h | 3h |
| 174 | 1.84.6 | подключение датчиков давления к регистратору |  | 4h | 2026-09-02 09:00 | 2026-09-02 13:00 | 169 |  |  | 135.09d |  | start no earlier than 2026-09-02 09:00 | Домоводов К | 4h |  |
| 175 | 1.85 | печь №1 ревизия/замена перемычек |  | 4h | 2026-07-04 09:00 A | 2026-07-06 13:00 A |  | 100% |  |  |  | start no earlier than 2026-07-04 09:00 | Макаревич А | 4h | 4h |
| 176 | 1.86 | печь №2 ревизия/замена перемычек |  | 2h | 2026-07-16 09:00 A | 2026-07-16 11:00 A |  | 100% |  |  |  | start no earlier than 2026-07-16 09:00 | Бобренок В | 2h | 2h |
| 177 | 1.87 | заменить амперметры неиспрвные на ШУ 1 и 2 линия (они на складе приехали сегодня новые посмотреть фото в выдаче) | manual | 1h | 2026-09-04 09:00 | 2026-09-04 10:00 |  |  |  |  |  | start no earlier than 2026-09-04 09:00 | Бобренок В | 1h |  |
| 178 | 1.88 | **ставим 2 частотника на вентиляторы вытяжки с печек №1 и 2** |  | 0.5d | 2026-07-02 09:00 A | 2026-07-02 13:00 A |  | 100% |  |  |  |  |  | 4h | 4h |
| 179 | 1.88.1 | подключение к улиткам вытяжки 1 и 2 линия (помошника дадим) |  | 4h | 2026-07-02 09:00 A | 2026-07-02 13:00 A |  | 100% |  |  |  | start no earlier than 2026-07-02 09:00 | Тимофеев В | 4h | 4h |
| 180 | 1.89 | подключить частотный привод вентилятор на площадке жиротопки |  | 4h | 2026-07-14 09:00 A | 2026-07-14 13:00 A |  | 100% |  |  |  | start no earlier than 2026-07-14 09:00 | Дедов В | 4h | 4h |
| 181 | 1.90 | установка частотника для улитку в жиротопке (по телефону расскажу) |  | 4h | 2026-07-02 09:00 A | 2026-07-02 13:00 A |  | 100% |  |  |  | start no earlier than 2026-07-02 09:00 | Дедов В | 4h | 4h |
| 182 | 1.91 | заменить шнеки и гильзы на 2 линии (ставим усиленные, 2 гильзы) по уровню (операторы помогут) | manual | 10h | 2026-07-05 09:00 A | 2026-07-06 11:00 A |  | 100% |  |  |  | start no earlier than 2026-07-05 09:00 | Бундин В | 10h | 10h |
| 183 | 1.92 | **поменять фильтрующую ткань на фильтрах кондиционеров 1 цех** |  | 0.25d | 2026-07-01 09:00 A | 2026-07-01 11:00 A |  | 100% |  |  |  |  |  | 4h | 4h |
| 184 | 1.92.1 | установка фильтров закрываем внутренние блоки |  | 2h | 2026-07-01 09:00 A | 2026-07-01 11:00 A |  | 100% |  |  |  | start no earlier than 2026-07-01 09:00 | Макаревич А; Некрасов А | 4h | 4h |
| 185 | 1.93 | изготовление кронштейна для установки вентилятора крепим на место в зоне экструдера |  | 2h | 2026-06-30 09:00 A | 2026-06-30 11:00 A |  | 100% |  |  |  | start no earlier than 2026-06-30 09:00 | Некрасов А; Тимофеев В | 4h | 4h |
| 186 | 1.94 | снять на всех валах барабанов колеса, будем покрывать полиуретаном |  | 3h | 2026-06-29 09:00 A | 2026-06-29 12:00 A |  | 100% |  |  |  | start no earlier than 2026-06-29 09:00 | Бундин В | 3h | 3h |
| 187 | 1.95 | **сборка раковина нерж для мойки конвейер** |  | 7.25d? | 2026-09-02 09:00 | 2026-09-11 11:00 |  |  |  | 128.34d |  |  |  | 34h |  |
| 188 | 1.95.1 | подготовить данные, оформить как проект / инициировать совещание |  | 2h | 2026-09-02 09:00 | 2026-09-02 11:00 |  |  |  | 128.34d | 0d | start no earlier than 2026-09-02 09:00 | Зорькин В | 2h |  |
| 189 | 1.95.2 | совещание с руководителями / фиксация решения |  | 1d? | 2026-09-03 11:00 | 2026-09-04 11:00 | 188FS+1d |  |  | 128.34d | 0d | start no earlier than 2026-08-31 09:00 | Зорькин В | 8h |  |
| 190 | 1.95.3 | подготовить чертеж раковины, проверить материал |  | 1d? | 2026-09-07 11:00 | 2026-09-08 11:00 | 189FS+1d |  |  | 128.34d | 0d | start no earlier than 2026-09-07 09:00 | Зорькин В | 8h |  |
| 191 | 1.95.4 | сборка |  | 2d | 2026-09-09 11:00 | 2026-09-11 11:00 | 190FS+1d |  |  | 128.34d |  | start no earlier than 2026-07-14 08:00 | Бундин В | 16h |  |
| 192 | 1.96 | ревизия шестеренок питателя 2 линия, если нужно замена с зип- питатель синий склад |  | 3h | 2026-06-29 09:00 A | 2026-06-29 12:00 A |  | 100% |  |  |  | start no earlier than 2026-06-29 09:00 | Бундин В | 3h | 3h |
| 193 | 1.97 | повесить полочки у ОТК в кабинете- крепеж по гипсокортону у меня на столе |  | 1h | 2026-06-26 09:00 A | 2026-06-26 10:00 A |  | 100% |  |  |  | start no earlier than 2026-06-26 09:00 | Тимофеев В; Дедов В | 2h | 2h |
| 194 | 1.98 | нормально прикрутить светильник на стойке со сканером QR- кодов на фасовке, если нужно заменить на другой | manual | 2h | 2026-07-03 09:00 A | 2026-07-03 11:00 A |  | 100% |  |  |  | start no earlier than 2026-07-03 09:00 | Макаревич А | 2h | 2h |
| 195 | 1.99 | прикрутить розетку возле ШУ приточки |  | 1h | 2026-07-04 09:00 A | 2026-07-06 10:00 A |  | 100% |  |  |  | start no earlier than 2026-07-04 09:00 | Дедов В | 1h | 1h |
| 196 | 1.100 | заменить светильник 50Вт на жиротопке | manual | 2h | 2026-06-27 09:00 A | 2026-06-27 11:00 A |  | 100% |  |  |  | start no earlier than 2026-06-27 09:00 | Дедов В | 2h | 2h |
| 197 | 1.101 | мойка внутрених и внешних блоков керхером |  | 4h | 2026-06-24 09:00 A | 2026-06-24 13:00 A |  | 100% |  |  |  | start no earlier than 2026-06-24 09:00 | Тимофеев В; Дедов В | 8h | 8h |
| 198 | 1.102 | 1 линия средняя зона печи 115А |  | 2h | 2026-07-01 09:00 A | 2026-07-01 11:00 A |  | 100% |  |  |  | start no earlier than 2026-07-01 09:00 | Некрасов А | 2h | 2h |
| 199 | 1.103 | продуть внешний блок кондиционера (посередине) |  | 2h | 2026-06-24 09:00 A | 2026-06-24 11:00 A |  | 100% |  |  |  | start no earlier than 2026-06-24 09:00 | Тимофеев В | 2h | 2h |
| 200 | 1.104 | слить конденсат и продуть радиаторы на компрессоре |  | 1h | 2026-06-22 09:00 A | 2026-06-22 10:00 A |  | 100% |  |  |  | start no earlier than 2026-06-22 08:00 | Бундин В | 1h | 1h |
| 201 | 1.105 | взять ключи на складе и повесить возле каждого щитка | manual | 1h | 2026-07-05 09:00 A | 2026-07-05 10:00 A |  | 100% |  |  |  | start no earlier than 2026-07-05 09:00 | Бундин В | 1h | 1h |
| 202 | 1.106 | заменить монтажную коробку- пускатели улиток, зона экструдера | manual | 1h | 2026-06-30 09:00 A | 2026-06-30 10:00 A |  | 100% |  |  |  | start no earlier than 2026-06-30 09:00 | Бундин В | 1h | 1h |
| 203 | 1.107 | герметизация стыков в душевой женской, потечка воды | manual | 1h | 2026-06-21 09:00 A | 2026-06-21 10:00 A |  | 100% |  |  |  | start no earlier than 2026-06-21 09:00 | Бундин В | 1h | 1h |

| ID | WBS | Task | Duration | Start | Finish | Predecessors | Complete | Actual start | Actual finish | Total slack | Constraint | Resources | Work | Actual work |
| --- | --- | --- | --- | --- | --- | --- | --- | --- | --- | --- | --- | --- | --- | --- |
| 204 | 1.108 | **вернуть колбу уровня подачи воды на 2 линию** | 1h? | 2026-06-26 09:00 | 2026-06-26 10:00 |  | 100% | 2026-06-29 09:00 | 2026-06-29 18:00 |  |  |  | 8h | 8h |
| 205 | 1.108.1 | найти колбу | 1d? | 2026-06-29 09:00 A | 2026-06-29 18:00 A |  | 100% |  |  |  | start no earlier than 2026-06-29 09:00 | Шуранов Ю | 8h | 8h |
| 206 | 1.109 | **изготовить шило для экструдерщиков, они подскажут** | 1h? | 2026-06-26 09:00 | 2026-06-26 10:00 |  |  |  |  |  |  |  | 0.25h |  |
| 207 | 1.109.1 | заказать спицы не пустые | 15min | 2026-09-01 09:00 | 2026-09-01 09:15 |  |  |  |  | 136.56d | start no earlier than 2026-09-01 09:00 | Шуранов Ю | 0.25h |  |
| 208 | 1.110 | отключить кондеры и продуть внешние блоки кондиционеров 1 ц. | 2h | 2026-06-20 09:00 A | 2026-06-22 11:00 A |  | 100% |  |  |  | start no earlier than 2026-06-20 09:00 | Бундин В | 2h | 2h |
| 209 | 1.111 | **померить верхний воздуховод и трассу для подключения новой улитки** | 1d? | 2026-06-22 09:00 A | 2026-06-22 18:00 A |  | 100% |  |  |  |  | Тимофеев В; Зорькин В | 24h | 24h |
| 210 | 1.111.1 | заказать переходник | 1d? | 2026-06-22 09:00 A | 2026-06-22 18:00 A |  | 100% |  |  |  | start no earlier than 2026-06-22 08:00 | Зорькин В | 8h | 8h |
| 211 | 1.112 | слив конденсата с компрессора и продуть радиаторы и фильтры | 1h | 2026-06-14 09:00 A | 2026-06-15 10:00 A |  | 100% |  |  |  | start no earlier than 2026-06-14 09:00 | Бобренок В | 1h | 1h |
| 212 | 1.113 | **закрепить редуктор к отводящему транспортеру** | 1d? | 2026-06-17 09:00 A | 2026-06-17 18:00 A |  | 100% |  |  |  |  | Некрасов А | 16h | 16h |
| 213 | 1.113.1 | сделать надежное крепление на мойке | 1d? | 2026-06-17 09:00 A | 2026-06-17 18:00 A |  | 100% |  |  |  | start no earlier than 2026-06-17 09:00 | Бундин В | 8h | 8h |
| 214 | 1.114 | заменить сальник на вакууматоре (редуктор) | 1h | 2026-06-11 09:00 A | 2026-06-11 10:00 A |  | 100% |  |  |  | start no earlier than 2026-06-11 09:00 | Тимофеев В | 1h | 1h |
| 215 | 1.115 | законтрогаить шпильки-ножки запайщиков | 1h | 2026-06-12 09:00 A | 2026-06-12 10:00 A |  | 100% |  |  |  | start no earlier than 2026-06-12 09:00 | Бундин В | 1h | 1h |
| 216 | 1.116 | настроить подачу масла на квадропаке по пневмо системе (спросить у Дедова) | 1h | 2026-06-10 09:00 A | 2026-06-10 10:00 A |  | 100% |  |  |  | start no earlier than 2026-06-10 09:00 | Труфанов А | 1h | 1h |
| 217 | 1.117 | **проверить давление в гидроаккумуляторе водоподготовки** | 0.25d | 2026-06-10 09:00 A | 2026-06-10 11:00 A |  | 100% |  |  |  |  | Дедов В | 4h | 4h |
| 218 | 1.117.1 | замена мембраны | 2h | 2026-06-10 09:00 A | 2026-06-10 11:00 A |  | 100% |  |  |  | start no earlier than 2026-06-10 09:00 | Дедов В | 2h | 2h |
| 219 | 1.118 | модернизация опроры пневмоцилиндра встряживателя №1 квадропак | 4h | 2026-09-07 09:00 | 2026-09-07 13:00 |  |  |  |  | 132.09d | start no earlier than 2026-09-07 09:00 | Некрасов А | 4h |  |
| 220 | 1.119 | **готовить в зип сетку оборотную для печей (нижняя)** | 0.5d | 2026-06-09 09:00 A | 2026-06-09 13:00 A |  | 100% |  |  |  |  |  | 4.5h | 4.5h |
| 221 | 1.119.1 | проверка материал | 30min | 2026-06-09 09:00 A | 2026-06-09 09:30 A |  | 100% |  |  |  | start no earlier than 2026-06-09 09:00 | Тимофеев В | 0.5h | 0.5h |
| 222 | 1.119.2 | сборка | 4h | 2026-06-09 09:00 A | 2026-06-09 13:00 A |  | 100% |  |  |  | start no earlier than 2026-06-09 09:00 | Тимофеев В | 4h | 4h |
| 223 | 1.120 | подключить частотный привод насос жир 2 линия/ при остановке | 2h | 2026-06-07 09:00 A | 2026-06-08 11:00 A |  | 100% |  |  |  | start no earlier than 2026-06-07 09:00 | Дедов В | 2h | 2h |
| 224 | 1.121 | **жиротопка текет сальник насоса** | 36.03d? | 2026-06-28 09:00 A | 2026-08-18 09:15 A |  | 100% |  |  |  |  |  | 18.5h | 18.5h |
| 225 | 1.121.1 | замена насос из зип | 1h | 2026-06-28 09:00 A | 2026-06-29 10:00 A |  | 100% |  |  |  | start no earlier than 2026-06-28 09:00 | Дедов В | 1h | 1h |
| 226 | 1.121.2 | замена сальник на снятом насосе | 1h | 2026-06-28 10:00 A | 2026-06-29 10:00 A | 225 | 100% |  |  |  | start no earlier than 2026-06-17 09:00 | Дедов В | 1h | 1h |
| 227 | 1.121.3 | заказать | 1d? | 2026-06-29 09:00 A | 2026-06-29 18:00 A |  | 100% |  |  |  | start no earlier than 2026-06-29 09:00 | Шуранов Ю | 8h | 8h |
| 228 | 1.121.4 | ревизия прогресса утечки | 15min | 2026-08-05 09:00 A | 2026-08-05 09:15 A |  | 100% |  |  |  | start no earlier than 2026-08-05 09:00 | Дедов В | 0.25h | 0.25h |
| 229 | 1.121.5 | контроль наличия сальника | 15min | 2026-08-18 09:00 A | 2026-08-18 09:15 A |  | 100% |  |  |  | start no earlier than 2026-08-18 09:00 | Шуранов Ю | 0.25h | 0.25h |
| 230 | 1.121.6 | замена сальника | 1d? | 2026-08-05 09:00 A | 2026-08-05 18:00 A |  | 100% |  |  |  | start no earlier than 2026-08-05 09:00 | Дедов В | 8h | 8h |
| 231 | 1.122 | ремонт весов напольный (палетные) проверить кабель на обрыв | 3h | 2026-06-11 09:00 A | 2026-06-11 12:00 A |  | 100% |  |  |  | start no earlier than 2026-06-11 09:00 | Дедов В | 3h | 3h |
| 232 | 1.123 | печь №2 проверка токов, тен, замена | 2h | 2026-06-04 09:00 A | 2026-06-04 11:00 A |  | 100% |  |  |  | start no earlier than 2026-06-04 09:00 | Некрасов А; Бундин В | 4h | 4h |
| 233 | 1.124 | изготовление шторки после приемного лотка циклона | 2h | 2026-06-04 09:00 A | 2026-06-04 11:00 A |  | 100% |  |  |  | start no earlier than 2026-06-04 09:00 | Бундин В | 2h | 2h |

| ID | WBS | Task | Type | Duration | Start | Finish | Predecessors | Complete | Total slack | Free slack | Constraint | Resources | Work | Actual work |
| --- | --- | --- | --- | --- | --- | --- | --- | --- | --- | --- | --- | --- | --- | --- |
| 234 | 1.125 | **на аппликаторе настроить печать QR-кода на пакет, чтобы не размазывало (по тел. Объясню)** |  | 3.12d | 2026-06-04 09:00 A | 2026-06-09 10:00 A |  | 100% |  |  |  |  | 2h | 2h |
| 235 | 1.125.1 | тест (подключить доп. Датчик -настроить печать без размытия, картридж находиться у Луговских подписанный) |  | 1h | 2026-06-04 09:00 A | 2026-06-04 10:00 A |  | 100% |  |  | start no earlier than 2026-06-04 09:00 | Дедов В | 1h | 1h |
| 236 | 1.125.2 | тест |  | 1h | 2026-06-09 09:00 A | 2026-06-09 10:00 A |  | 100% |  |  | start no earlier than 2026-06-09 09:00 | Тимофеев В | 1h | 1h |
| 237 | 1.126 | целкает аппликатор -разобраться, устранить |  | 1h | 2026-06-03 08:00 A | 2026-06-03 10:00 A |  | 100% |  |  | start no earlier than 2026-06-03 08:00 | Дедов В | 1h | 1h |
| 238 | 1.127 | **установить резервную трубку/штангу с форсункой на подачу жира** |  | 9d | 2026-08-31 09:00 | 2026-09-10 18:00 |  |  | 128.59d |  |  |  | 8h |  |
| 239 | 1.127.1 | проект-схема разработать |  | 1h | 2026-08-31 09:00 | 2026-08-31 10:00 |  |  | 128.59d | 0d | start no earlier than 2026-08-31 09:00 | Домоводов К | 1h |  |
| 240 | 1.127.2 | заявка фитинги / тройники / краны / трубка |  | 1h | 2026-09-01 10:00 | 2026-09-01 11:00 | 239FS+1d |  | 128.59d | 0d | start no earlier than 2026-06-03 08:00 | Зорькин В | 1h |  |
| 241 | 1.127.3 | доставка контроль | milestone | 0d | 2026-09-08 11:00 | 2026-09-08 11:00 | 240FS+5d |  | 128.59d | 0d | start no earlier than 2026-06-03 08:00 | Зорькин В |  |  |
| 242 | 1.127.4 | сборка в мастерской |  | 4h | 2026-09-09 11:00 | 2026-09-09 16:00 | 241FS+1d |  | 128.59d | 0d | start no earlier than 2026-06-15 09:00 | Тимофеев В | 4h |  |
| 243 | 1.127.5 | монтаж на линию |  | 2h | 2026-09-10 16:00 | 2026-09-10 18:00 | 242FS+1d |  | 128.59d |  | start no earlier than 2026-06-03 08:00 | Тимофеев В | 2h |  |
| 244 | 1.128 | **установить автоматику запуска шнека + смеситель по датчику уровня сырья в бункере экструдера** |  | 62.12d? | 2026-06-04 09:00 | 2026-08-31 10:00 |  |  | 137.47d |  |  |  | 19.17h |  |
| 245 | 1.128.1 | разработка схема / компановка |  | 1h | 2026-08-31 09:00 | 2026-08-31 10:00 |  |  | 137.47d |  | start no earlier than 2026-08-31 09:00 | Домоводов К | 1h |  |
| 246 | 1.128.2 | заявка датчики / пускатели / эл щит |  | 2h | 2026-06-04 09:00 | 2026-06-04 11:00 |  |  | 189.32d | 0d | start no earlier than 2026-06-04 09:00 | Домоводов К | 2h |  |
| 247 | 1.128.3 | доставка контроль |  | 5min | 2026-06-15 11:00 | 2026-06-15 11:05 | 246FS+7d |  | 189.32d | 0d | start no earlier than 2026-06-03 08:00 | Зорькин В | 0.08h |  |
| 248 | 1.128.4 | контроль поставки |  | 5min | 2026-06-16 11:05 | 2026-06-16 11:10 | 247FS+1d |  | 189.32d | 5.73d | start no earlier than 2026-06-03 08:00 | Зорькин В | 0.08h |  |
| 249 | 1.128.5 | сборка ШУ |  | 1d? | 2026-06-24 09:00 | 2026-06-24 18:00 | 248 |  | 183.59d | 0d | start no earlier than 2026-06-24 09:00 | Дедов В | 8h |  |
| 250 | 1.128.6 | монтаж в линию |  | 1d? | 2026-06-25 09:00 | 2026-06-25 18:00 | 249 |  | 183.59d |  | start no earlier than 2026-06-03 08:00 | Дедов В | 8h |  |
| 251 | 1.129 | поставить на двигатели накопительных столов тепловые реле |  | 2h | 2026-06-15 09:00 | 2026-06-15 11:00 |  |  | 192.34d |  | start no earlier than 2026-06-15 09:00 | Дедов В | 2h |  |
| 252 | 1.130 | влагоотделитель крышки загрузки квадропак треснул- замена |  | 1h | 2026-06-10 09:00 | 2026-06-10 10:00 |  |  | 195.47d |  | start no earlier than 2026-06-10 09:00 | Дедов В | 1h |  |
| 253 | 1.131 | установка ПЧ на насос жира 2 линия |  | 2h | 2026-06-02 09:00 A | 2026-06-02 11:00 A |  | 100% |  |  | start no earlier than 2026-06-02 09:00 | Дедов В | 2h | 2h |
| 254 | 1.132 | установка ПЧ на барабаны жиров 1 и 2 линия |  | 2h | 2026-06-02 09:00 A | 2026-06-02 11:00 A |  | 100% |  |  | start no earlier than 2026-06-02 09:00 | Дедов В | 2h | 2h |
| 255 | 1.133 | **рассекатели после шлюзовика 1 и 2 линия сделать, чтобы корм равномерно ложился по поверхности сетки** |  | 5.25d | 2026-06-03 09:00 A | 2026-06-10 11:00 A |  | 100% |  |  |  |  | 11h | 11h |
| 256 | 1.133.1 | после обеда будет остановка 2 линия- модернизация рассекателя |  | 1h | 2026-06-03 09:00 A | 2026-06-03 10:00 A |  | 100% |  |  | start no earlier than 2026-06-03 09:00 | Бундин В | 1h | 1h |
| 257 | 1.133.2 | **установить зубчатую пластину для выравнивания слоя на входе в печь** |  | 5.25d | 2026-06-03 09:00 A | 2026-06-10 11:00 A |  | 100% |  |  |  |  | 10h | 10h |
| 258 | 1.133.2.1 | подготовиьт чертеж |  | 2h | 2026-06-03 09:00 A | 2026-06-03 11:00 A |  | 100% |  |  | start no earlier than 2026-06-03 08:00 | Домоводов К | 2h | 2h |
| 259 | 1.133.2.2 | изготовить |  | 6h | 2026-06-05 09:00 A | 2026-06-05 16:00 A | 258 | 100% |  |  | start no earlier than 2026-06-05 09:00 | Бундин В | 6h | 6h |
| 260 | 1.133.2.3 | монтаж |  | 2h | 2026-06-10 09:00 A | 2026-06-10 11:00 A | 259 | 100% |  |  | start no earlier than 2026-06-10 09:00 | Некрасов А | 2h | 2h |

| ID | WBS | Task | Type | Duration | Start | Finish | Predecessors | Complete | Remaining | Total slack | Constraint | Resources | Work | Actual work |
| --- | --- | --- | --- | --- | --- | --- | --- | --- | --- | --- | --- | --- | --- | --- |
| 261 | 1.134 | **монтаж 2х прожекторов на барабаны жиров** |  | 0.25d | 2026-06-02 09:00 A | 2026-06-02 11:00 A |  | 100% |  |  |  |  | 2h | 2h |
| 262 | 1.134.1 | подключить в ШУ самого транспортера на автомат |  | 2h | 2026-06-02 09:00 A | 2026-06-02 11:00 A |  | 100% |  |  | start no earlier than 2026-06-02 09:00 | Макаревич А | 2h | 2h |
| 263 | 1.135 | **проверка вентилятор упавший в зимний период. Тест на месте** |  | 6.25d | 2026-06-05 09:00 A | 2026-06-15 11:00 A |  | 100% |  |  |  |  | 10h | 10h |
| 264 | 1.135.1 | изготовить подиум под улитку |  | 6h | 2026-06-05 09:00 A | 2026-06-05 16:00 A |  | 100% |  |  | start no earlier than 2026-06-05 09:00 | Тимофеев В | 6h | 6h |
| 265 | 1.135.2 | перенос вентилятора |  | 2h | 2026-06-15 09:00 A | 2026-06-15 11:00 A |  | 100% |  |  | start no earlier than 2026-06-15 09:00 | Тимофеев В; Некрасов А | 4h | 4h |
| 266 | 1.136 | прачка 1ц замена светильник |  | 1h | 2026-05-29 09:00 A | 2026-05-29 10:00 A |  | 100% |  |  | start no earlier than 2026-05-29 08:00 | Бундин В | 1h | 1h |
| 267 | 1.137 | запайщик замена нихром |  | 1h | 2026-05-29 09:00 A | 2026-05-29 10:00 A |  | 100% |  |  | start no earlier than 2026-05-29 08:00 | Бундин В | 1h | 1h |
| 268 | 1.138 | устранить провисание патрубка подачи ГДЗ линия 2 |  | 1h | 2026-08-31 09:00 A | 2026-08-31 10:00 A |  | 100% |  |  | start no earlier than 2026-08-31 09:00 | Тимофеев В | 1h | 1h |
| 269 | 1.139 | крепеление РР магистраль ф20 воздух в склад гдз |  | 15min | 2026-05-27 09:00 A | 2026-05-27 09:15 A |  | 100% |  |  | start no earlier than 2026-05-27 09:00 | Бундин В | 0.25h | 0.25h |
| 270 | 1.140 | **перевод насосов ГДЗ на канистры с трассой на насос > 1/2** |  | 3.25d | 2026-05-28 09:00 A | 2026-06-02 11:00 |  | 50% | 1.62d | 201.34d |  |  | 4h | 2h |
| 271 | 1.140.1 | подготовка канистры установить штуцер, подготовить шланг + фитинги на насос |  | 2h | 2026-05-28 09:00 A | 2026-05-28 11:00 A |  | 100% |  |  | start no earlier than 2026-05-28 09:00 | Бундин В | 2h | 2h |
| 272 | 1.140.2 | монаж на линию 1 |  | 2h | 2026-06-02 09:00 | 2026-06-02 11:00 | 271 |  |  | 201.34d | start no earlier than 2026-06-02 09:00 | Бундин В | 2h |  |
| 273 | 1.141 | **с тена печей осыпается оребрение, попадая в продукт** |  | 10.5d | 2026-05-27 09:00 A | 2026-06-10 13:00 A |  | 100% |  |  |  |  | 11h | 11h |
| 274 | 1.141.1 | осмотр тенов печей линия 1 и линия 2 на предмет отслоения оребрения. Очистка / замена |  | 3h | 2026-05-27 09:00 A | 2026-05-27 12:00 A |  | 100% |  |  | start no earlier than 2026-05-27 09:00 | Некрасов А | 3h | 3h |
| 275 | 1.141.2 | замена неисправных тенов линия 2, по диагностике Некрасова 27.05 (токи) 2 линия |  | 4h | 2026-06-02 09:00 A | 2026-06-02 13:00 A |  | 100% |  |  | start no earlier than 2026-06-02 09:00 | Некрасов А | 4h | 4h |
| 276 | 1.141.3 | замена прогнувшихся тен |  | 4h | 2026-06-10 09:00 A | 2026-06-10 13:00 A |  | 100% |  |  | start no earlier than 2026-06-10 09:00 | Некрасов А | 4h | 4h |
| 277 | 1.142 | перенести частотный привод ШУ печи 1л для доступа обслуживания |  | 2h | 2026-06-02 09:00 A | 2026-06-02 11:00 A |  | 100% |  |  | start no earlier than 2026-06-02 09:00 | Дедов В | 2h | 2h |
| 278 | 1.143 | нет фазы линия 2 печь оперативно |  | 1h | 2026-05-26 09:00 A | 2026-05-26 10:00 A |  | 100% |  |  | start no earlier than 2026-05-26 09:00 | Тимофеев В; Бундин В | 2h | 2h |
| 279 | 1.144 | замена твердотельное реле фаза В 2шт (найти пробитый) |  | 30min | 2026-05-27 09:00 A | 2026-05-27 09:30 A |  | 100% |  |  | start no earlier than 2026-05-27 09:00 | Бундин В | 0.5h | 0.5h |
| 280 | 1.145 | выравнивание потенциалов ШУ тв реле печей 1 и 2 |  | 1h | 2026-05-27 09:00 A | 2026-05-27 10:00 A |  | 100% |  |  | start no earlier than 2026-05-27 09:00 | Бундин В | 1h | 1h |
| 281 | 1.146 | **заменить фитинги с гайками (они на складе) на жирах 1 + 2 линия** |  | 28d | 2026-05-27 09:00 A | 2026-07-04 11:00 A |  | 100% |  |  |  |  | 6.08h | 6.08h |
| 282 | 1.146.1 | доставка шланг 8х12мм. Контроль |  | 5min | 2026-05-27 09:00 A | 2026-05-27 09:05 A |  | 100% |  |  | start no earlier than 2026-05-27 09:00 | Шуранов Ю | 0.08h | 0.08h |
| 283 | 1.146.2 | замена 2 линия |  | 2h | 2026-05-27 09:00 A | 2026-05-27 11:00 A |  | 100% |  |  | start no earlier than 2026-05-27 09:00 | Тимофеев В | 2h | 2h |
| 284 | 1.146.3 | замена 1 линия |  | 2h | 2026-06-15 09:00 A | 2026-06-15 11:00 A |  | 100% |  |  | start no earlier than 2026-06-15 09:00 | Тимофеев В | 2h | 2h |
| 285 | 1.146.4 | проверить где не поставлены фитинги с гайками- поменять | manual | 2h | 2026-07-04 09:00 A | 2026-07-04 11:00 A |  | 100% |  |  | start no earlier than 2026-07-04 09:00 | Тимофеев В | 2h | 2h |
| 286 | 1.147 | подключить Sаvema на теко 0,4 через ИБП (ибп на складе) |  | 1h | 2026-05-26 09:00 A | 2026-05-26 10:00 A |  | 100% |  |  | start no earlier than 2026-05-26 09:00 | Дедов В | 1h | 1h |
| 287 | 1.148 | найти и закрутить мотор-редукторы на транспортерах и отписаться на каких были не прикручены и не законтрогаек. |  | 1h | 2026-05-25 09:00 A | 2026-05-25 10:00 A |  | 100% |  |  | start no earlier than 2026-05-25 09:00 | Макаревич А | 1h | 1h |
| 288 | 1.149 | транспортер с жиров на виброохладитель- поменять кнопку стоп 2 линия | manual | 1h | 2026-05-27 09:00 A | 2026-05-27 10:00 A |  | 100% |  |  | start no earlier than 2026-05-27 09:00 | Дедов В | 1h | 1h |
| 289 | 1.150 | демонтировать на накопительном столе квадропака силиконовую резинку по диаметру | manual | 1h | 2026-05-24 09:00 A | 2026-05-24 10:00 A |  | 100% |  |  | start no earlier than 2026-05-24 09:00 | Макаревич А | 1h | 1h |

| ID | WBS | Task | Type | Duration | Start | Finish | Predecessors | Complete | Remaining | Total slack | Constraint | Resources | Work | Actual work |
| --- | --- | --- | --- | --- | --- | --- | --- | --- | --- | --- | --- | --- | --- | --- |
| 290 | 1.151 | **установка фосунок - подача жира 1 линия** |  | 22.12d? | 2026-06-05 09:00 A | 2026-07-07 10:00 |  | 17% | 18.44d? | 176.47d |  |  | 4h | 2h |
| 291 | 1.151.1 | сборка кронштейн для фильтров + счетчик/ покраска |  | 1h | 2026-06-05 09:00 A | 2026-06-05 10:00 A |  | 100% |  |  | start no earlier than 2026-06-05 09:00 | Тимофеев В | 1h | 1h |
| 292 | 1.151.2 | установка |  | 1d? | 2026-07-06 09:00 | 2026-07-06 18:00 |  |  |  | 176.59d | start no earlier than 2026-07-06 09:00 |  |  |  |
| 293 | 1.151.3 | монтаж в линию |  | 2h | 2026-07-06 09:00 | 2026-07-06 11:00 |  |  |  | 177.34d | start no earlier than 2026-07-06 09:00 | Тимофеев В | 2h |  |
| 294 | 1.151.4 | монтаж розетка для блок питания 5в для регистратора |  | 1h | 2026-07-07 09:00 A | 2026-07-07 10:00 A |  | 100% |  |  | start no earlier than 2026-07-07 09:00 | Тимофеев В | 1h | 1h |
| 295 | 1.152 | **конв №2 линия 2 нижний вал нет защиты подшипников (был фетр)** |  | 9.16d | 2026-08-19 09:00 A | 2026-09-01 10:15 A |  | 100% |  |  |  |  | 5.25h | 5.25h |
| 296 | 1.152.1 | разборка, ревизия, подбор / чертеж уплотнеия |  | 2h | 2026-08-26 09:00 A | 2026-08-26 11:00 A |  | 100% |  |  | start no earlier than 2026-08-26 09:00 | Тимофеев В | 2h | 2h |
| 297 | 1.152.2 | заявка уплотнение |  | 1h | 2026-08-19 09:00 A | 2026-08-19 10:00 A |  | 100% |  |  | start no earlier than 2026-08-19 09:00 | Шуранов Ю | 1h | 1h |
| 298 | 1.152.3 | контроль поставки |  | 15min | 2026-09-01 10:00 A | 2026-09-01 10:15 A | 297FS+10d | 100% |  |  | start no earlier than 2026-08-12 09:00 | Шуранов Ю | 0.25h | 0.25h |
| 299 | 1.152.4 | монтаж уплотнения |  | 2h | 2026-08-31 09:00 A | 2026-08-31 11:00 A | 298FS+1d | 100% |  |  | start no earlier than 2026-08-12 09:00 | Тимофеев В | 2h | 2h |
| 300 | 1.153 | вентилятор на охладителе верхний краний слишком большой - переделать крепление |  | 1h | 2026-08-26 09:00 A | 2026-08-26 10:00 A |  | 100% |  |  | start no earlier than 2026-08-26 09:00 | Тимофеев В | 1h | 1h |
| 301 | 1.154 | устанить утечку на мойке зона экструдера |  | 1h | 2023-03-10 09:00 A | 2023-03-10 10:00 A |  | 100% |  |  |  | Бобренок В | 1h | 1h |
| 302 | 1.155 | выдать шестигранные болты и шайбы на ножевой узел экструдерщикам (штук 20) |  | 1h | 2026-05-21 09:00 A | 2026-05-21 10:00 A |  | 100% |  |  | start no earlier than 2026-05-21 08:00 | Бундин В | 1h | 1h |
| 303 | 1.156 | приварить болты к заслонке подачи гранулы на квадропаке (остановить, с мастером согласовать) |  | 1h | 2026-05-26 09:00 A | 2026-05-26 10:00 A |  | 100% |  |  | start no earlier than 2026-05-26 09:00 | Бобренок В | 1h | 1h |
| 304 | 1.157 | увеличить диаметр отверстия, чтобы горловина подачи сух. Гидрализата проходила (жиротопка) |  | 1h | 2026-05-20 09:00 A | 2026-05-20 10:00 A |  | 100% |  |  | start no earlier than 2026-05-20 09:00 | Некрасов А | 1h | 1h |
| 305 | 1.158 | посмотреть приточку, выпадает часто в аварию по насосу |  | 2h | 2026-05-18 08:00 A | 2026-05-18 11:00 A |  | 100% |  |  | start no earlier than 2026-05-18 08:00 | Дедов В | 2h | 2h |
| 306 | 1.159 | замена светильника в зоне завоза навесок (работа на высоте) |  | 2h | 2026-05-15 09:00 A | 2026-05-15 11:00 A |  | 100% |  |  | start no earlier than 2026-05-15 09:00 | Некрасов А; Труфанов А | 4h | 4h |
| 307 | 1.160 | закрепить встиряхиватель полного пакета №1 квадропак |  | 1h | 2026-05-14 08:00 A | 2026-05-14 10:00 A |  | 100% |  |  | start no earlier than 2026-05-14 08:00 | Бобренок В | 1h | 1h |
| 308 | 1.161 | замена лампа светильник гардероб М = на короткий. |  | 1h | 2026-05-13 09:00 A | 2026-05-13 10:00 A |  | 100% |  |  | start no earlier than 2026-05-13 09:00 | Бундин В | 1h | 1h |
| 309 | 1.162 | устранить потерю мощности печи в 2х фазах |  | 2h | 2026-05-12 08:00 A | 2026-05-12 11:00 A |  | 100% |  |  | start no earlier than 2026-05-12 08:00 | Тимофеев В; Бобренок В | 4h | 4h |
| 310 | 1.163 | квадропак изготовить и заменить текстолит на термоноже |  | 2h | 2026-05-12 09:00 A | 2026-05-12 11:00 A |  | 100% |  |  | start no earlier than 2026-05-12 08:00 | Некрасов А | 2h | 2h |
| 311 | 1.164 | **бак стабилизации воды-утечка** |  | 0.25d | 2026-05-22 09:00 A | 2026-05-22 11:00 A |  | 100% |  |  |  | Тимофеев В | 4h | 4h |
| 312 | 1.164.1 | монтаж подачи воды 2 линия в прекондиционер |  | 2h | 2026-05-22 09:00 A | 2026-05-22 11:00 A |  | 100% |  |  | start no earlier than 2026-05-22 09:00 | Тимофеев В | 2h | 2h |
| 313 | 1.165 | **парогенератор 1ц ремонт по гарантии** |  | 30d? | 2026-04-27 09:00 A | 2026-06-05 18:00 A |  | 100% |  |  |  |  | 11.33h | 11.33h |
| 314 | 1.165.1 | отправить ПГ на ремонт орг курьера |  | 10min | 2026-04-27 09:00 A | 2026-04-27 09:10 A |  | 100% |  |  | start no earlier than 2026-04-27 08:00 | Шуранов Ю | 0.17h | 0.17h |
| 315 | 1.165.2 | контроль ремонт |  | 10min | 2026-05-04 09:10 A | 2026-05-04 09:20 A | 314FS+5d | 100% |  |  | start no earlier than 2026-04-27 08:00 | Шуранов Ю | 0.17h | 0.17h |
| 316 | 1.165.3 | нужно посмотреть парогенератор там релюха не щелкает- может разберешься, он находиться на складе у Веры |  | 2h | 2026-05-11 09:00 A | 2026-05-11 11:00 A |  | 100% |  |  | start no earlier than 2026-05-11 09:00 | Дедов В | 2h | 2h |
| 317 | 1.165.4 | орг ремонт по гарантии |  | 1h | 2026-05-13 09:00 A | 2026-05-13 10:00 A |  | 100% |  |  | start no earlier than 2026-05-13 09:00 | Шуранов Ю | 1h | 1h |
| 318 | 1.165.5 | контроль возврата |  | 1d? | 2026-06-05 09:00 A | 2026-06-05 18:00 A |  | 100% |  |  | start no earlier than 2026-06-05 09:00 | Шуранов Ю | 8h | 8h |
| 319 | 1.166 | проверить мотор-редуктор на накопительном столе фасовка и | manual | 4h | 2026-05-11 09:00 A | 2026-05-11 13:00 A |  | 100% |  |  | start no earlier than 2026-05-11 09:00 | Бундин В | 4h | 4h |
| 320 | 1.167 | прикрутить ножку на 2 столе (ножка у Луговских в кабинете) |  | 1h | 2026-05-12 09:00 A | 2026-05-12 10:00 A |  | 100% |  |  | start no earlier than 2026-05-12 08:00 | Бундин В | 1h | 1h |

| ID | WBS | Task | Duration | Start | Finish | Predecessors | Complete | Constraint | Resources | Work | Actual work |
| --- | --- | --- | --- | --- | --- | --- | --- | --- | --- | --- | --- |
| 321 | 1.168 | **отодвинуть миксер подачи сухого гидрализата, чтобы сыпал не на ребра барабана, а на обод выхода** | 0.38d | 2026-05-08 08:00 A | 2026-05-08 12:00 A |  | 100% |  |  | 3h | 3h |
| 322 | 1.168.1 | перекрутить платформу миксера подачи сухого гидрализата снизу, чтобы дуло не задевало барабан | 3h | 2026-05-08 08:00 A | 2026-05-08 12:00 A |  | 100% | start no earlier than 2026-05-08 08:00 | Макаревич А | 3h | 3h |
| 323 | 1.169 | монтаж светильник в районе ВРУ сверху (зона экструдера) | 2h | 2026-05-16 09:00 A | 2026-05-18 11:00 A |  | 100% | start no earlier than 2026-05-16 09:00 | Макаревич А | 2h | 2h |
| 324 | 1.170 | закрепить трубу п/п на фасовке в углу, где стеллаж на клипсы к стене | 1h | 2026-05-07 08:00 A | 2026-05-07 10:00 A |  | 100% | start no earlier than 2026-05-07 08:00 | Бобренок В | 1h | 1h |
| 325 | 1.171 | прикрутить пускатели запуска вытяжки перед лестницей на 2 этаж зона экструдера и розетки | 2h | 2026-05-06 08:00 A | 2026-05-06 11:00 A |  | 100% | start no earlier than 2026-05-06 08:00 | Бобренок В | 2h | 2h |
| 326 | 1.172 | нет напряжения в розетке для инсектицидного светильника, корридор где вывозят готовую продукцию | 1h | 2026-05-07 09:00 A | 2026-05-07 10:00 A |  | 100% | start no earlier than 2026-05-07 09:00 | Бобренок В | 1h | 1h |
| 327 | 1.173 | подключить через счетчик подачу жира | 2h | 2026-05-05 08:00 A | 2026-05-05 11:00 A |  | 100% | start no earlier than 2026-05-05 08:00 | Тимофеев В | 2h | 2h |
| 328 | 1.174 | **повесить на места светильники инсектицидные (замена ламп)** | 0.38d | 2026-05-05 09:00 A | 2026-05-05 12:00 A |  | 100% |  |  | 3h | 3h |
| 329 | 1.174.1 | заменить инсектицидные лампы в светильниках (количество, которое поменял -записать) | 3h | 2026-05-05 09:00 A | 2026-05-05 12:00 A |  | 100% | start no earlier than 2026-05-05 08:00 | Бундин В | 3h | 3h |
| 330 | 1.175 | на жиротопке установить газ лифты (они на складе) | 1h | 2026-05-05 08:00 A | 2026-05-05 10:00 A |  | 100% | start no earlier than 2026-05-05 08:00 | Бобренок В | 1h | 1h |
| 331 | 1.176 | **дверь вход в столовую вкрыть заглушки и установить личинку с ключами (взять на складе)** | 14.12d | 2026-05-13 09:00 A | 2026-06-02 10:00 A |  | 100% |  |  | 42.5h | 42.5h |
| 332 | 1.176.1 | заказать ручку / ответ | 30min | 2026-05-13 09:00 A | 2026-05-13 09:30 A |  | 100% | start no earlier than 2026-05-13 09:00 | Шуранов Ю | 0.5h | 0.5h |
| 333 | 1.176.2 | конроль | 5d | 2026-05-18 09:00 A | 2026-05-22 18:00 A | 332 | 100% | start no earlier than 2026-05-18 09:00 | Карабанов | 40h | 40h |
| 334 | 1.176.3 | замена | 1h | 2026-05-30 09:00 A | 2026-06-01 10:00 A | 333 | 100% | start no earlier than 2026-05-30 09:00 | Тимофеев В | 1h | 1h |
| 335 | 1.176.4 | перевернуть замок ручкой вверх, личика переворачивается в любую сторону | 1h | 2026-06-02 09:00 A | 2026-06-02 10:00 A |  | 100% | start no earlier than 2026-06-02 09:00 | Макаревич А | 1h | 1h |
| 336 | 1.177 | поставить шпонки на питатель в слесарке | 1h | 2026-05-04 09:00 A | 2026-05-04 10:00 A |  | 100% | start no earlier than 2026-05-04 08:00 | Тимофеев В | 1h | 1h |
| 337 | 1.178 | установить транспортер на 1 линии | 1h | 2026-05-04 08:00 A | 2026-05-04 10:00 A |  | 100% | start no earlier than 2026-05-04 08:00 | Дедов В | 1h | 1h |
| 338 | 1.179 | собрать транспортер ковшевой (валы приехали, фетр на складе) | 4h | 2026-04-30 08:00 A | 2026-04-30 13:00 A |  | 100% | start no earlier than 2026-04-30 08:00 | Дедов В | 4h | 4h |
| 339 | 1.180 | **со старой ленты снять ковши в слесарке** | 0.5d | 2026-05-05 09:00 A | 2026-05-05 13:00 A |  | 100% |  |  | 4h | 4h |
| 340 | 1.180.1 | подготовить ленту с ковшами (150 мм между ковшами) лента на складе 5120мм в кольце и унести на желтый склад | 4h | 2026-05-05 09:00 A | 2026-05-05 13:00 A |  | 100% | start no earlier than 2026-05-05 09:00 | Бундин В | 4h | 4h |
| 341 | 1.181 | **разбираем улитки циклон и печи, замена подшипников** | 1d? | 2026-06-03 09:00 A | 2026-06-03 18:00 A |  | 100% |  | Тимофеев В; Бундин В | 16h | 16h |
| 342 | 1.181.1 | проверка подшипников на улитках печей | 1d? | 2026-06-03 09:00 A | 2026-06-03 18:00 A |  | 100% | start no earlier than 2026-06-03 09:00 |  |  |  |
| 343 | 1.182 | ТО Теко 1,5 (чистка тен, смазка штоков пневмоцилиндров, подшипников) | 3h | 2026-04-28 09:00 A | 2026-04-28 12:00 A |  | 100% | start no earlier than 2026-04-28 09:00 | Дедов В | 3h | 3h |
| 344 | 1.183 | ТО Теко 0,4 (чистка тен, смазка штоков пневмоцилиндров, подшипников) | 3h | 2026-04-28 09:00 A | 2026-04-28 12:00 A |  | 100% | start no earlier than 2026-04-28 09:00 | Дедов В | 3h | 3h |
| 345 | 1.184 | полное ТО квадропака (чистка тен, смазка штоков пневмоцилиндров, шприцевание подшипников, протяжка болтовых соединений) | 3h | 2026-04-28 09:00 A | 2026-04-28 12:00 A |  | 100% | start no earlier than 2026-04-28 09:00 | Дедов В | 3h | 3h |

| ID | WBS | Task | Type | Duration | Start | Finish | Predecessors | Complete | Total slack | Free slack | Constraint | Resources | Work | Actual work |
| --- | --- | --- | --- | --- | --- | --- | --- | --- | --- | --- | --- | --- | --- | --- |
| 346 | 1.185 | **модернизация трассы слива зона мойки экструдеров** |  | 20d? | 2026-04-27 09:00 A | 2026-05-23 10:00 A |  | 100% |  |  |  |  | 15.5h | 15.5h |
| 347 | 1.185.1 | заявка соединения и гидрозатвор |  | 15min | 2026-04-27 09:00 A | 2026-04-27 09:15 A |  | 100% |  |  | start no earlier than 2026-04-27 08:00 | Шуранов Ю | 0.25h | 0.25h |
| 348 | 1.185.2 | контроль доставки |  | 15min | 2026-05-04 09:15 A | 2026-05-04 09:30 A | 347FS+5d | 100% |  |  | start no earlier than 2026-04-27 08:00 | Шуранов Ю | 0.25h | 0.25h |
| 349 | 1.185.3 | монтаж |  | 1d? | 2026-05-06 09:30 A | 2026-05-07 09:30 A | 348FS+2d | 100% |  |  | start no earlier than 2026-04-27 08:00 | Тимофеев В | 8h | 8h |
| 350 | 1.185.4 | заявка на бурить стену / получить счет |  | 1h | 2026-04-28 09:00 A | 2026-04-28 10:00 A |  | 100% |  |  | start no earlier than 2026-04-28 09:00 | Зорькин В | 1h | 1h |
| 351 | 1.185.5 | расчет угла бурения. Замер + зхарисовать схему |  | 4h | 2026-05-13 09:00 A | 2026-05-13 13:00 A | 350 | 100% |  |  | start no earlier than 2026-05-13 09:00 | Зорькин В | 4h | 4h |
| 352 | 1.185.6 | орг работу подрядчика по бурению |  | 1h | 2026-05-20 09:00 A | 2026-05-20 10:00 A | 351 | 100% |  |  | start no earlier than 2026-05-20 09:00 | Зорькин В | 1h | 1h |
| 353 | 1.185.7 | запенить стыки в месте бурения | manual | 1h | 2026-05-23 09:00 A | 2026-05-23 10:00 A |  | 100% |  |  | start no earlier than 2026-05-23 09:00 | Бобренок В | 1h | 1h |
| 354 | 1.186 | взять на складе 2 гофросифона и заменить на мойке экструдер |  | 1h | 2026-04-24 09:00 A | 2026-04-24 10:00 A |  | 100% |  |  | start no earlier than 2026-04-24 08:00 | Бундин В | 1h | 1h |
| 355 | 1.187 | заменить монтажную коробку на 150х200мм -она у них на стяжках. Коробка новая на складе | manual | 1h | 2026-04-26 09:00 A | 2026-04-26 10:00 A |  | 100% |  |  | start no earlier than 2026-04-26 09:00 | Бобренок В | 1h | 1h |
| 356 | 1.188 | под мойкой в зоне экструдера на слив 3 греющего кабеля, нужно разобраться |  | 1h | 2026-04-24 09:00 A | 2026-04-24 10:00 A |  | 100% |  |  | start no earlier than 2026-04-24 08:00 | Шуранов Ю | 1h | 1h |
| 357 | 1.189 | жиротопка течет сальник, проверить и устранить течи везде. Чистка фильтров. |  | 2h | 2026-04-28 09:00 A | 2026-04-28 11:00 A |  | 100% |  |  | start no earlier than 2026-04-28 09:00 | Тимофеев В | 2h | 2h |
| 358 | 1.190 | ТО печи линия 1 ( вскрыть, ревизия- замена перемычек и т.д.) |  | 4h | 2026-04-23 09:00 A | 2026-04-23 13:00 A |  | 100% |  |  | start no earlier than 2026-04-23 08:00 | Бундин В | 4h | 4h |
| 359 | 1.191 | протянуть кабель UTP от столя Луговских до шкафа серверного (расскажу как протянуть по звонку) |  | 4h | 2026-04-23 09:00 A | 2026-04-23 13:00 A |  | 100% |  |  | start no earlier than 2026-04-23 08:00 | Бундин В | 4h | 4h |
| 360 | 1.192 | **подключить приточку как было** |  | 0.25d | 2026-04-29 09:00 A | 2026-04-29 11:00 A |  | 100% |  |  |  | Дедов В | 4h | 4h |
| 361 | 1.192.1 | подключить сервопривод на шибер и подключить |  | 2h | 2026-04-29 09:00 A | 2026-04-29 11:00 A |  | 100% |  |  | start no earlier than 2026-04-29 09:00 | Дедов В | 2h | 2h |
| 362 | 1.193 | **замена ленты на транспортере тип 2 2 линия (дособрать)** |  | 1.5d | 2026-04-24 09:00 A | 2026-04-27 13:00 A |  | 100% |  |  |  |  | 6h | 6h |
| 363 | 1.193.1 | со снятой ленты транспортера тип 2 снять все ковши (готовим для замены на 1 линии) |  | 2h | 2026-04-24 09:00 A | 2026-04-24 11:00 A |  | 100% |  |  | start no earlier than 2026-04-24 09:00 | Бундин В | 2h | 2h |
| 364 | 1.193.2 | установка ковшей со старой ленты на новую со склада 400х 5120мм |  | 4h | 2026-04-25 09:00 A | 2026-04-27 13:00 A |  | 100% |  |  | start no earlier than 2026-04-25 09:00 | Макаревич А | 4h | 4h |
| 365 | 1.194 | **система угольной фильтрации вытяжных газов с печей и пневотранспорта** |  | 0.25d | 2026-04-21 09:00 A | 2026-04-21 11:00 A |  | 100% |  |  |  |  | 3h | 3h |
| 366 | 1.194.1 | подготовить пластины 200*200 5мм для анкерения колон к полу ф12 6шт |  | 2h | 2026-04-21 09:00 A | 2026-04-21 11:00 A |  | 100% |  |  | start no earlier than 2026-04-21 09:00 | Бундин В | 2h | 2h |
| 367 | 1.194.2 | подготовить пластины 100*100 5мм для анкерения колон к стене 8шт |  | 1h | 2026-04-21 09:00 A | 2026-04-21 10:00 A |  | 100% |  |  | start no earlier than 2026-04-21 09:00 | Бундин В | 1h | 1h |
| 368 | 1.195 | проверка фильтров воды с редуктором в прекондиционер на ТО |  | 1h | 2026-04-22 09:00 A | 2026-04-22 10:00 A |  | 100% |  |  | start no earlier than 2026-04-22 09:00 | Бундин В | 1h | 1h |
| 369 | 1.196 | **заменить фильтры на жиротопка** |  | 10.28d | 2026-09-01 09:00 | 2026-09-15 11:15 |  |  | 126.31d |  |  |  | 2.25h |  |
| 370 | 1.196.1 | выяснить тип фильтров, заказ катриджи |  | 1h | 2026-09-01 09:00 | 2026-09-01 10:00 |  |  | 126.31d | 0d | start no earlier than 2026-09-01 09:00 | Зорькин В | 1h |  |
| 371 | 1.196.2 | контроль |  | 15min | 2026-09-15 10:00 | 2026-09-15 10:15 | 370FS+10d |  | 126.31d | 0d | start no earlier than 2026-04-22 09:00 | Зорькин В | 0.25h |  |
| 372 | 1.196.3 | замена |  | 1h | 2026-09-15 10:15 | 2026-09-15 11:15 | 371 |  | 126.31d |  | start no earlier than 2026-07-23 09:00 | Бобренок В | 1h |  |
| 373 | 1.197 | проверить напряжение в розетке конатушка вывоза готовой продукции |  | 1h | 2026-04-19 09:00 A | 2026-04-20 10:00 A |  | 100% |  |  | start no earlier than 2026-04-19 09:00 | Дедов В | 1h | 1h |

| ID | WBS | Task | Duration | Start | Finish | Predecessors | Complete | Remaining | Total slack | Free slack | Constraint | Resources | Work | Actual work |
| --- | --- | --- | --- | --- | --- | --- | --- | --- | --- | --- | --- | --- | --- | --- |
| 374 | 1.198 | **обслуживание инсекьюеров, утлизация отработанных ламп** | 94.25d | 2026-04-21 08:00 A | 2026-08-31 11:00 |  | 98% | 2.11d | 137.34d |  |  |  | 89.5h | 87.5h |
| 375 | 1.198.1 | Составить список ламп по цехам и передать Зорькину | 2h | 2026-04-21 08:00 A | 2026-04-21 11:00 A |  | 100% |  |  |  | start no earlier than 2026-04-21 08:00 | Тимофеев В | 2h | 2h |
| 376 | 1.198.2 | Заказать новые лампы | 30min | 2026-04-21 10:00 A | 2026-04-21 10:30 A | 375 | 100% |  |  |  | start no earlier than 2026-04-21 08:00 | Зорькин В | 0.5h | 0.5h |
| 377 | 1.198.3 | доставка | 10d | 2026-04-21 10:30 A | 2026-05-05 10:30 A | 376 | 100% |  |  |  | start no earlier than 2026-04-21 08:00 | Карабанов | 80h | 80h |
| 378 | 1.198.4 | снять все светильники мухоловки, извлечь лампы, уложить аккуратно в коробку (оставить в слесарке отработанные) светильники снятые передать мастеру смены для мытья | 2h | 2026-05-05 10:30 A | 2026-05-05 12:30 A | 377 | 100% |  |  |  | start no earlier than 2026-05-01 09:00 | Бобренок В | 2h | 2h |
| 379 | 1.198.5 | после чистки установить лампы в светильники, тусклые замнеить | 2h | 2026-05-12 09:00 A | 2026-05-12 11:00 A | 378 | 100% |  |  |  | start no earlier than 2026-05-12 09:00 | Бундин В | 2h | 2h |
| 380 | 1.198.6 | сообщить кол-во замененных ламп нач цехов | 1h | 2026-05-12 11:00 A | 2026-05-12 12:00 A | 379 | 100% |  |  |  | start no earlier than 2026-05-01 09:00 | Шуранов Ю | 1h | 1h |
| 381 | 1.198.7 | запрос договор на утилизацию ламп | 1h | 2026-08-31 09:00 | 2026-08-31 10:00 |  |  |  | 137.34d | 0d | start no earlier than 2026-08-31 09:00 | Зорькин В | 1h |  |
| 382 | 1.198.8 | подготовить лампы к утилизации | 1h | 2026-08-31 10:00 | 2026-08-31 11:00 | 380, 381 |  |  | 137.34d |  | start no earlier than 2026-05-27 09:00 | Зорькин В | 1h |  |
| 383 | 1.199 | **на 1 линии подготовить из оргстекла обратные крышки транспортера тип 2 (ковшевой), согласовать остановка с мастером и установить** | 0.12d | 2026-04-24 09:00 A | 2026-04-24 10:00 A |  | 100% |  |  |  |  | Бобренок В | 2h | 2h |
| 384 | 1.199.1 | перекрутить оргстекло (операторы подскажут в чем проблема) | 1h | 2026-04-24 09:00 A | 2026-04-24 10:00 A |  | 100% |  |  |  | start no earlier than 2026-04-24 09:00 | Бобренок В | 1h | 1h |
| 385 | 1.200 | проверить гидроаккумуляторы парогенераторов 1 и 2 линия и 100литровый в комнате стабилизации воды, если нужно качаем 2 очка. | 2h | 2026-04-19 09:00 A | 2026-04-20 11:00 A |  | 100% |  |  |  | start no earlier than 2026-04-19 09:00 | Макаревич А | 2h | 2h |
| 386 | 1.201 | проверка фильтров на редукторы экструдеров | 1h | 2026-04-24 09:00 A | 2026-04-24 10:00 A |  | 100% |  |  |  | start no earlier than 2026-04-24 09:00 | Тимофеев В | 1h | 1h |
| 387 | 1.202 | проверка токов, всех перемычек, шприцевание всех подшипников печи №2 | 3h | 2026-04-23 09:00 A | 2026-04-23 12:00 A |  | 100% |  |  |  | start no earlier than 2026-04-24 09:00 | Бобренок В | 3h | 3h |
| 388 | 1.203 | на питателе заменить втулки линия 1 и 2 | 2h | 2026-04-15 08:00 A | 2026-04-15 11:00 A |  | 100% |  |  |  | start no earlier than 2026-04-15 08:00 | Бобренок В | 2h | 2h |
| 389 | 1.204 | проверить радиатор приточки (протечки, есть ли подача горячей воды), если нет - выключить приточку, чтобы не разморозить! | 1h | 2026-04-14 09:00 A | 2026-04-14 10:00 A |  | 100% |  |  |  | start no earlier than 2026-04-14 08:00 | Труфанов А | 1h | 1h |
| 390 | 1.205 | приварить левую ногу мезонина на фасовке (штабелером сместили) | 1h | 2026-04-15 09:00 A | 2026-04-15 10:00 A |  | 100% |  |  |  | start no earlier than 2026-04-15 09:00 | Бобренок В | 1h | 1h |
| 391 | 1.206 | на печи №1 прошприцевать подшипники, проверить токи, если нужно вскрываем на ревизию перемычек | 3h | 2026-04-14 09:00 A | 2026-04-14 12:00 A |  | 100% |  |  |  | start no earlier than 2026-04-14 08:00 | Труфанов А | 3h | 3h |
| 392 | 1.207 | замена электродной группы на парогенераторе линия №1 (электроды подготовили в слесарке) | 4h | 2026-04-14 09:00 A | 2026-04-14 13:00 A |  | 100% |  |  |  | start no earlier than 2026-04-14 08:00 | Труфанов А | 4h | 4h |
| 393 | 1.208 | на квадропаке тена выставить в параллель | 1h | 2026-04-13 09:00 A | 2026-04-13 10:00 A |  | 100% |  |  |  | start no earlier than 2026-04-13 08:00 | Труфанов А | 1h | 1h |
| 394 | 1.209 | покрасить подиум под циклонами линия 1 и 2 | 2h | 2026-04-22 09:00 A | 2026-04-22 11:00 A |  | 100% |  |  |  | start no earlier than 2026-04-22 09:00 | Бундин В | 2h | 2h |
| 395 | 1.210 | подготовить лекало на приемный лоток транспортера тип 2 (у них в работе картонка, можно по ней и сделать), если будет остановка приварить | 1h | 2026-04-27 09:00 A | 2026-04-27 10:00 A |  | 100% |  |  |  | start no earlier than 2026-04-27 09:00 | Тимофеев В | 1h | 1h |
| 396 | 1.211 | на пнемоулитку поставить пистолет (зона экструдера) | 1h | 2026-04-11 09:00 A | 2026-04-13 10:00 A |  | 100% |  |  |  | start no earlier than 2026-04-11 09:00 | Макаревич А | 1h | 1h |
| 397 | 1.212 | установить фильтр на кондиционер между печками (фильтр у Луговских) | 1h | 2026-04-22 09:00 A | 2026-04-22 10:00 A |  | 100% |  |  |  | start no earlier than 2026-04-22 09:00 | Труфанов А | 1h | 1h |

| ID | WBS | Task | Type | Duration | Start | Finish | Predecessors | Complete | Actual start | Actual finish | Total slack | Constraint | Resources | Work | Actual work |
| --- | --- | --- | --- | --- | --- | --- | --- | --- | --- | --- | --- | --- | --- | --- | --- |
| 398 | 1.213 | **зафиксировать ручку в туалет (закрутить)** |  | 856.12d | 2023-03-22 09:00 A | 2026-04-22 10:00 |  | 100% |  | 2026-05-05 10:00 |  |  |  | 2h | 2h |
| 399 | 1.213.1 | заказать ручки |  | 1h | 2023-03-22 09:00 A | 2023-03-22 10:00 A |  | 100% |  |  |  |  | Шуранов Ю | 1h | 1h |
| 400 | 1.213.2 | установка (заменить ручку, взять на складе) |  | 1h | 2026-05-05 09:00 A | 2026-05-05 10:00 A |  | 100% |  |  |  | start no earlier than 2026-05-05 09:00 | Бобренок В | 1h | 1h |
| 401 | 1.214 | ТО теко 1,5 (чистка тен, смазка штоков пневмоцилиндров, подшипников) | manual | 3h | 2026-04-25 09:00 A | 2026-04-25 12:00 A |  | 100% |  |  |  | start no earlier than 2026-04-25 09:00 | Труфанов А | 3h | 3h |
| 402 | 1.215 | слить конденсат с компрессора, чистка фильтров и радиаторов | manual | 2h | 2026-04-12 09:00 A | 2026-04-12 11:00 A |  | 100% |  |  |  | start no earlier than 2026-04-12 09:00 | Макаревич А | 2h | 2h |
| 403 | 1.216 | **заказать газлифт жиротопка** |  | 11.12d? | 2026-04-22 09:00 A | 2026-05-06 10:00 |  | 100% |  | 2026-08-18 09:20 |  |  |  | 84.08h | 84.08h |
| 404 | 1.216.1 | доставка |  | 10d | 2026-04-22 09:00 A | 2026-05-05 18:00 A |  | 100% |  |  |  | start no earlier than 2026-04-22 09:00 | Карабанов | 80h | 80h |
| 405 | 1.216.2 | **установка газ лифт** |  | 69.04d | 2026-05-13 09:00 A | 2026-08-18 09:20 A |  | 100% |  |  |  |  |  | 4.08h | 4.08h |
| 406 | 1.216.2.1 | контроль поставки / размер |  | 20min | 2026-08-18 09:00 A | 2026-08-18 09:20 A |  | 100% |  |  |  | start no earlier than 2026-08-18 09:00 | Шуранов Ю | 0.33h | 0.33h |
| 407 | 1.216.2.2 | наварить уголок для площадки упора газлифта |  | 1h | 2026-05-13 09:00 A | 2026-05-13 10:00 A |  | 100% |  |  |  | start no earlier than 2026-05-13 09:00 | Труфанов А; Некрасов А | 2h | 2h |
| 408 | 1.216.2.3 | заявка газлифт с меньшей усилием/ выяснить координата |  | 30min | 2026-05-27 09:00 A | 2026-05-27 09:30 A |  | 100% |  |  |  | start no earlier than 2026-05-27 09:00 | Зорькин В | 0.5h | 0.5h |
| 409 | 1.216.2.4 | доставка контроль |  | 15min | 2026-08-12 09:00 A | 2026-08-12 09:15 A | 408FS+10d | 100% |  |  |  | start no earlier than 2026-05-13 09:00 | Зорькин В | 0.25h | 0.25h |
| 410 | 1.216.2.5 | замена |  | 1h | 2026-08-12 09:00 A | 2026-08-12 10:00 A |  | 100% |  |  |  | start no earlier than 2026-08-12 09:00 | Бобренок В | 1h | 1h |
| 411 | 1.217 | убрать диммер за еврокубом, где завозят навески (провода заизолировать и спрятать в кабель-канал) |  | 1h | 2026-04-10 08:00 A | 2026-04-10 10:00 A |  | 100% |  |  |  | start no earlier than 2026-04-10 08:00 | Бобренок В | 1h | 1h |
| 412 | 1.218 | закрыть монтажную коробку над дверью зона жиров выход |  | 1h | 2026-04-09 08:00 A | 2026-04-09 10:00 A |  | 100% |  |  |  | start no earlier than 2026-04-09 08:00 | Бобренок В | 1h | 1h |
| 413 | 1.219 | **на аппликаторе установить принтер (взять на складе)** |  | 3h? | 2026-04-10 09:00 | 2026-04-10 12:00 |  | 100% | 2026-04-09 08:00 | 2026-05-14 10:00 |  |  |  | 5h | 5h |
| 414 | 1.219.1 | монтаж витой пары от аппликатора до шкафа где вывозят ГП справа |  | 4h | 2026-04-09 08:00 A | 2026-04-09 13:00 A |  | 100% |  |  |  | start no earlier than 2026-04-09 08:00 | Бобренок В | 4h | 4h |
| 415 | 1.219.2 | тест принтера |  | 1h | 2026-05-14 09:00 A | 2026-05-14 10:00 A |  | 100% |  |  |  | start no earlier than 2026-05-14 09:00 | Зорькин В | 1h | 1h |
| 416 | 1.220 | замена шнек+гильзы (б/у) на 2 линии |  | 4h | 2026-04-09 08:00 A | 2026-04-09 13:00 A |  | 100% |  |  |  | start no earlier than 2026-04-09 08:00 | Тимофеев В | 4h | 4h |
| 417 | 1.221 | закрепить светильник в комнатке перед выходом, где вывозят готовую продукцию справа, оторвался | manual | 1h | 2026-04-08 09:00 A | 2026-04-08 10:00 A |  | 100% |  |  |  | start no earlier than 2026-04-08 08:00 | Бундин В | 1h | 1h |
| 418 | 1.222 | **замена лент на аппликаторе, подумать какой сделать отражатель для фотометки, чтобы не цепляло пакеты в работе** |  | 0.5d | 2026-05-27 09:00 | 2026-05-27 13:00 |  |  |  |  |  |  |  | 4h |  |
| 419 | 1.222.1 | замена ленеты |  | 4h | 2026-09-07 09:00 | 2026-09-07 13:00 |  |  |  |  | 132.09d | start no earlier than 2026-09-07 09:00 | Тимофеев В | 4h |  |
| 420 | 1.223 | подготовить электродную группу для парогенератора (собрать) |  | 2h | 2026-04-08 09:00 A | 2026-04-08 11:00 A |  | 100% |  |  |  | start no earlier than 2026-04-08 08:00 | Бундин В | 2h | 2h |
| 421 | 1.224 | **просыпается гранула на пересыпке с барабана в конвейер** |  | 0.5d | 2026-04-08 09:00 A | 2026-04-08 13:00 A |  | 100% |  |  |  |  |  | 6h | 6h |
| 422 | 1.224.1 | пододвинуть ближе к барабану конвейер + охладитель + вентилятор |  | 2h | 2026-04-08 09:00 A | 2026-04-08 11:00 A |  | 100% |  |  |  | start no earlier than 2026-04-08 09:00 | Бобренок В | 2h | 2h |
| 423 | 1.224.2 | доработка приемного лотка конвейера |  | 4h | 2026-04-08 09:00 A | 2026-04-08 13:00 A |  | 100% |  |  |  | start no earlier than 2026-04-08 09:00 | Некрасов А | 4h | 4h |
| 424 | 1.225 | забрать 2 рохли с пандуса, снять колеса в зип (зад- перед), а сами рохли в контейнер |  | 3h | 2026-04-04 09:00 A | 2026-04-06 12:00 A |  | 100% |  |  |  | start no earlier than 2026-04-04 09:00 | Труфанов А | 3h | 3h |

| ID | WBS | Task | Type | Duration | Start | Finish | Predecessors | Complete | Constraint | Resources | Work | Actual work |
| --- | --- | --- | --- | --- | --- | --- | --- | --- | --- | --- | --- | --- |
| 425 | 1.226 | **квадропак модернизация регулировки пластины нажима роликов для захвата пакета** |  | 2.12d | 2026-04-15 09:00 A | 2026-04-17 10:00 A |  | 100% |  |  | 3h | 3h |
| 426 | 1.226.1 | регулировочной тягой отвезти нажимную площадку на 5мм (остановить работу на 10 минут, согласовать с мастером) |  | 1h | 2026-04-17 09:00 A | 2026-04-17 10:00 A |  | 100% | start no earlier than 2026-04-17 09:00 | Бобренок В | 1h | 1h |
| 427 | 1.226.2 | изготовление пластины на ногу по аналогии как на первой ноге |  | 1h | 2026-04-15 09:00 A | 2026-04-15 10:00 A | 426 | 100% | start no earlier than 2026-04-15 09:00 | Бобренок В | 1h | 1h |
| 428 | 1.226.3 | монтаж |  | 1h | 2026-04-15 10:00 A | 2026-04-15 11:00 A | 427 | 100% | start no earlier than 2026-04-10 09:00 | Бобренок В | 1h | 1h |
| 429 | 1.227 | изготовить крышку на приямок слива канализации под раковинами зона экструдер. Из нерж, с ручкой. |  | 4h | 2026-04-02 08:00 A | 2026-04-02 13:00 A |  | 100% | start no earlier than 2026-04-02 08:00 | Бобренок В | 4h | 4h |
| 430 | 1.228 | выпрямить погнутые роль-ворота на рампе - в сторону слесарки (нужно откутить левую направляшку и вставить воротину на место) |  | 1h | 2026-04-02 08:00 A | 2026-04-02 10:00 A |  | 100% | start no earlier than 2026-04-02 08:00 | Бобренок В | 1h | 1h |
| 431 | 1.229 | **выключатель света на входе в гидролизатную закрепить сам рычаг переключения, проскальзывает** |  | 15.12d | 2026-04-06 09:00 A | 2026-04-27 10:00 A |  | 100% |  | Макаревич А | 123h | 123h |
| 432 | 1.229.1 | заказать выключатель |  | 1h | 2026-04-06 09:00 A | 2026-04-06 10:00 A |  | 100% | start no earlier than 2026-04-06 08:00 | Шуранов Ю | 1h | 1h |
| 433 | 1.229.2 | замена выключателя (выключатель в слесарке тебе показывал) |  | 1h | 2026-04-25 09:00 A | 2026-04-27 10:00 A |  | 100% | start no earlier than 2026-04-25 09:00 | Бобренок В | 1h | 1h |
| 434 | 1.230 | на пандусе 1 цеха справа - пометить шнеки и гильзы что они рабочие и вывести в контейнер |  | 2h | 2026-04-01 08:00 A | 2026-04-01 11:00 A |  | 100% | start no earlier than 2026-04-01 08:00 | Бобренок В | 2h | 2h |
| 435 | 1.231 | взять с контейнера пысос- проверить рабочий или нет (если работает выдать в 1 цех) |  | 2h | 2026-04-01 08:00 A | 2026-04-01 11:00 A |  | 100% | start no earlier than 2026-04-01 08:00 | Бобренок В | 2h | 2h |
| 436 | 1.232 | заменить плату интерфейса RS485 |  | 1h | 2026-04-04 09:00 A | 2026-04-06 10:00 A |  | 100% | start no earlier than 2026-04-04 09:00 | Труфанов А | 1h | 1h |
| 437 | 1.233 | замена шнеки 1 линия |  | 4h | 2026-03-31 08:00 A | 2026-03-31 13:00 A |  | 100% | start no earlier than 2026-03-31 08:00 | Тимофеев В; Бобренок В | 8h | 8h |
| 438 | 1.234 | замер износ шнеков |  | 1h | 2026-03-31 08:00 A | 2026-03-31 10:00 A |  | 100% | start no earlier than 2026-03-31 08:00 | Тимофеев В; Бобренок В; Зорькин В | 3h | 3h |
| 439 | 1.235 | почистить канальные вентиляторы вытяжки в курилке |  | 2h | 2026-03-28 09:00 A | 2026-03-30 11:00 A |  | 100% | start no earlier than 2026-03-28 09:00 | Бундин В | 2h | 2h |
| 440 | 1.236 | монтаж розетки на ногу нотис справа для подключения весов |  | 2h | 2026-03-27 09:00 A | 2026-03-27 11:00 A |  | 100% | start no earlier than 2026-03-27 09:00 | Труфанов А | 2h | 2h |
| 441 | 1.237 | добавить вибрации на виброохладителе линия 2 (согласовать с мастером, если будет остановка) |  | 2h | 2026-04-30 09:00 A | 2026-04-30 11:00 A | 450 | 100% |  | Бундин В | 2h | 2h |
| 442 | 1.238 | **замена ленты конвейер 2 линия 2** |  | 12.38d | 2026-04-07 09:00 A | 2026-04-23 12:00 A |  | 100% |  |  | 15h | 15h |
| 443 | 1.238.1 | взять ленту 400мм и начать крепить ковши для транспортера тип 2 (посчитать количество на транспортере) | manual | 9h | 2026-04-07 09:00 A | 2026-04-08 10:00 A |  | 100% | start no earlier than 2026-04-07 09:00 | Тимофеев В | 9h | 9h |
| 444 | 1.238.2 | замена ленты |  | 3h | 2026-04-23 09:00 A | 2026-04-23 12:00 A |  | 100% | start no earlier than 2026-04-23 09:00 | Тимофеев В; Бундин В | 6h | 6h |
| 445 | 1.239 | заменить на штабелере второй АКБ в зоне экструдера |  | 1h | 2026-03-28 09:00 A | 2026-03-30 10:00 A |  | 100% | start no earlier than 2026-03-28 09:00 | Дедов В | 1h | 1h |
| 446 | 1.240 | на кпп №1 опустить на 10см кабель в гофре для камер видеонаблюдения | manual | 2h | 2026-03-28 09:00 A | 2026-03-28 11:00 A |  | 100% | start no earlier than 2026-03-28 09:00 | Бундин В | 2h | 2h |
| 447 | 1.241 | вход охладителя 1 линии - нужно на среднем лотке между уровнями сделать сбоков шторки (фото скину) |  | 2h | 2026-03-28 09:00 A | 2026-03-30 11:00 A |  | 100% | start no earlier than 2026-03-28 09:00 | Бундин В | 2h | 2h |
| 448 | 1.242 | на первой линии под выходом из печи прикрутить на стенку оргстекло (Слава готовил по размерам оргстекло) |  | 1h | 2026-03-28 09:00 A | 2026-03-30 10:00 A |  | 100% | start no earlier than 2026-03-28 09:00 | Труфанов А | 1h | 1h |
| 449 | 1.243 | На пробниках оторвали разъем питания, нужно припаять |  | 2h | 2026-03-27 09:00 A | 2026-03-27 11:00 A |  | 100% | start no earlier than 2026-03-27 09:00 | Дедов В | 2h | 2h |
| 450 | 1.244 | подготовить 1 ленты с ковшами для транспортера тип 2 (зип) |  | 1d? | 2026-04-29 09:00 A | 2026-04-29 18:00 A |  | 100% | start no earlier than 2026-04-29 09:00 | Шуранов Ю | 8h | 8h |
| 451 | 1.245 | замена на старые капролонновые втулки в питателе линия 1 |  | 1h | 2026-03-26 09:00 A | 2026-03-26 10:00 A |  | 100% | start no earlier than 2026-03-26 09:00 | Тимофеев В | 1h | 1h |
| 452 | 1.246 | сделать на 2 линии вставыш на ленту транспортера тип 2 и установить на транспортер |  | 4h | 2026-03-25 09:00 A | 2026-03-25 13:00 A |  | 100% | start no earlier than 2026-03-25 09:00 | Некрасов А; Бобренок В | 8h | 8h |
| 453 | 1.247 | герметизация мезонина подачи навесок по шву |  | 1h | 2026-04-15 09:00 A | 2026-04-15 10:00 A |  | 100% | start no earlier than 2026-04-15 09:00 | Бобренок В | 1h | 1h |

| ID | WBS | Task | Type | Duration | Start | Finish | Complete | Remaining | Actual start | Actual finish | Constraint | Resources | Work | Actual work |
| --- | --- | --- | --- | --- | --- | --- | --- | --- | --- | --- | --- | --- | --- | --- |
| 454 | 1.248 | **на 2 линии на хомуты закрепить горловину к бункеру подачи сухого гидрализата (все расскажу)** |  | 0.25d | 2026-04-27 09:00 A | 2026-04-27 11:00 A | 100% |  |  |  |  | Некрасов А | 4h | 4h |
| 455 | 1.248.1 | на горловине подачи сухого гидрализата приварить выход под углом 45 градусов (углы из нерж есть в 3 цехе) |  | 2h | 2026-04-27 09:00 A | 2026-04-27 11:00 A | 100% |  |  |  | start no earlier than 2026-04-27 09:00 | Макаревич А | 2h | 2h |
| 456 | 1.249 | **разобрать с двух сторон питатель 2 линия - ревизия шестеренок и втулок спереди (оставить все разобранное)** |  | 2h | 2026-03-24 09:00 | 2026-03-24 11:00 | 100% |  | 2026-03-26 09:00 | 2026-03-26 11:00 |  |  | 2h | 2h |
| 457 | 1.249.1 | собрать питатель, ревизия втулок, подшипников, шнеков, шестеренок. Подогнать капролонновые втулки |  | 2h | 2026-03-26 09:00 A | 2026-03-26 11:00 A | 100% |  |  |  | start no earlier than 2026-03-26 09:00 | Тимофеев В | 2h | 2h |
| 458 | 1.250 | пульт управления кондиционером в зоне экструдера- закрепить гофру и заизолировать разрыв гофры, закрепить к стенке |  | 1h | 2026-03-24 08:00 A | 2026-03-24 10:00 A | 100% |  |  |  | start no earlier than 2026-03-24 08:00 | Бобренок В | 1h | 1h |
| 459 | 1.251 | блок питания для весов на жирах развалился, стянуть изолентой |  | 1h | 2026-03-24 08:00 A | 2026-03-24 10:00 A | 100% |  |  |  | start no earlier than 2026-03-24 08:00 | Бобренок В | 1h | 1h |
| 460 | 1.252 | **ремонт /отключить 2 вентилятора охладитель 1 линия** |  | 801d | 2023-06-21 09:00 A | 2026-07-15 18:00 A | 100% |  |  |  |  | Тимофеев В | 12801h | 12801h |
| 461 | 1.252.1 | заказать в зип |  | 6392h | 2023-06-21 09:00 A | 2026-07-15 18:00 A | 100% |  |  |  |  | Шуранов Ю | 6392h | 6392h |
| 462 | 1.252.2 | заменить 2 вентилятора |  | 1h | 2026-04-04 09:00 A | 2026-04-06 10:00 A | 100% |  |  |  |  | Макаревич А | 1h | 1h |
| 463 | 1.253 | демонтаж крышка лотка в проеме между краем площадки вентиляции приточной и проемом ворот вход в кооридор завода навесок |  | 383520min | 2023-06-21 09:00 A | 2026-07-15 18:00 A | 100% |  |  |  |  | Труфанов А | 6392h | 6392h |
| 464 | 1.254 | стук шнек 2 линия - проверить, при необходимости разобрать |  | 3h | 2026-04-27 09:00 A | 2026-04-27 12:00 A | 100% |  |  |  | start no earlier than 2026-04-27 09:00 | Тимофеев В; Бобренок В | 6h | 6h |
| 465 | 1.255 | слить конденсат и продуть все радиаторы компрессор |  | 1h | 2026-03-21 09:00 A | 2026-03-23 10:00 A | 100% |  |  |  | start no earlier than 2026-03-21 09:00 | Дедов В | 1h | 1h |
| 466 | 1.256 | закрепить аварийную кнопку в гидролизатной (фото в чате будет) / пожарный выключатель |  | 1h | 2026-03-22 09:00 A | 2026-03-23 10:00 A | 100% |  |  |  | start no earlier than 2026-03-22 09:00 | Бобренок В | 1h | 1h |
| 467 | 1.257 | кнопки на управление ворот зона жиров поднять и закпепить выше |  | 2h | 2026-03-18 08:00 A | 2026-03-18 11:00 A | 100% |  |  |  | start no earlier than 2026-03-18 08:00 | Макаревич А | 2h | 2h |
| 468 | 1.258 | закрепить все отбойники где завозят навески экструдерщики |  | 2h | 2026-03-18 08:00 A | 2026-03-18 11:00 A | 100% |  |  |  | start no earlier than 2026-03-18 08:00 | Макаревич А | 2h | 2h |
| 469 | 1.259 | закрыить все электро шкафы |  | 30min | 2026-03-17 08:00 A | 2026-03-17 09:30 A | 100% |  |  |  | start no earlier than 2026-03-17 08:00 | Бобренок В | 0.5h | 0.5h |
| 470 | 1.260 | поломоечная машинка устранить течь |  | 1h | 2026-03-17 08:00 A | 2026-03-17 10:00 A | 100% |  |  |  | start no earlier than 2026-03-17 08:00 | Бобренок В | 1h | 1h |
| 471 | 1.261 | закрыить крышку на пробниках, задняя стенка прикрутить |  | 30min | 2026-03-17 08:00 A | 2026-03-17 09:30 A | 100% |  |  |  | start no earlier than 2026-03-17 08:00 | Бобренок В | 0.5h | 0.5h |
| 472 | 1.262 | продувка кабельного лотка |  | 2h | 2026-03-18 09:00 A | 2026-03-18 11:00 A | 100% |  |  |  | start no earlier than 2026-03-18 09:00 | Труфанов А; Некрасов А | 4h | 4h |
| 473 | 1.263 | монтаж крючков под халаты. Получить у мастера |  | 1h | 2026-03-17 08:00 A | 2026-03-17 10:00 A | 100% |  |  |  | start no earlier than 2026-03-17 08:00 | Бобренок В | 1h | 1h |
| 474 | 1.264 | **установить расходомеры пара на ПГ** |  | 0.38d | 2026-04-01 09:00 | 2026-04-01 12:00 |  | 0.38d | 2026-09-07 09:00 |  |  |  | 3h |  |
| 475 | 1.264.1 | монтаж 1 линия расходомер / кабель / блок питания | manual | 3h | 2026-09-07 09:00 A | 2026-09-07 12:00 |  | 3h |  |  | start no earlier than 2026-09-07 09:00 | Некрасов А | 3h |  |
| 476 | 1.265 | **монтаж регистратор данных линия 1 и 2:** |  | 0.25d | 2026-03-18 09:00 A | 2026-03-18 11:00 A | 100% |  |  |  |  |  | 2h | 2h |
| 477 | 1.265.1 | подключение линия 1 |  | 2h | 2026-03-18 09:00 A | 2026-03-18 11:00 A | 100% |  |  |  | start no earlier than 2026-03-18 09:00 | Домоводов К | 2h | 2h |

| ID | WBS | Task | Type | Duration | Start | Finish | Predecessors | Complete | Remaining | Total slack | Free slack | Constraint | Resources | Work | Actual work |
| --- | --- | --- | --- | --- | --- | --- | --- | --- | --- | --- | --- | --- | --- | --- | --- |
| 478 | 1.266 | **разделить воду в экструдер и парогенераторы** |  | 135.44d | 2026-03-19 09:00 A | 2026-09-24 12:30 |  | 90% | 13.26d | 119.16d |  |  |  | 117.5h | 106h |
| 479 | 1.266.1 | заявка поплавкой клапан вертикальный, подводка с боку по аналогии с 4ц |  | 1h | 2026-03-19 09:00 A | 2026-03-19 10:00 A |  | 100% |  |  |  | start no earlier than 2026-03-19 08:00 | Зорькин В | 1h | 1h |
| 480 | 1.266.2 | доставка |  | 10d | 2026-03-19 10:00 A | 2026-04-02 10:00 A | 479 | 100% |  |  |  | start no earlier than 2026-03-19 08:00 | Карабанов | 80h | 80h |
| 481 | 1.266.3 | испытать производсительность маленького черн насоса с "медленным" счетким |  | 2h | 2026-05-20 09:00 A | 2026-05-20 11:00 A |  | 100% |  |  |  | start no earlier than 2026-05-20 09:00 | Тимофеев В | 2h | 2h |
| 482 | 1.266.4 | изготовить емкость для поплавкой камеры и насоса из нерж |  | 4h | 2026-04-27 09:00 A | 2026-04-27 13:00 A |  | 100% |  |  |  | start no earlier than 2026-04-27 09:00 | Макаревич А | 4h | 4h |
| 483 | 1.266.5 | доставка частотный 220 контроль | milestone | 0d | 2026-04-24 09:00 A | 2026-04-24 09:00 A |  | 100% |  |  |  | start no earlier than 2026-04-24 09:00 | Зорькин В |  |  |
| 484 | 1.266.6 | испытать регулирование насоса на частотнике |  | 1h | 2026-05-26 09:00 A | 2026-05-26 10:00 A |  | 100% |  |  |  | start no earlier than 2026-05-26 09:00 | Дедов В | 1h | 1h |
| 485 | 1.266.7 | монтаж насоса + бак нерж на линия 2 |  | 1h | 2026-05-27 09:00 A | 2026-05-27 10:00 A |  | 100% |  |  |  | start no earlier than 2026-05-27 09:00 | Тимофеев В | 1h | 1h |
| 486 | 1.266.8 | монтаж розетка, кабель до насаса, подключение двигатель насоса |  | 1h | 2026-05-27 09:00 A | 2026-05-27 10:00 A |  | 100% |  |  |  | start no earlier than 2026-05-27 09:00 | Бундин В | 1h | 1h |
| 487 | 1.266.9 | подключение насос + счетчик + кран + частотник - сборка схема с байпасом на мал насосе |  | 2h | 2026-08-11 09:00 A | 2026-08-11 11:00 A |  | 100% |  |  |  | start no earlier than 2026-08-11 09:00 | Тимофеев В | 2h | 2h |
| 488 | 1.266.10 | установить счетчик в линию |  | 1h | 2026-08-12 09:00 A | 2026-08-12 10:00 A |  | 100% |  |  |  | start no earlier than 2026-08-12 09:00 | Тимофеев В | 1h | 1h |
| 489 | 1.266.11 | испытания производительности и регулировки |  | 1h | 2026-08-12 09:00 A | 2026-08-12 10:00 A |  | 100% |  |  |  | start no earlier than 2026-08-12 09:00 | Тимофеев В | 1h | 1h |
| 490 | 1.266.12 | тестирование работы при обновленном SSID |  | 1h | 2026-08-19 09:00 A | 2026-08-19 10:00 A |  | 100% |  |  |  | start no earlier than 2026-08-19 09:00 | Домоводов К | 1h | 1h |
| 491 | 1.266.13 | **монтаж на линия 1** |  | 18.44d | 2026-08-31 09:00 | 2026-09-24 12:30 |  |  |  | 119.16d |  |  |  | 11.5h |  |
| 492 | 1.266.13.1 | заявка на счетчик, насос, 3х ход клапан, фитинги, канистра |  | 1h | 2026-08-31 09:00 | 2026-08-31 10:00 |  |  |  | 119.16d | 0d | start no earlier than 2026-08-31 09:00 | Зорькин В | 1h |  |
| 493 | 1.266.13.2 | контроль поставки |  | 30min | 2026-09-21 10:00 | 2026-09-21 10:30 | 492FS+15d |  |  | 119.16d | 0d | start no earlier than 2026-08-12 09:00 | Зорькин В | 0.5h |  |
| 494 | 1.266.13.3 | сборка корпус |  | 4h | 2026-09-22 10:30 | 2026-09-22 15:30 | 493FS+1d |  |  | 119.16d | 0d | start no earlier than 2026-08-12 09:00 | Тимофеев В | 4h |  |
| 495 | 1.266.13.4 | монтаж линия 1 |  | 6h | 2026-09-23 15:30 | 2026-09-24 12:30 | 494FS+1d |  |  | 119.16d |  | start no earlier than 2026-08-12 09:00 | Тимофеев В | 6h |  |
| 496 | 1.266.14 | подключть конденсатор к насосу, запуск системы |  | 1h | 2026-05-27 08:00 A | 2026-05-27 10:00 A |  | 100% |  |  |  | start no earlier than 2026-05-27 08:00 | Дедов В | 1h | 1h |
| 497 | 1.266.15 | подготовить емкость нерж (попловок, сгон) для подключения к насосу |  | 4h | 2026-05-26 09:00 A | 2026-05-26 13:00 A |  | 100% |  |  |  | start no earlier than 2026-05-26 09:00 | Бундин В | 4h | 4h |
| 498 | 1.266.16 | испытать насос на часотоном приводе |  | 2h | 2026-05-19 09:00 A | 2026-05-19 11:00 A | 483 | 100% |  |  |  | start no earlier than 2026-05-20 09:00 | Тимофеев В | 2h | 2h |
| 499 | 1.266.17 | перенос с 3й линии бак с насосом, установка на линия 2 |  | 4h | 2026-04-08 09:00 A | 2026-04-08 13:00 A | 482 | 100% |  |  |  | start no earlier than 2026-04-08 09:00 | Некрасов А | 4h | 4h |
| 500 | 1.267 | бойлер на экструдере - установить трубку на клапан сброса и смонтировать её ы раковину |  | 1h | 2026-03-14 09:00 A | 2026-03-16 10:00 A |  | 100% |  |  |  | start no earlier than 2026-03-14 09:00 | Бундин В | 1h | 1h |
| 501 | 1.268 | смазать дверную ручку (входную) |  | 1h | 2026-03-15 09:00 A | 2026-03-16 10:00 A |  | 100% |  |  |  | start no earlier than 2026-03-15 09:00 | Бундин В | 1h | 1h |
| 502 | 1.269 | сделать ручку дверную (вход на упаковку) |  | 1h | 2026-03-15 09:00 A | 2026-03-16 10:00 A |  | 100% |  |  |  | start no earlier than 2026-03-15 09:00 | Бундин В | 1h | 1h |
| 503 | 1.270 | дверная ручка в туалет (подкрутить) |  | 1h | 2026-03-15 09:00 A | 2026-03-16 10:00 A |  | 100% |  |  |  | start no earlier than 2026-03-15 09:00 | Бундин В | 1h | 1h |
| 504 | 1.271 | штабелер экструдера натянуть цепь |  | 1h | 2026-03-13 08:00 A | 2026-03-13 10:00 A |  | 100% |  |  |  | start no earlier than 2026-03-13 08:00 | Дедов В | 1h | 1h |
| 505 | 1.272 | установить розетку возле роутера. Место монтажа фото от Шуранова |  | 2h | 2026-03-14 09:00 A | 2026-03-16 11:00 A |  | 100% |  |  |  | start no earlier than 2026-03-14 09:00 | Бундин В | 2h | 2h |
| 506 | 1.273 | линия 1 лоток охладителя под конвейером (по фото) - поднять на 3см, что бы не цеплял сетку. Снять / пересверлить крепеж |  | 2h | 2026-03-14 09:00 A | 2026-03-16 11:00 A |  | 100% |  |  |  | start no earlier than 2026-03-14 09:00 | Бундин В | 2h | 2h |
| 507 | 1.274 | изготовтиь полочку для роутера с "крышей. Двух скатная". |  | 4h | 2026-03-14 09:00 A | 2026-03-16 13:00 A |  | 100% |  |  |  | start no earlier than 2026-03-14 09:00 | Бундин В | 4h | 4h |

| ID | WBS | Task | Type | Duration | Start | Finish | Predecessors | Complete | Remaining | Actual start | Total slack | Constraint | Resources | Work | Actual work |
| --- | --- | --- | --- | --- | --- | --- | --- | --- | --- | --- | --- | --- | --- | --- | --- |
| 508 | 1.275 | **АКБ штабелер на навесках** |  | 43d | 2026-03-13 08:00 A | 2026-05-12 18:00 A |  | 100% |  |  |  |  |  | 2h | 2h |
| 509 | 1.275.1 | заявка на новые АКБ, отправить | milestone | 0d | 2026-03-13 08:00 A | 2026-03-13 08:00 A |  | 100% |  |  |  | start no earlier than 2026-03-13 08:00 | Шуранов Ю |  |  |
| 510 | 1.275.2 | получить счет | milestone | 0d | 2026-03-16 09:00 A | 2026-03-16 09:00 A | 509 | 100% |  |  |  | start no earlier than 2026-03-16 09:00 | Шуранов Ю |  |  |
| 511 | 1.275.3 | доставыка\ |  | 40d | 2026-03-16 09:00 A | 2026-05-12 18:00 A | 510 | 100% |  |  |  | start no earlier than 2026-03-13 08:00 |  |  |  |
| 512 | 1.275.4 | замена (получить на складе 2 АКБ и поменять на штабелере) |  | 2h | 2026-03-25 09:00 A | 2026-03-25 11:00 A |  | 100% |  |  |  | start no earlier than 2026-03-25 09:00 | Бобренок В | 2h | 2h |
| 513 | 1.276 | замена шнеков на 1 линии по команде. Подготовить / старые увезти |  | 1h | 2026-03-14 09:00 A | 2026-03-16 10:00 A |  | 100% |  |  |  | start no earlier than 2026-03-14 09:00 | Бобренок В; Некрасов А | 2h | 2h |
| 514 | 1.277 | **установить принтер датаматрикс на пролистыватель** |  | 122d? | 2026-03-13 09:00 A | 2026-08-31 18:00 |  | 20% | 97.6d? |  | 136.59d |  |  | 11h | 3h |
| 515 | 1.277.1 | разработка крепления принтера |  | 1h | 2026-03-13 09:00 A | 2026-03-13 10:00 A |  | 100% |  |  |  | start no earlier than 2026-03-13 08:00 | Зорькин В; Шуранов Ю | 2h | 2h |
| 516 | 1.277.2 | настройка ПО с агрегатором |  | 1d? | 2026-08-31 09:00 | 2026-08-31 18:00 |  |  |  |  | 136.59d | start no earlier than 2026-08-31 09:00 | Домоводов К | 8h |  |
| 517 | 1.277.3 | изучение документации |  | 1h | 2026-05-28 09:00 A | 2026-05-28 10:00 A |  | 100% |  |  |  | start no earlier than 2026-05-28 09:00 | Домоводов К | 1h | 1h |
| 518 | 1.278 | **заменить мятый профлист коррдиор подачи навесок** |  | 32.25d | 2026-03-13 09:00 A | 2026-04-28 11:00 A |  | 100% |  |  |  |  |  | 85h | 85h |
| 519 | 1.278.1 | расчет материал / заявка |  | 1h | 2026-03-13 09:00 A | 2026-03-13 10:00 A |  | 100% |  |  |  | start no earlier than 2026-03-13 09:00 | Шуранов Ю | 1h | 1h |
| 520 | 1.278.2 | доставка |  | 10d | 2026-03-13 10:00 A | 2026-03-27 10:00 A | 519 | 100% |  |  |  | start no earlier than 2026-03-12 08:00 | Карабанов | 80h | 80h |
| 521 | 1.278.3 | замена |  | 2h | 2026-04-28 09:00 A | 2026-04-28 11:00 A | 520 | 100% |  |  |  | start no earlier than 2026-04-28 09:00 | Некрасов А; Труфанов А | 4h | 4h |
| 522 | 1.279 | **заменить плинтус стена вдольпечи 2** |  | 11.06d? | 2026-03-26 09:00 | 2026-04-10 09:30 |  | 91% | 1d? | 2026-03-13 09:00 |  |  |  | 96.5h | 80.5h |
| 523 | 1.279.1 | заявка |  | 30min | 2026-03-13 09:00 A | 2026-03-13 09:30 A |  | 100% |  |  |  | start no earlier than 2026-03-13 09:00 | Шуранов Ю | 0.5h | 0.5h |
| 524 | 1.279.2 | доставка |  | 10d | 2026-03-13 09:30 A | 2026-03-27 09:30 A | 523 | 100% |  |  |  | start no earlier than 2026-03-12 08:00 | Карабанов | 80h | 80h |
| 525 | 1.279.3 | замена |  | 1d? | 2026-09-14 09:00 | 2026-09-14 18:00 | 524 |  |  |  | 126.59d | start no earlier than 2026-09-14 09:00 | Некрасов А; Олег | 16h |  |
| 526 | 1.280 | **заменить аллюминевый скотч на швах вентиляции** |  | 18.25d | 2026-03-12 09:00 A | 2026-04-07 11:00 A |  | 100% |  |  |  |  |  | 82.33h | 82.33h |
| 527 | 1.280.1 | заявка |  | 20min | 2026-03-12 09:00 A | 2026-03-12 09:20 A |  | 100% |  |  |  | start no earlier than 2026-03-12 08:00 | Зорькин В | 0.33h | 0.33h |
| 528 | 1.280.2 | доставка |  | 10d | 2026-03-12 09:20 A | 2026-03-26 09:20 A | 527 | 100% |  |  |  | start no earlier than 2026-03-12 08:00 | Карабанов | 80h | 80h |
| 529 | 1.280.3 | замена (также на улитках печей, циклона, стык регулировки шибера улитки) | manual | 2h | 2026-04-07 09:00 A | 2026-04-07 11:00 A | 528 | 100% |  |  |  | start no earlier than 2026-04-07 09:00 | Бундин В | 2h | 2h |
| 530 | 1.281 | **замена скорлупа утеплитель горячих труб печи** |  | 16d | 2026-03-13 09:00 A | 2026-04-05 11:00 A |  | 100% |  |  |  |  |  | 83h | 83h |
| 531 | 1.281.1 | заявка |  | 1h | 2026-03-13 09:00 A | 2026-03-13 10:00 A |  | 100% |  |  |  | start no earlier than 2026-03-13 09:00 | Зорькин В | 1h | 1h |
| 532 | 1.281.2 | доставка |  | 10d | 2026-03-13 10:00 A | 2026-03-27 10:00 A | 531 | 100% |  |  |  | start no earlier than 2026-03-12 08:00 | Карабанов | 80h | 80h |
| 533 | 1.281.3 | замена | manual | 2h | 2026-04-05 09:00 A | 2026-04-05 11:00 A | 532 | 100% |  |  |  | start no earlier than 2026-04-05 09:00 | Бундин В | 2h | 2h |

| ID | WBS | Task | Type | Duration | Start | Finish | Predecessors | Complete | Remaining | Actual start | Constraint | Resources | Work | Actual work |
| --- | --- | --- | --- | --- | --- | --- | --- | --- | --- | --- | --- | --- | --- | --- |
| 534 | 1.282 | **купить прокатный запайщик** |  | 85.12d? | 2026-03-16 09:00 A | 2026-07-13 10:00 A |  | 100% |  |  |  |  | 11h | 11h |
| 535 | 1.282.1 | поиск / заявка |  | 2h | 2026-03-16 09:00 A | 2026-03-16 11:00 A |  | 100% |  |  | start no earlier than 2026-03-16 09:00 | Зорькин В | 2h | 2h |
| 536 | 1.282.2 | получить счет + договор |  | 1h | 2026-05-12 09:00 A | 2026-05-12 10:00 A | 535 | 100% |  |  | start no earlier than 2026-05-12 09:00 | Зорькин В | 1h | 1h |
| 537 | 1.282.3 | оплата | milestone | 0d | 2026-05-12 10:00 A | 2026-05-12 10:00 A | 536 | 100% |  |  | start no earlier than 2026-03-12 08:00 | Домоводов К |  |  |
| 538 | 1.282.4 | доставка |  | 40d | 2026-05-12 10:00 A | 2026-07-13 10:00 A | 537 | 100% |  |  | start no earlier than 2026-03-12 08:00 |  |  |  |
| 539 | 1.282.5 | приемка / сборка |  | 1d? | 2026-06-29 09:00 A | 2026-06-29 18:00 A | 538 | 100% |  |  | start no earlier than 2026-03-12 08:00 | Тимофеев В | 8h | 8h |
| 540 | 1.283 | сборка рохли 2шт |  | 1h | 2026-03-13 09:00 A | 2026-03-13 10:00 A |  | 100% |  |  | start no earlier than 2026-03-13 09:00 | Тимофеев В | 1h | 1h |
| 541 | 1.284 | изготовить герметичную крышку на подачку гидролизата |  | 2h | 2026-05-20 09:00 A | 2026-05-20 11:00 A |  | 100% |  |  | start no earlier than 2026-05-20 09:00 | Дедов В; Шуранов Ю | 4h | 4h |
| 542 | 1.285 | **установить крышку печи торцевую с стороны экструдера на шарниры** |  | 12.5d | 2026-03-25 09:00 | 2026-04-10 13:00 |  | 95% | 0.57d | 2026-03-06 09:00 |  |  | 88.08h | 84.08h |
| 543 | 1.285.1 | заказ шарниры |  | 5min | 2026-03-06 09:00 A | 2026-03-06 09:05 A |  | 100% |  |  | start no earlier than 2026-03-06 08:00 | Шуранов Ю | 0.08h | 0.08h |
| 544 | 1.285.2 | доставка |  | 10d | 2026-03-06 09:05 A | 2026-03-20 09:05 A | 543 | 100% |  |  | start no earlier than 2026-03-06 08:00 | Карабанов | 80h | 80h |
| 545 | 1.285.3 | монтаж линия 1 |  | 4h | 2026-05-13 09:00 A | 2026-05-13 13:00 A | 544 | 100% |  |  | start no earlier than 2026-05-13 09:00 | Бобренок В | 4h | 4h |
| 546 | 1.285.4 | монтаж линия 1 и 2 печи (чтобы открывалась и не мешала открыванию лотку сверху) | manual | 4h | 2026-09-05 09:00 | 2026-09-05 13:00 | 544 |  |  |  | start no earlier than 2026-09-05 09:00 | Макаревич А | 4h |  |
| 547 | 1.286 | **квадропак заменить пружины на лапках** |  | 10.12d | 2026-03-18 09:00 A | 2026-04-01 10:00 A |  | 100% |  |  |  |  | 3h | 3h |
| 548 | 1.286.1 | попытка заменить |  | 1h | 2026-03-18 09:00 A | 2026-03-18 10:00 A |  | 100% |  |  | start no earlier than 2026-03-18 09:00 | Дедов В | 1h | 1h |
| 549 | 1.286.2 | проврить ролики на износ / заказать |  | 1h | 2026-03-19 09:00 A | 2026-03-19 10:00 A |  | 100% |  |  | start no earlier than 2026-03-19 08:00 | Зорькин В | 1h | 1h |
| 550 | 1.286.3 | проверить / разрабоать полпн прижимная пластина регулировка |  | 1h | 2026-04-01 09:00 A | 2026-04-01 10:00 A |  | 100% |  |  | start no earlier than 2026-04-01 09:00 | Шуранов Ю | 1h | 1h |
| 551 | 1.287 | **звонок на ворота по привозу навесок** |  | 37.25d | 2026-03-05 09:00 A | 2026-04-27 11:00 A |  | 100% |  |  |  |  | 82.5h | 82.5h |
| 552 | 1.287.1 | заявка на сирену / звонок |  | 30min | 2026-03-05 09:00 A | 2026-03-05 09:30 A |  | 100% |  |  | start no earlier than 2026-03-05 09:00 | Шуранов Ю | 0.5h | 0.5h |
| 553 | 1.287.2 | доставка |  | 10d | 2026-03-12 09:00 A | 2026-03-25 18:00 A | 552 | 100% |  |  | start no earlier than 2026-03-12 08:00 | Карабанов | 80h | 80h |
| 554 | 1.287.3 | монтаж кнопка и звонок на складе (кнопку устанавливаем справа от ворот- звонок возле ВРУ слева |  | 2h | 2026-04-25 09:00 A | 2026-04-27 11:00 A | 553 | 100% |  |  | start no earlier than 2026-04-25 09:00 | Бобренок В | 2h | 2h |
| 555 | 1.288 | **установить профлист на левую стену** |  | 47d? | 2026-03-12 09:00 A | 2026-05-15 18:00 A |  | 100% |  |  |  |  | 185.5h | 185.5h |
| 556 | 1.288.1 | расчет материал с Олегом |  | 1h | 2026-03-12 09:00 A | 2026-03-12 10:00 A |  | 100% |  |  | start no earlier than 2026-03-12 09:00 | Шуранов Ю | 1h | 1h |
| 557 | 1.288.2 | заявка |  | 30min | 2026-03-19 09:00 A | 2026-03-19 09:30 A | 556 | 100% |  |  | start no earlier than 2026-03-19 09:00 | Шуранов Ю | 0.5h | 0.5h |
| 558 | 1.288.3 | доставка |  | 10d | 2026-03-19 09:30 A | 2026-04-02 09:30 A | 557 | 100% |  |  | start no earlier than 2026-03-04 08:00 | Карабанов | 80h | 80h |
| 559 | 1.288.4 | монтаж пробный ряд |  | 4h | 2026-04-22 09:00 A | 2026-04-22 13:00 A |  | 100% |  |  | start no earlier than 2026-04-22 09:00 | Некрасов А; Олег; Труфанов А | 12h | 12h |
| 560 | 1.288.5 | монтаж каркас |  | 1d? | 2026-04-23 14:00 A | 2026-04-24 13:00 A | 558, 559FS+1d | 100% |  |  | start no earlier than 2026-04-22 09:00 | Некрасов А; Труфанов А | 16h | 16h |
| 561 | 1.288.6 | монтаж лист |  | 6h | 2026-04-28 09:00 A | 2026-04-28 16:00 A | 560 | 100% |  |  | start no earlier than 2026-04-28 09:00 | Некрасов А; Труфанов А | 12h | 12h |
| 562 | 1.288.7 | монтаж уровень 2 |  | 4d | 2026-05-12 09:00 A | 2026-05-15 18:00 A |  | 100% |  |  | start no earlier than 2026-05-12 08:00 | Некрасов А; Труфанов А | 64h | 64h |

| ID | WBS | Task | Type | Duration | Start | Finish | Predecessors | Complete | Remaining | Total slack | Free slack | Constraint | Resources | Work | Actual work |
| --- | --- | --- | --- | --- | --- | --- | --- | --- | --- | --- | --- | --- | --- | --- | --- |
| 563 | 1.289 | **модернизация вентиляции** |  | 126.25d | 2026-03-13 09:00 A | 2026-09-07 11:00 |  | 26% | 92.83d | 132.34d |  |  |  | 8.5h | 2.25h |
| 564 | 1.289.1 | заявка врезки для отбора проб |  | 15min | 2026-08-21 09:00 A | 2026-08-21 09:15 A |  | 100% |  |  |  | start no earlier than 2026-08-21 09:00 | Зорькин В | 0.25h | 0.25h |
| 565 | 1.289.2 | контроль доставки |  | 15min | 2026-09-01 09:15 | 2026-09-01 09:30 | 564FS+7d |  |  | 135.28d | 2.94d | start no earlier than 2026-08-10 08:00 | Зорькин В | 0.25h |  |
| 566 | 1.289.3 | монтаж |  | 2h | 2026-09-07 09:00 | 2026-09-07 11:00 | 565FS+1d |  |  | 132.34d |  | start no earlier than 2026-09-07 09:00 | Тимофеев В | 2h |  |
| 567 | 1.289.4 | составить схему, расчет |  | 2h | 2026-03-13 09:00 A | 2026-03-13 11:00 A |  | 100% |  |  |  | start no earlier than 2026-03-13 09:00 | Домоводов К | 2h | 2h |
| 568 | 1.289.5 | монтаж вентиляторов |  | 4h | 2026-05-12 09:00 | 2026-05-12 13:00 |  |  |  | 216.09d |  | start no earlier than 2026-05-12 08:00 | оплот | 4h |  |
| 569 | 1.290 | **заменаить фитинги на жирах** |  | 44.12d | 2026-02-19 09:00 A | 2026-04-22 10:00 A |  | 100% |  |  |  |  |  | 81.5h | 81.5h |
| 570 | 1.290.1 | заявка |  | 30min | 2026-02-19 09:00 A | 2026-02-19 09:30 A |  | 100% |  |  |  | start no earlier than 2026-02-19 09:00 | Шуранов Ю | 0.5h | 0.5h |
| 571 | 1.290.2 | доставка |  | 10d | 2026-02-19 09:30 A | 2026-03-05 09:30 A | 570 | 100% |  |  |  |  | Карабанов | 80h | 80h |
| 572 | 1.290.3 | контроль поставки | milestone | 0d | 2026-03-12 08:00 A | 2026-03-12 08:00 A | 571 | 100% |  |  |  | start no earlier than 2026-03-12 08:00 | Шуранов Ю |  |  |
| 573 | 1.290.4 | контроль. Пришли опять не те | milestone | 0min | 2026-03-12 09:00 A | 2026-03-12 09:00 A | 571, 572 | 100% |  |  |  | start no earlier than 2026-03-12 09:00 | Зорькин В |  |  |
| 574 | 1.290.5 | контроль | milestone | 0d | 2026-04-01 09:00 A | 2026-04-01 09:00 A |  | 100% |  |  |  | start no earlier than 2026-04-01 09:00 | Зорькин В |  |  |
| 575 | 1.290.6 | замена |  | 1h | 2026-04-22 09:00 A | 2026-04-22 10:00 A | 573FS+2d | 100% |  |  |  | start no earlier than 2026-04-22 09:00 | Бобренок В | 1h | 1h |
| 576 | 1.291 | **жиротопка замена воздухоотводчиков** |  | 24.12d | 2026-03-04 09:00 A | 2026-04-07 10:00 A |  | 100% |  |  |  |  |  | 41.25h | 41.25h |
| 577 | 1.291.1 | заявка |  | 15min | 2026-03-04 09:00 A | 2026-03-04 09:15 A |  | 100% |  |  |  | start no earlier than 2026-03-04 09:00 | Зорькин В | 0.25h | 0.25h |
| 578 | 1.291.2 | доставка |  | 5d | 2026-03-04 09:15 A | 2026-03-11 09:15 A | 577 | 100% |  |  |  | start no earlier than 2026-02-27 08:00 | Карабанов | 40h | 40h |
| 579 | 1.291.3 | замена |  | 1h | 2026-04-07 09:00 A | 2026-04-07 10:00 A | 578 | 100% |  |  |  | start no earlier than 2026-04-07 09:00 | Бундин В | 1h | 1h |
| 580 | 1.292 | **увеличить освещение в зоне квадропака** |  | 11.12d | 2026-03-04 09:00 A | 2026-03-19 10:00 A |  | 100% |  |  |  |  |  | 83.5h | 83.5h |
| 581 | 1.292.1 | составить список мматериал для монтажа |  | 30min | 2026-03-04 09:00 A | 2026-03-04 09:30 A |  | 100% |  |  |  | start no earlier than 2026-03-04 09:00 | Зорькин В; Шуранов Ю | 1h | 1h |
| 582 | 1.292.2 | заявка трос, светильники |  | 30min | 2026-03-04 09:30 A | 2026-03-04 10:00 A | 581 | 100% |  |  |  | start no earlier than 2026-02-27 08:00 | Шуранов Ю | 0.5h | 0.5h |
| 583 | 1.292.3 | доставка |  | 10d | 2026-03-05 10:00 A | 2026-03-19 10:00 A | 582FS+1d | 100% |  |  |  | start no earlier than 2026-02-27 08:00 | Карабанов | 80h | 80h |
| 584 | 1.292.4 | монтаж |  | 2h | 2026-03-06 09:00 A | 2026-03-06 11:00 A |  | 100% |  |  |  | start no earlier than 2026-03-06 09:00 | Бобренок В | 2h | 2h |
| 585 | 1.293 | **установить орг стекло/нерж на обратный ход ленты на раму конвейера** |  | 38.25d | 2026-03-03 09:00 A | 2026-04-24 11:00 A |  | 100% |  |  |  |  |  | 83.5h | 83.5h |
| 586 | 1.293.1 | заявка нерж |  | 30min | 2026-03-03 09:00 A | 2026-03-03 09:30 A |  | 100% |  |  |  | start no earlier than 2026-03-03 09:00 | Зорькин В | 0.5h | 0.5h |
| 587 | 1.293.2 | доставка |  | 10d | 2026-03-03 09:30 A | 2026-03-17 09:30 A | 586 | 100% |  |  |  | start no earlier than 2026-03-02 09:00 | Карабанов | 80h | 80h |
| 588 | 1.293.3 | подготовка материала в размер по аналогии 2 линии |  | 1h | 2026-04-15 09:00 A | 2026-04-15 10:00 A | 587 | 100% |  |  |  | start no earlier than 2026-04-15 09:00 | Бундин В | 1h | 1h |
| 589 | 1.293.4 | установка на остановке 1 линии (переустановить) |  | 2h | 2026-04-24 09:00 A | 2026-04-24 11:00 A |  | 100% |  |  |  | start no earlier than 2026-04-24 09:00 | Бобренок В | 2h | 2h |

| ID | WBS | Task | Duration | Start | Finish | Predecessors | Complete | Constraint | Resources | Work | Actual work |
| --- | --- | --- | --- | --- | --- | --- | --- | --- | --- | --- | --- |
| 590 | 1.294 | **установить роутер в зону экструдера для регистрации данных** | 2.12d | 2026-03-02 09:00 A | 2026-03-04 10:00 A |  | 100% |  |  | 10.17h | 10.17h |
| 591 | 1.294.1 | монтаж кабель / розетка, роутер | 4h | 2026-03-02 09:00 A | 2026-03-02 13:00 A |  | 100% | start no earlier than 2026-03-02 09:00 | Некрасов А; Труфанов А | 8h | 8h |
| 592 | 1.294.2 | Монтаж розетки для роутера | 1h | 2026-03-03 09:00 A | 2026-03-03 10:00 A |  | 100% | start no earlier than 2026-03-03 09:00 | Тимофеев В | 1h | 1h |
| 593 | 1.294.3 | Заявка Айтишнику на монтаж наконечников | 10min | 2026-03-03 09:00 A | 2026-03-03 09:10 A |  | 100% | start no earlier than 2026-03-03 09:00 | Зорькин В | 0.17h | 0.17h |
| 594 | 1.294.4 | Монтаж штекеров на кабель | 1h | 2026-03-04 09:00 A | 2026-03-04 10:00 A |  | 100% | start no earlier than 2026-03-04 09:00 | Коленкоров | 1h | 1h |
| 595 | 1.295 | **ремонт приточной вентиляции** | 47.25d | 2026-02-26 09:00 A | 2026-05-04 11:00 A |  | 100% |  |  | 334.5h | 334.5h |
| 596 | 1.295.1 | заявка калорифер | 30min | 2026-03-04 09:00 A | 2026-03-04 09:30 A |  | 100% | start no earlier than 2026-03-04 09:00 | Зорькин В | 0.5h | 0.5h |
| 597 | 1.295.2 | доставка | 10d | 2026-03-04 09:30 A | 2026-03-20 09:30 A | 596 | 100% |  | Карабанов | 80h | 80h |
| 598 | 1.295.3 | замена калорифер | 4h | 2026-03-11 09:00 A | 2026-03-11 13:00 A |  | 100% | start no earlier than 2026-03-11 09:00 | Некрасов А; Труфанов А | 8h | 8h |
| 599 | 1.295.4 | дать фото насоса | 20min | 2026-02-26 09:00 A | 2026-02-26 09:20 A |  | 100% | start no earlier than 2026-02-26 08:00 | Бундин В | 0.33h | 0.33h |
| 600 | 1.295.5 | заявка насос вода | 30min | 2026-03-02 09:30 A | 2026-03-02 10:00 A | 596, 599 | 100% | start no earlier than 2026-02-26 08:00 | Зорькин В | 0.5h | 0.5h |
| 601 | 1.295.6 | доставка | 10d | 2026-03-02 10:00 A | 2026-03-16 10:00 A | 600 | 100% | start no earlier than 2026-02-26 08:00 | Карабанов | 80h | 80h |
| 602 | 1.295.7 | контроль доставки насос и заслонка | 10min | 2026-03-24 09:00 A | 2026-03-24 09:10 A |  | 100% | start no earlier than 2026-03-24 08:00 | Зорькин В | 0.17h | 0.17h |
| 603 | 1.295.8 | замена насоса | 1h | 2026-03-25 09:10 A | 2026-03-25 10:10 A | 602FS+1d | 100% | start no earlier than 2026-03-24 09:00 | Труфанов А | 1h | 1h |
| 604 | 1.295.9 | заявка привод заслонки | 30min | 2026-03-04 09:00 A | 2026-03-04 09:30 A | 600 | 100% | start no earlier than 2026-03-04 09:00 | Зорькин В | 0.5h | 0.5h |
| 605 | 1.295.10 | доставка | 10d | 2026-03-04 09:30 A | 2026-03-18 09:30 A | 604 | 100% | start no earlier than 2026-02-26 08:00 | Карабанов | 80h | 80h |
| 606 | 1.295.11 | замена привода заслонки | 1h | 2026-05-04 09:00 A | 2026-05-04 10:00 A | 602FS+1d | 100% | start no earlier than 2026-05-04 09:00 | Бобренок В | 1h | 1h |
| 607 | 1.295.12 | заявка фильтры на приточная вентиляция | 30min | 2026-03-04 09:00 A | 2026-03-04 09:30 A |  | 100% | start no earlier than 2026-03-04 09:00 | Зорькин В | 0.5h | 0.5h |
| 608 | 1.295.13 | доставка | 10d | 2026-03-04 09:30 A | 2026-03-18 09:30 A | 607 | 100% | start no earlier than 2026-02-27 08:00 | Карабанов | 80h | 80h |
| 609 | 1.295.14 | замена | 2h | 2026-05-04 09:00 A | 2026-05-04 11:00 A | 608 | 100% | start no earlier than 2026-05-04 09:00 | Некрасов А | 2h | 2h |
| 610 | 1.296 | **монтаж регистратор данных линия 1 и 2:** | 1.12d | 2026-02-24 09:00 A | 2026-02-25 10:00 A |  | 100% |  |  | 5h | 5h |
| 611 | 1.296.1 | установить розетку и автомат для для блока питания в ШУ экструдера, без подключения | 2h | 2026-02-24 09:00 A | 2026-02-24 11:00 A |  | 100% | start no earlier than 2026-02-24 09:00 | Дедов В | 2h | 2h |
| 612 | 1.296.2 | монтаж безподключения кабель RS485 по аналогии с линия 3 - только часотный привод. На складе. | 1h | 2026-02-24 09:00 A | 2026-02-24 10:00 A |  | 100% | start no earlier than 2026-02-24 09:00 | Дедов В | 1h | 1h |
| 613 | 1.296.3 | подключение розеток для блока питания в ШУ | 1h | 2026-02-25 09:00 A | 2026-02-25 10:00 A |  | 100% | start no earlier than 2026-02-25 09:00 | Некрасов А | 1h | 1h |
| 614 | 1.296.4 | монтаж пультов управления и индикации регистратор, по аналогии с линия 3 | 1h | 2026-02-25 09:00 A | 2026-02-25 10:00 A |  | 100% | start no earlier than 2026-02-25 09:00 | Некрасов А | 1h | 1h |
| 615 | 1.297 | заменить пластик втулку на металл деталь уплотнение вала прекондицинера 2 линия | 1d? | 2025-09-08 09:00 A | 2025-09-08 18:00 A |  | 100% | start no earlier than 2025-09-08 09:00 |  |  |  |

| ID | WBS | Task | Duration | Start | Finish | Predecessors | Complete | Actual finish | Total slack | Constraint | Resources | Work | Actual work |
| --- | --- | --- | --- | --- | --- | --- | --- | --- | --- | --- | --- | --- | --- |
| 616 | 1.298 | **баки жир 2 линия устноавить наконечники. От 23.05.25** | 265.25d | 2025-04-16 09:00 A | 2026-04-22 11:00 A |  | 100% |  |  |  |  | 42.5h | 42.5h |
| 617 | 1.298.1 | заявка на наконечнки | 30min | 2025-04-16 09:00 A | 2025-04-16 09:30 A |  | 100% |  |  | start no earlier than 2025-04-16 09:00 | Зорькин В | 0.5h | 0.5h |
| 618 | 1.298.2 | доставка | 5d | 2025-04-16 09:30 A | 2025-04-23 09:30 A | 617 | 100% |  |  | start no earlier than 2025-04-14 09:00 | Мультан | 40h | 40h |
| 619 | 1.298.3 | ТО каблей, клемников | 2h | 2026-04-22 09:00 A | 2026-04-22 11:00 A | 618 | 100% |  |  | start no earlier than 2026-04-22 09:00 | Труфанов А | 2h | 2h |
| 620 | 1.299 | **установить фильтры на жир** | 89.12d? | 2025-05-14 09:00 A | 2025-09-16 10:00 A |  | 100% |  |  |  |  | 50h | 50h |
| 621 | 1.299.1 | изготовить переходники токарь разместить | 1h | 2025-09-08 09:00 A | 2025-09-08 10:00 A |  | 100% |  |  | start no earlier than 2025-09-08 09:00 | Зорькин В | 1h | 1h |
| 622 | 1.299.2 | контроль доставки | 5d | 2025-09-08 10:00 A | 2025-09-15 10:00 A | 621 | 100% |  |  | start no earlier than 2025-09-08 09:00 | Зорькин В | 40h | 40h |
| 623 | 1.299.3 | замена | 1d? | 2025-09-15 10:00 A | 2025-09-16 10:00 A | 622 | 100% |  |  | start no earlier than 2025-09-08 09:00 | Тимофеев В | 8h | 8h |
| 624 | 1.299.4 | установить фильтры на жир 2шт через краны на тройник | 1h | 2025-05-14 09:00 A | 2025-05-14 10:00 A |  | 100% |  |  | start no earlier than 2025-05-14 09:00 | Тимофеев В | 1h | 1h |
| 625 | 1.300 | **палетные ворота подача навесок + подача жир** | 14d? | 2025-07-17 09:00 A | 2025-08-05 18:00 A |  | 100% |  |  |  |  | 32h | 32h |
| 626 | 1.300.1 | подготовить чертеж | 1d? | 2025-07-17 09:00 A | 2025-07-17 18:00 A |  | 100% |  |  | start no earlier than 2025-07-17 09:00 | Зорькин В | 8h | 8h |
| 627 | 1.300.2 | сборка рамы | 2d | 2025-07-25 09:00 A | 2025-07-28 18:00 A | 626 | 100% |  |  | start no earlier than 2025-07-25 09:00 | Некрасов А | 16h | 16h |
| 628 | 1.300.3 | монтаж | 1d? | 2025-08-05 09:00 A | 2025-08-05 18:00 A | 627 | 100% |  |  | start no earlier than 2025-08-05 09:00 | Некрасов А | 8h | 8h |
| 629 | 1.301 | защита подшипников паронтом + подготовка | 4h | 2025-06-18 09:00 A | 2025-06-18 13:00 A |  | 100% |  |  | start no earlier than 2025-06-18 09:00 | Тимофеев В | 4h | 4h |
| 630 | 1.302 | **квадропак ТО + составить карту смазки и ТО + составить список ЗИП** | 0.5d | 2025-04-02 09:00 A | 2025-04-02 13:00 A |  | 100% |  |  |  |  | 4h | 4h |
| 631 | 1.302.1 | оформить карту ТО | 4h | 2025-04-02 09:00 A | 2025-04-02 13:00 A |  | 100% |  |  | start no earlier than 2025-04-02 09:00 | Зорькин В | 4h | 4h |
| 632 | 1.303 | **квадропак некрасивый шов - золотинка** | 104.25d | 2025-01-13 09:00 A | 2025-06-06 11:00 |  | 100% | 2025-04-17 16:30 |  |  |  | 8h | 8h |
| 633 | 1.303.1 | **изготовление термоножа с вставкойвставкой** | 0.12d | 2025-01-13 09:00 A | 2025-01-13 10:00 A |  | 100% |  |  |  |  | 1h | 1h |
| 634 | 1.303.1.1 | чертеж | 1h | 2025-01-13 09:00 A | 2025-01-13 10:00 A |  | 100% |  |  | start no earlier than 2025-01-13 09:00 | Зорькин В | 1h | 1h |
| 635 | 1.303.2 | **установка тефлона на термонож** | 42.25d | 2025-04-17 09:00 A | 2025-06-06 11:00 |  | 100% | 2025-04-17 16:30 |  |  |  | 7h | 7h |
| 636 | 1.303.2.1 | разработать метод крепления | 30min | 2025-04-17 09:00 A | 2025-04-17 09:30 A |  | 100% |  |  | start no earlier than 2025-04-17 09:00 | Зорькин В; Шуранов Ю | 1h | 1h |
| 637 | 1.303.2.2 | чертеж | 4h | 2025-04-17 09:30 A | 2025-04-17 14:30 A | 636 | 100% |  |  | start no earlier than 2025-01-17 09:00 | Зорькин В | 4h | 4h |
| 638 | 1.303.2.3 | орг изготовление деталей | 2h | 2025-04-17 14:30 A | 2025-04-17 16:30 A | 637 | 100% |  |  | start no earlier than 2025-04-16 09:00 | Шуранов Ю | 2h | 2h |
| 639 | 1.304 | **режет кабель ЛУКАС силовой в лотке эстакада у КПП** | 444.5d | 2024-08-02 09:00 | 2026-04-16 13:00 |  |  |  | 234.09d |  |  | 4.5h |  |
| 640 | 1.304.1 | решение о переговорах ГП | 30min | 2024-08-02 09:00 | 2024-08-02 09:30 |  |  |  | 678.53d | start no earlier than 2024-08-02 09:00 | Домоводов К | 0.5h |  |
| 641 | 1.304.2 | перекладка кабель | 4h | 2026-04-16 09:00 | 2026-04-16 13:00 |  |  |  | 234.09d | start no earlier than 2026-04-16 08:00 | Олег | 4h |  |

| ID | WBS | Task | Duration | Start | Finish | Predecessors | Complete | Total slack | Constraint | Resources | Work | Actual work |
| --- | --- | --- | --- | --- | --- | --- | --- | --- | --- | --- | --- | --- |
| 642 | 1.305 | **ШР2.2 замена автомат на циклон на номинальный** | 5.06d | 2026-04-10 09:00 A | 2026-04-17 09:30 A |  | 100% |  |  |  | 41.5h | 41.5h |
| 643 | 1.305.1 | прорверить какой стоит / заявка по мощности мотора | 30min | 2026-04-10 09:00 A | 2026-04-10 09:30 A |  | 100% |  | start no earlier than 2026-04-10 09:00 | Тимофеев В | 0.5h | 0.5h |
| 644 | 1.305.2 | достьавка | 5d | 2026-04-10 09:30 A | 2026-04-17 09:30 A | 643 | 100% |  | start no earlier than 2024-03-04 09:00 | Малинина М | 40h | 40h |
| 645 | 1.305.3 | замена | 1h | 2026-04-16 09:30 A | 2026-04-16 10:30 A | 644 | 100% |  | start no earlier than 2026-04-06 09:00 | Шуранов Ю | 1h | 1h |
| 646 | 1.306 | **кронштейн фотометки ТЕКО усилить** | 10.12d | 2024-09-11 09:00 A | 2024-09-25 10:00 A |  | 100% |  |  |  | 82h | 82h |
| 647 | 1.306.1 | поиск заявка кронштейна для датчика с регулировкой в3 плоскостях | 1h | 2024-09-11 09:00 A | 2024-09-11 10:00 A |  | 100% |  | start no earlier than 2024-09-11 09:00 | Зорькин В | 1h | 1h |
| 648 | 1.306.2 | доставка | 10d | 2024-09-11 10:00 A | 2024-09-25 10:00 A | 647 | 100% |  | start no earlier than 2024-09-11 09:00 | Мультан | 80h | 80h |
| 649 | 1.306.3 | замена | 1h | 2024-09-21 10:00 A | 2024-09-23 10:00 A | 648 | 100% |  | start no earlier than 2024-09-11 09:00 | Тимофеев В | 1h | 1h |
| 650 | 1.307 | **квадропак греет пневмоцилиндр термоножа** | 14.5d | 2024-09-12 09:00 A | 2024-10-02 13:00 A |  | 100% |  |  |  | 85h | 85h |
| 651 | 1.307.1 | решение о применении теплоизоляц пластины / заявка | 1h | 2024-09-12 09:00 A | 2024-09-12 10:00 A |  | 100% |  | start no earlier than 2024-09-12 09:00 | Зорькин В | 1h | 1h |
| 652 | 1.307.2 | доставка | 10d | 2024-09-12 10:00 A | 2024-09-26 10:00 A | 651 | 100% |  | start no earlier than 2024-09-11 09:00 | Мультан | 80h | 80h |
| 653 | 1.307.3 | замена | 4h | 2024-10-02 09:00 A | 2024-10-02 13:00 A | 652 | 100% |  | start no earlier than 2024-10-02 09:00 | Тимофеев В | 4h | 4h |
| 654 | 1.308 | **ремонт комппрессора - сдать по гарантии** | 739.12d | 2023-10-31 09:00 A | 2026-08-31 10:00 A |  | 100% |  |  |  | 2h | 2h |
| 655 | 1.308.1 | контроль снабжения - отправитьт поставщику | 1h | 2023-10-31 09:00 A | 2023-10-31 10:00 A |  | 100% |  | start no earlier than 2023-10-31 09:00 | Лобанов И | 1h | 1h |
| 656 | 1.308.2 | контроль возврата | 1h | 2026-08-31 09:00 A | 2026-08-31 10:00 A | 655 | 100% |  | start no earlier than 2026-08-31 09:00 | Зорькин В | 1h | 1h |
| 657 | 1.309 | **убрать кабеля с пола на упаковке 1 цех** | 0.02d | 2026-09-01 09:00 | 2026-09-01 09:10 |  |  | 136.57d |  |  | 0.17h |  |
| 658 | 1.309.1 | проверить на актуальность | 10min | 2026-09-01 09:00 | 2026-09-01 09:10 |  |  | 136.57d | start no earlier than 2026-09-01 09:00 | Зорькин В | 0.17h |  |
| 659 | 1.310 | режет металлом изоляцию кабеля в прорходе стены в 1 цех угол комппрессора - обезвредить | 1h | 2023-12-28 09:00 A | 2023-12-28 10:00 A |  | 100% |  | start no earlier than 2023-12-28 09:00 | Бобренок В; Дедов В | 2h | 2h |
| 660 | 1.311 | **убрать кабеля с пола и заменить переноски штатными розетками - участок жира 1 цех** | 0.01d | 2026-09-01 09:00 | 2026-09-01 09:05 |  |  | 136.58d |  |  | 0.08h |  |
| 661 | 1.311.1 | проверить на актуальность | 5min | 2026-09-01 09:00 | 2026-09-01 09:05 |  |  | 136.58d | start no earlier than 2026-09-01 09:00 | Зорькин В | 0.08h |  |
| 662 | 1.312 | изготовить ключь для ТП | 2h | 2023-06-21 09:00 A | 2023-06-21 11:00 A |  | 100% |  | start no earlier than 2023-06-21 09:00 | Домоводов К | 2h | 2h |
| 663 | 1.313 | заменитьт автомат 63С кондиционер 1 цех | 1h | 2023-06-22 09:00 A | 2023-06-22 10:00 A |  | 100% |  | start no earlier than 2023-06-22 09:00 | Тимофеев В | 1h | 1h |
| 664 | 1.314 | **Барабаны 2 линия дражжировка** | 18d | 2026-04-21 09:00 A | 2026-05-14 18:00 A |  | 100% |  |  |  | 94.5h | 94.5h |
| 665 | 1.314.1 | Проработать модернизацию форсунок | 3h | 2026-04-22 09:00 A | 2026-04-22 12:00 A |  | 100% |  | start no earlier than 2026-04-22 09:00 | Зорькин В; Домоводов К | 6h | 6h |
| 666 | 1.314.2 | сделать заявку на доп форсунки, расходники | 30min | 2026-04-22 09:00 A | 2026-04-22 09:30 A |  | 100% |  | start no earlier than 2026-04-22 09:00 | Зорькин В | 0.5h | 0.5h |
| 667 | 1.314.3 | доставка | 10d | 2026-04-30 09:00 A | 2026-05-14 18:00 A |  | 100% |  | start no earlier than 2026-04-30 09:00 | Карабанов | 80h | 80h |
| 668 | 1.314.4 | Внедрение и монтаж | 2h | 2026-05-08 09:00 A | 2026-05-08 11:00 A |  | 100% |  | start no earlier than 2026-05-08 09:00 | Зорькин В; Тимофеев В | 4h | 4h |

| ID | WBS | Task | Type | Duration | Start | Finish | Predecessors | Complete | Remaining | Actual start | Actual finish | Total slack | Constraint | Resources | Work | Actual work |
| --- | --- | --- | --- | --- | --- | --- | --- | --- | --- | --- | --- | --- | --- | --- | --- | --- |
| 669 | 1.314.5 | **Парогенератор** |  | 0.25d | 2026-04-21 09:00 A | 2026-04-21 11:00 A |  | 100% |  |  |  |  |  |  | 4h | 4h |
| 670 | 1.314.5.1 | Проверить термадатчик (панельтемпературы) TC4R на корректность работы, скачет температура, по необходимости заменить |  | 2h | 2026-04-21 09:00 A | 2026-04-21 11:00 A |  | 100% |  |  |  |  | start no earlier than 2026-04-21 08:00 | Бундин В; Зорькин В | 4h | 4h |
| 671 | 1.315 | **Звонок на экструдер** |  | 14.12d | 2026-04-07 09:00 A | 2026-04-27 10:00 A |  | 100% |  |  |  |  |  |  | 6h | 6h |
| 672 | 1.315.1 | Протяжка кабеля от ворот к экструдерщикам |  | 4h | 2026-04-07 09:00 A | 2026-04-07 13:00 A |  | 100% |  |  |  |  | start no earlier than 2026-04-22 09:00 | Дедов В | 4h | 4h |
| 673 | 1.315.2 | монтаж звонка |  | 1h | 2026-04-25 09:00 A | 2026-04-27 10:00 A | 672 | 100% |  |  |  |  | start no earlier than 2026-04-25 09:00 | Дедов В | 1h | 1h |
| 674 | 1.315.3 | монтаж кнопки за воротами |  | 1h | 2026-04-25 10:00 A | 2026-04-27 10:00 A | 673 | 100% |  |  |  |  | start no earlier than 2026-04-21 08:00 | Дедов В | 1h | 1h |
| 675 | 1.316 | **Насос гидролизата** |  | 19.01d | 2026-08-04 09:00 A | 2026-08-31 09:05 |  | 80% | 3.8d |  |  | 137.58d |  |  | 0.42h | 0.33h |
| 676 | 1.316.1 | Заказать ремкомплект шнек, резинка, трубка, связаться с производителем |  | 20min | 2026-08-04 09:00 A | 2026-08-04 09:20 A |  | 100% |  |  |  |  | start no earlier than 2026-08-04 09:00 | Зорькин В | 0.33h | 0.33h |
| 677 | 1.316.2 | Доставка контроль сам насос шетсрен |  | 5min | 2026-08-31 09:00 | 2026-08-31 09:05 |  |  |  |  |  | 137.58d | start no earlier than 2026-08-31 09:00 | Зорькин В | 0.08h |  |
| 678 | 1.317 | **Дражжировка конвейер №1 после печки** |  | 100.12d | 2026-04-22 08:00 A | 2026-09-09 10:00 |  | 77% | 22.96d |  |  | 130.47d |  |  | 13.08h | 10.08h |
| 679 | 1.317.1 | Поставить резьбовые клепки на боковой кожух, где кончается лента |  | 1h | 2026-09-09 09:00 | 2026-09-09 10:00 |  |  |  |  |  | 130.47d | start no earlier than 2026-09-09 09:00 | Тимофеев В | 1h |  |
| 680 | 1.317.2 | Ремонт насоса от 2 линии 1 цех, статор взять на складе |  | 2h | 2026-09-04 09:00 | 2026-09-04 11:00 |  |  |  |  |  | 133.34d | start no earlier than 2026-09-04 09:00 | Тимофеев В | 2h |  |
| 681 | 1.317.3 | контроль героторная пара оплата |  | 5min | 2026-08-21 09:00 A | 2026-08-21 09:05 A |  | 100% |  |  |  |  | start no earlier than 2026-08-21 09:00 | Зорькин В | 0.08h | 0.08h |
| 682 | 1.317.4 | Замена сальника на поворотном столе/проверить |  | 1h | 2026-07-23 09:00 A | 2026-07-23 10:00 A |  | 100% |  |  |  |  | start no earlier than 2026-07-23 08:00 | Бундин В | 1h | 1h |
| 683 | 1.317.5 | **дражжировка** |  | 0.62d | 2026-04-22 08:00 A | 2026-04-22 15:00 A |  | 100% |  |  |  |  |  |  | 9h | 9h |
| 684 | 1.317.5.1 | Установка рамы для фильтров |  | 3h | 2026-04-22 08:00 A | 2026-04-22 12:00 A |  | 100% |  |  |  |  | start no earlier than 2026-04-22 08:00 | Тимофеев В | 3h | 3h |
| 685 | 1.317.5.2 | установка счетчика |  | 1h | 2026-04-22 11:00 A | 2026-04-22 12:00 A | 684 | 100% |  |  |  |  | start no earlier than 2026-04-22 08:00 | Тимофеев В | 1h | 1h |
| 686 | 1.317.5.3 | кронштейн под пульт расходомера |  | 2h | 2026-04-22 12:00 A | 2026-04-22 15:00 A | 685 | 100% |  |  |  |  | start no earlier than 2026-04-22 08:00 | Тимофеев В | 2h | 2h |
| 687 | 1.317.5.4 | **Парогенератор** |  | 0.38d | 2026-04-22 09:00 A | 2026-04-22 12:00 A |  | 100% |  |  |  |  |  |  | 3h | 3h |
| 688 | 1.317.5.4.1 | чистка парогенераторов 1 и 2 линия |  | 3h | 2026-04-22 09:00 A | 2026-04-22 12:00 A |  | 100% |  |  |  |  | start no earlier than 2026-04-22 08:00 | Бундин В | 3h | 3h |
| 689 | 1.318 | **отмена** |  | 70.75d | 2026-04-22 09:00 | 2026-07-29 16:00 A |  | 100% |  | 2026-07-08 09:00 |  |  |  |  | 12.33h | 12.33h |
| 690 | 1.318.1 | **Парогенератор** |  | 27.5d? | 2026-04-22 09:00 | 2026-05-25 13:00 |  | 100% |  | 2026-07-08 09:00 | 2026-07-29 16:00 |  |  |  | 12.33h | 12.33h |
| 691 | 1.318.1.1 | Замена говротрубы 1 линия |  | 1h | 2026-07-08 09:00 A | 2026-07-08 10:00 A |  | 100% |  |  |  |  | start no earlier than 2026-07-08 09:00 | Бобренок В | 1h | 1h |
| 692 | 1.318.1.2 | Осмотр стоек где стоит реле давления до расширительного бачка |  | 30min | 2026-07-27 09:00 A | 2026-07-27 09:30 A |  | 100% |  |  |  |  | start no earlier than 2026-07-27 09:00 | Тимофеев В | 0.5h | 0.5h |
| 693 | 1.318.1.3 | Составить список материала для ремонта и изготовления стоек |  | 30min | 2026-07-27 09:30 A | 2026-07-27 10:00 A | 692 | 100% |  |  |  |  | start no earlier than 2026-05-27 09:00 | Тимофеев В | 0.5h | 0.5h |
| 694 | 1.318.1.4 | Заказать недостающий материал |  | 20min | 2026-07-27 09:00 A | 2026-07-27 09:20 A |  | 100% |  |  |  |  | start no earlier than 2026-07-27 09:00 | Зорькин В | 0.33h | 0.33h |
| 695 | 1.318.1.5 | Изготовление стоек |  | 3h | 2026-07-29 09:00 A | 2026-07-29 12:00 A | 693 | 100% |  |  |  |  | start no earlier than 2026-07-29 09:00 | Некрасов А | 3h | 3h |
| 696 | 1.318.1.6 | Замена стойки под реле давления |  | 3h | 2026-07-29 12:00 A | 2026-07-29 16:00 A | 695 | 100% |  |  |  |  | start no earlier than 2026-05-27 09:00 | Некрасов А | 3h | 3h |
| 697 | 1.318.1.7 | Составить список материалов или заключение по 2-м частотникам из 1 цеха от теко 0,4 (поворотный стол и конвейер) |  | 1h | 2026-07-27 08:00 A | 2026-07-27 10:00 A |  | 100% |  |  |  |  | start no earlier than 2026-07-27 08:00 | Дедов В | 1h | 1h |
| 698 | 1.318.1.8 | Взять трубку в нашем кабинете и насверлить по всей длине симметрично отверстия самым маленьким сверлом которое у нас есть (по этому заданию позвонить) |  | 3h | 2026-07-28 08:00 A | 2026-07-28 12:00 A |  | 100% |  |  |  |  | start no earlier than 2026-07-28 08:00 | Макаревич А | 3h | 3h |
| 699 | 1.319 | Демонтаж разборка/сборка редукторы шлюз. Питателей циклона 1 и 2 линия | manual | 3h | 2026-04-24 09:00 A | 2026-04-24 12:00 A |  | 100% |  |  |  |  | start no earlier than 2026-04-24 09:00 | Бундин В | 3h | 3h |

| ID | WBS | Task | Type | Duration | Start | Finish | Predecessors | Complete | Remaining | Actual start | Total slack | Constraint | Resources | Work | Actual work |
| --- | --- | --- | --- | --- | --- | --- | --- | --- | --- | --- | --- | --- | --- | --- | --- |
| 700 | 1.320 | **Теко 0,4** |  | 0.38d | 2026-04-03 09:00 A | 2026-04-03 12:00 A |  | 100% |  |  |  |  |  | 3h | 3h |
| 701 | 1.320.1 | замена ковшей | manual | 3h | 2026-04-03 09:00 A | 2026-04-03 12:00 A |  | 100% |  |  |  | start no earlier than 2026-04-03 09:00 | Макаревич А | 3h | 3h |
| 702 | 2 | **2 цех** |  | 249d? | 2023-11-16 09:00 | 2024-10-29 18:00 |  | 87% | 32.13d? | 2024-01-08 09:00 |  |  |  | 2837.25h | 2466.67h |
| 703 | 2.1 | Смазка подшипников привода охладителя | manual | 1h | 2026-09-10 09:00 | 2026-09-10 10:00 |  |  |  |  |  |  | Бобренок В | 1h |  |
| 704 | 2.2 | Обрезать пенку пвх на двери в охладителе ,сделать ее ровной |  | 1h | 2026-09-07 09:00 A | 2026-09-07 10:00 A |  | 100% |  |  |  | start no earlier than 2026-09-05 09:00 | Макаревич А | 1h | 1h |
| 705 | 2.3 | Переборка парогенератора, поиск неисправности (подключили перемычку между реле времени) |  | 4h | 2026-09-02 09:00 A | 2026-09-02 13:00 A |  | 100% |  |  |  | start no earlier than 2026-09-02 09:00 | Бобренок В | 4h | 4h |
| 706 | 2.4 | **Дражжировка** |  | 5.12d | 2026-09-03 09:00 A | 2026-09-10 10:00 |  | 14% | 4.39d |  | 129.47d |  |  | 2.17h | 0.17h |
| 707 | 2.4.1 | **Подготовить электрическую часть для подключения второго насоса без частотника (продолжаем эту задачу)** |  | 0.12d | 2026-09-10 09:00 | 2026-09-10 10:00 |  |  |  |  | 129.47d |  | Тимофеев В | 2h |  |
| 708 | 2.4.1.1 | установить на линию доп насос (резервный) |  | 1h | 2026-09-10 09:00 | 2026-09-10 10:00 |  |  |  |  | 129.47d | start no earlier than 2026-09-10 09:00 | Тимофеев В | 1h |  |
| 709 | 2.4.2 | Подумать место установки автомата |  | 10min | 2026-09-03 09:00 A | 2026-09-03 09:10 A |  | 100% |  |  |  | start no earlier than 2026-09-03 09:00 | Тимофеев В | 0.17h | 0.17h |
| 710 | 2.5 | ТО редуктора печи 2 цех, лежит в слесарке |  | 2h | 2026-09-07 09:00 | 2026-09-07 11:00 |  |  |  |  | 132.34d | start no earlier than 2026-09-05 09:00 | Макаревич А | 2h |  |
| 711 | 2.6 | Ремонт парогенератора, замена реле давления + отвалился контакт + замена мембраны |  | 1h | 2026-09-02 09:00 A | 2026-09-02 10:00 A |  | 100% |  |  |  | start no earlier than 2026-09-02 08:00 | Труфанов А | 1h | 1h |
| 712 | 2.7 | Замена редуктора на печи |  | 2h | 2026-09-01 09:00 A | 2026-09-01 11:00 A |  | 100% |  |  |  | start no earlier than 2026-09-01 09:00 | Бундин В | 2h | 2h |
| 713 | 2.8 | проверка котлов на приточку (замена клапана и тена на большую мощность) | manual | 2h | 2026-09-07 09:00 | 2026-09-07 11:00 |  |  |  |  |  | start no earlier than 2026-09-07 09:00 | Дедов В | 2h |  |
| 714 | 2.9 | проверка всех котлов на отопление по цеху | manual | 4h | 2026-08-30 09:00 A | 2026-08-30 13:00 A |  | 100% |  |  |  | start no earlier than 2026-08-30 09:00 | Дедов В | 4h | 4h |
| 715 | 2.10 | закрепить коробку двери снизу (возле ШУ приточка 2 этаж) |  | 2h | 2026-08-28 09:00 A | 2026-08-28 11:00 A |  | 100% |  |  |  | start no earlier than 2026-08-28 09:00 | Макаревич А | 2h | 2h |
| 716 | 2.11 | **заменить фильтры на воду в цехе (проверить мембрану на гидроаккумуляторе)** |  | 1d? | 2026-08-28 09:00 A | 2026-08-28 18:00 A |  | 100% |  |  |  |  | Бобренок В | 16h | 16h |
| 717 | 2.11.1 | заказать фильтры |  | 1d? | 2026-08-28 09:00 A | 2026-08-28 18:00 A |  | 100% |  |  |  | start no earlier than 2026-08-28 09:00 | Шуранов Ю | 8h | 8h |
| 718 | 2.12 | монтаж и подключение розетки для кондиционера в кабинет ОТК |  | 2h | 2026-08-26 08:00 A | 2026-08-26 11:00 A |  | 100% |  |  |  | start no earlier than 2026-08-26 08:00 | Бобренок В | 2h | 2h |
| 719 | 2.13 | сливной шланг от кондиционеров наш кабинет и Шелепова спрятать в кабель канал 30х25 (он на складе) |  | 2h | 2026-08-26 08:00 A | 2026-08-26 11:00 A |  | 100% |  |  |  | start no earlier than 2026-08-26 08:00 | Бобренок В | 2h | 2h |
| 720 | 2.14 | сливной шланг от кондиционеров кабинет Сапелина спрятать в кабель канал 30х25 (он на складе) с 10 до 11ч |  | 1h | 2026-08-31 09:00 A | 2026-08-31 10:00 A |  | 100% |  |  |  | start no earlier than 2026-08-31 09:00 | Тимофеев В | 1h | 1h |
| 721 | 2.15 | замерить токи на оборудование (таблица в слесарке) |  | 3h | 2026-08-27 09:00 A | 2026-08-27 12:00 A |  | 100% |  |  |  | start no earlier than 2026-08-27 09:00 | Бобренок В | 3h | 3h |
| 722 | 2.16 | **дренаж кондиционеров жир и упаковка установить отдельный насос от жиров** |  | 23.06d | 2026-08-24 09:00 A | 2026-09-24 09:30 A |  | 100% |  |  |  |  |  | 122.5h | 122.5h |
| 723 | 2.16.1 | заявка насос |  | 30min | 2026-08-24 09:00 A | 2026-08-24 09:30 A |  | 100% |  |  |  | start no earlier than 2026-08-24 09:00 | Шуранов Ю | 0.5h | 0.5h |
| 724 | 2.16.2 | контроль доставка |  | 15d | 2026-09-02 09:30 A | 2026-09-24 09:30 A | 723FS+7d | 100% |  |  |  | start no earlier than 2026-08-20 09:00 | Зорькин В | 120h | 120h |
| 725 | 2.16.3 | Разорвать контур от насоса и сделать слив в раковину | manual | 1h | 2026-09-01 09:00 A | 2026-09-01 10:00 A | 724FS+1d | 100% |  |  |  | start no earlier than 2026-09-01 09:00 | Некрасов А; Тимофеев В | 2h | 2h |

| ID | WBS | Task | Type | Duration | Start | Finish | Predecessors | Complete | Remaining | Total slack | Free slack | Constraint | Resources | Work | Actual work |
| --- | --- | --- | --- | --- | --- | --- | --- | --- | --- | --- | --- | --- | --- | --- | --- |
| 726 | 2.17 | **бетонирование крыльцо вход в 2ц** |  | 0.02d | 2026-08-31 09:00 | 2026-08-31 09:10 |  |  |  | 137.57d |  |  |  | 0.17h |  |
| 727 | 2.17.1 | заявка Олегу |  | 10min | 2026-08-31 09:00 | 2026-08-31 09:10 |  |  |  | 137.57d |  | start no earlier than 2026-08-31 09:00 | Шуранов Ю | 0.17h |  |
| 728 | 2.18 | течь кондиционер жиры - контроль работы слива |  | 30min | 2026-08-31 09:00 A | 2026-08-31 09:30 A |  | 100% |  |  |  | start no earlier than 2026-08-31 09:00 | Тимофеев В | 0.5h | 0.5h |
| 729 | 2.19 | контроль замена фитинги или трубки жир, устранить возможность произвольного срыва |  | 30min | 2026-09-01 09:00 A | 2026-09-01 09:30 A |  | 100% |  |  |  | start no earlier than 2026-09-03 09:00 | Некрасов А; Шуранов Ю | 1h | 1h |
| 730 | 2.20 | **разгрузка синего накопителя, в реверс шнек + окно** |  | 5.12d | 2026-08-20 09:00 A | 2026-08-27 10:00 A |  | 100% |  |  |  |  |  | 4h | 4h |
| 731 | 2.20.1 | выполнить люк в шнеке: вырезать окно, крепеж на шарнир + притвор с уплотнением + застежка | milestone | 0h | 2026-08-20 09:00 A | 2026-08-20 09:00 A |  | 100% |  |  |  | start no earlier than 2026-08-20 09:00 | Некрасов А; Тимофеев В |  |  |
| 732 | 2.20.2 | быстросъемное крепление |  | 1h | 2026-08-27 09:00 A | 2026-08-27 10:00 A |  | 100% |  |  |  | start no earlier than 2026-08-27 09:00 | Тимофеев В | 1h | 1h |
| 733 | 2.20.3 | изготовление фланца + труба для крепления гофротрубы ф250 |  | 3h | 2026-08-24 09:00 A | 2026-08-24 12:00 A |  | 100% |  |  |  | start no earlier than 2026-08-24 09:00 | Некрасов А | 3h | 3h |
| 734 | 2.21 | перенос розетка на стену инсекютер корридор у ОТК |  | 1h | 2026-08-15 09:00 A | 2026-08-17 10:00 A |  | 100% |  |  |  | start no earlier than 2026-08-15 09:00 | Бундин В | 1h | 1h |
| 735 | 2.22 | перенос инсекютер ниже на фасовке, для возможности доступа операторами |  | 1h | 2026-09-04 09:00 | 2026-09-04 10:00 |  |  |  | 133.47d |  | start no earlier than 2026-09-04 09:00 | Бундин В | 1h |  |
| 736 | 2.23 | изготовить лопатку для датчика сырья, что бы было 2-4 лопасти и ниже на 5-10см |  | 2h | 2026-08-13 09:00 A | 2026-08-13 11:00 A |  | 100% |  |  |  | start no earlier than 2026-08-13 09:00 | Макаревич А | 2h | 2h |
| 737 | 2.24 | прикрепить план увакуации на место (зона отстоя навесок, стенка мойки) |  | 30min | 2026-08-12 09:00 A | 2026-08-12 09:30 A |  | 100% |  |  |  | start no earlier than 2026-08-12 09:00 | Макаревич А | 0.5h | 0.5h |
| 738 | 2.25 | ремонт ручка в экструдер 2ц |  | 1h | 2026-08-14 09:00 A | 2026-08-14 10:00 A |  | 100% |  |  |  | start no earlier than 2026-08-14 09:00 | Труфанов А | 1h | 1h |
| 739 | 2.26 | **установить сифон ф110 в линию слива жиров** |  | 18.25d | 2026-08-12 09:00 A | 2026-09-07 11:00 |  | 31% | 12.63d | 132.34d |  |  |  | 3.25h | 1h |
| 740 | 2.26.1 | заявка на сифон, планирование монтаж |  | 1h | 2026-08-12 09:00 A | 2026-08-12 10:00 A |  | 100% |  |  |  | start no earlier than 2026-08-12 09:00 | Зорькин В | 1h | 1h |
| 741 | 2.26.2 | контроль доставка |  | 15min | 2026-08-31 09:00 | 2026-08-31 09:15 | 740FS+7d |  |  | 137.31d | 4.97d | start no earlier than 2026-08-31 09:00 | Зорькин В | 0.25h |  |
| 742 | 2.26.3 | монтаж |  | 2h | 2026-09-07 09:00 | 2026-09-07 11:00 | 741 |  |  | 132.34d |  | start no earlier than 2026-09-07 09:00 | Бобренок В | 2h |  |
| 743 | 2.27 | **установить инсекютер дополнительный на экструдер** |  | 11.38d | 2026-08-21 09:00 A | 2026-09-07 12:00 |  | 7% | 10.56d | 132.22d |  |  |  | 3.5h | 0.25h |
| 744 | 2.27.1 | заявка инстекютер |  | 15min | 2026-08-21 09:00 A | 2026-08-21 09:15 A |  | 100% |  |  |  | start no earlier than 2026-08-21 09:00 | Зорькин В | 0.25h | 0.25h |
| 745 | 2.27.2 | контроль доставки |  | 15min | 2026-09-01 09:15 | 2026-09-01 09:30 | 744FS+7d |  |  | 136.16d | 3.94d | start no earlier than 2026-08-11 09:00 | Зорькин В | 0.25h |  |
| 746 | 2.27.3 | монтаж розетка / кабель |  | 3h | 2026-09-07 09:00 | 2026-09-07 12:00 | 745 |  |  | 132.22d |  | start no earlier than 2026-09-07 09:00 | Тимофеев В | 3h |  |
| 747 | 2.28 | маркировка канистры гидролизата - передать на время гровер нач цеха 2 |  | 20min | 2026-08-11 09:00 A | 2026-08-11 09:20 A |  | 100% |  |  |  | start no earlier than 2026-08-11 09:00 | Бобренок В | 0.33h | 0.33h |
| 748 | 2.29 | **ограждение мусорного контейнера у 2ц** |  | 14.34d | 2026-08-31 09:00 | 2026-09-18 11:45 |  |  |  | 123.25d |  |  |  | 34.75h |  |
| 749 | 2.29.1 | схема размещения |  | 1h | 2026-08-31 09:00 | 2026-08-31 10:00 |  |  |  | 123.25d | 0d | start no earlier than 2026-08-31 09:00 | Зорькин В | 1h |  |
| 750 | 2.29.2 | контроль остатков материала - каркас + обшивка стен |  | 30min | 2026-08-31 10:00 | 2026-08-31 10:30 | 749 |  |  | 123.25d | 0d | start no earlier than 2026-08-14 09:00 | Зорькин В | 0.5h |  |
| 751 | 2.29.3 | заявка материал / лист |  | 1h | 2026-09-01 10:30 | 2026-09-01 11:30 | 750FS+1d |  |  | 123.25d | 0d | start no earlier than 2026-08-10 08:00 | Зорькин В | 1h |  |
| 752 | 2.29.4 | контроль поставка |  | 15min | 2026-09-15 11:30 | 2026-09-15 11:45 | 751FS+10d |  |  | 123.25d | 0d | start no earlier than 2026-08-10 08:00 | Зорькин В | 0.25h |  |
| 753 | 2.29.5 | монтаж каркас + обшивка |  | 2d | 2026-09-16 11:45 | 2026-09-18 11:45 | 752FS+1d |  |  | 123.25d |  | start no earlier than 2026-08-10 08:00 | Некрасов А; Тимофеев В | 32h |  |

| ID | WBS | Task | Type | Duration | Start | Finish | Predecessors | Complete | Remaining | Total slack | Free slack | Constraint | Resources | Work | Actual work |
| --- | --- | --- | --- | --- | --- | --- | --- | --- | --- | --- | --- | --- | --- | --- | --- |
| 754 | 2.30 | **установить кондиционер контролерам ОТК в 2ц** |  | 7.38d | 2026-08-19 09:00 A | 2026-08-28 12:00 A |  | 100% |  |  |  |  |  | 7.5h | 7.5h |
| 755 | 2.30.1 | оапата счет контроль |  | 15min | 2026-08-19 09:00 A | 2026-08-19 09:15 A |  | 100% |  |  |  | start no earlier than 2026-08-19 09:00 | Домоводов К | 0.25h | 0.25h |
| 756 | 2.30.2 | длоставка контроль |  | 15min | 2026-08-24 09:15 A | 2026-08-24 09:30 A | 755FS+4d | 100% |  |  |  | start no earlier than 2026-08-17 09:00 | Домоводов К | 0.25h | 0.25h |
| 757 | 2.30.3 | монтаж |  | 4h | 2026-08-24 09:30 A | 2026-08-24 14:30 A | 756 | 100% |  |  |  | start no earlier than 2026-08-10 08:00 | оплот | 4h | 4h |
| 758 | 2.30.4 | монтаж крозетка |  | 3h | 2026-08-28 09:00 A | 2026-08-28 12:00 A | 757FS-1d | 100% |  |  |  | start no earlier than 2026-08-28 09:00 | Бобренок В | 3h | 3h |
| 759 | 2.31 | **усиление подогрев приточной вентиляции** |  | 19.53d? | 2026-08-17 09:00 A | 2026-09-11 14:15 |  | 49% | 9.92d? | 128.06d |  |  |  | 16.25h | 8h |
| 760 | 2.31.1 | планирование мощности для приточная вент до 200 квт + тепл завесы |  | 4h | 2026-08-17 09:00 A | 2026-08-17 13:00 A |  | 100% |  |  |  | start no earlier than 2026-08-17 09:00 | Домоводов К | 4h | 4h |
| 761 | 2.31.2 | заявка доп котлы + автоматика |  | 4h | 2026-08-27 09:00 A | 2026-08-27 13:00 A | 760FS+1d | 100% |  |  |  | start no earlier than 2026-08-27 09:00 | Домоводов К | 4h | 4h |
| 762 | 2.31.3 | контроль поствки |  | 15min | 2026-09-10 14:00 | 2026-09-10 14:15 | 761FS+10d |  |  | 128.06d | 0d | start no earlier than 2026-08-10 08:00 | Зорькин В | 0.25h |  |
| 763 | 2.31.4 | монтаж |  | 1d? | 2026-09-10 14:15 | 2026-09-11 14:15 | 762 |  |  | 128.06d |  | start no earlier than 2026-08-10 08:00 | Некрасов А | 8h |  |
| 764 | 2.32 | собрать 4 стула и тумбочку. Находятся у мастера |  | 4h | 2026-08-10 08:00 A | 2026-08-10 13:00 A |  | 100% |  |  |  | start no earlier than 2026-08-10 08:00 | Бобренок В | 4h | 4h |
| 765 | 2.33 | кабель к вентилятору печи примыкание гофры к трубе выполнить без пустот фото Фадеевой |  | 1h | 2026-08-11 09:00 A | 2026-08-11 10:00 A |  | 100% |  |  |  | start no earlier than 2026-08-11 09:00 | Бобренок В | 1h | 1h |
| 766 | 2.34 | закрыить все эл щщитки на ключь |  | 1h | 2026-08-10 08:00 A | 2026-08-10 10:00 A |  | 100% |  |  |  | start no earlier than 2026-08-10 08:00 | Бобренок В | 1h | 1h |
| 767 | 2.35 | установить отбойник склад навесок, стена мойки |  | 1h | 2026-08-10 08:00 A | 2026-08-10 10:00 A |  | 100% |  |  |  | start no earlier than 2026-08-10 08:00 | Бобренок В | 1h | 1h |
| 768 | 2.36 | **обеспечить не менее +15 зимой в зоне хранения навесок** |  | 42.09d? | 2026-08-04 09:00 A | 2026-10-01 09:45 |  | 19% | 34.12d? | 114.5d |  |  |  | 38.25h | 7.25h |
| 769 | 2.36.1 | **утепление стены** |  | 7.16d? | 2026-08-31 09:00 | 2026-09-09 10:15 |  |  |  | 116.25d |  |  |  | 9.25h |  |
| 770 | 2.36.1.1 | расчет количство утеплителя + профлист/саморезы. Заявка |  | 1h | 2026-08-31 09:00 | 2026-08-31 10:00 |  |  |  | 130.44d | 0d | start no earlier than 2026-08-31 09:00 | Шуранов Ю | 1h |  |
| 771 | 2.36.1.2 | получить цену / решение о тепловой завесе | milestone | 0d | 2026-09-01 09:00 | 2026-09-01 09:00 |  |  |  | 115.25d | 0d | start no earlier than 2026-09-01 09:00 | Домоводов К |  |  |
| 772 | 2.36.1.3 | контроль даты доставки |  | 15min | 2026-09-07 10:00 | 2026-09-07 10:15 | 770FS+5d |  |  | 130.44d | 0d | start no earlier than 2026-08-27 08:00 | Зорькин В | 0.25h |  |
| 773 | 2.36.1.4 | монтаж |  | 1d? | 2026-09-08 10:15 | 2026-09-09 10:15 | 772FS+1d |  |  | 130.44d |  | start no earlier than 2026-08-27 08:00 | Некрасов А | 8h |  |
| 774 | 2.36.1.5 | решение об утеплении стены сравнить с затратами на тепловые завесы | milestone | 0h | 2026-09-01 09:00 | 2026-09-01 09:00 | 771, 790 |  |  | 115.25d | 0d | start no earlier than 2026-08-24 09:00 | Домоводов К |  |  |
| 775 | 2.36.2 | **кап ремонт стен зона хранения навесок. Промерзают** |  | 5.12d | 2026-08-04 09:00 A | 2026-08-11 10:00 A |  | 100% |  |  |  |  |  | 5h | 5h |
| 776 | 2.36.2.1 | установить листы на место склад навесо стена с эл щитком |  | 1h | 2026-08-11 09:00 A | 2026-08-11 10:00 A |  | 100% |  |  |  | start no earlier than 2026-08-11 09:00 | Тимофеев В | 1h | 1h |
| 777 | 2.36.2.2 | вскрытие стен дя составления плана работ. Демонтировать несколько листов в зоне промерзания (гдещиток) |  | 4h | 2026-08-04 09:00 A | 2026-08-04 13:00 A |  | 100% |  |  |  | start no earlier than 2026-08-04 09:00 | Тимофеев В | 4h | 4h |

| ID | WBS | Task | Duration | Start | Finish | Predecessors | Complete | Remaining | Total slack | Free slack | Constraint | Resources | Work | Actual work |
| --- | --- | --- | --- | --- | --- | --- | --- | --- | --- | --- | --- | --- | --- | --- |
| 778 | 2.36.3 | **тепловые завесы в 2ц зона подачи навесок** | 33.09d? | 2026-08-17 09:00 A | 2026-10-01 09:45 |  | 8% | 30.31d? | 114.5d |  |  |  | 23.75h | 2h |
| 779 | 2.36.3.1 | **монтаж теплокалориферов** | 21.09d? | 2026-09-02 09:00 | 2026-10-01 09:45 |  |  |  | 114.5d |  |  |  | 10.75h |  |
| 780 | 2.36.3.1.1 | заявка | 2h | 2026-09-02 09:00 | 2026-09-02 11:00 | 774FS+1d |  |  | 115.25d | 0.75d | start no earlier than 2026-08-21 09:00 | Домоводов К | 2h |  |
| 781 | 2.36.3.1.2 | контроль оплаты\ | 15min | 2026-09-07 09:00 | 2026-09-07 09:15 | 780FS+2d |  |  | 114.5d | 0d | start no earlier than 2026-09-07 09:00 | Зорькин В | 0.25h |  |
| 782 | 2.36.3.1.3 | контроль доставки | 15min | 2026-09-28 09:15 | 2026-09-28 09:30 | 781FS+15d |  |  | 114.5d | 0d | start no earlier than 2026-08-10 08:00 | Зорькин В | 0.25h |  |
| 783 | 2.36.3.1.4 | приемка | 15min | 2026-09-29 09:30 | 2026-09-29 09:45 | 782FS+1d |  |  | 114.5d | 0d | start no earlier than 2026-08-10 08:00 | Зорькин В | 0.25h |  |
| 784 | 2.36.3.1.5 | монтаж калориферов | 1d? | 2026-09-30 09:45 | 2026-10-01 09:45 | 783FS+1d |  |  | 114.5d |  | start no earlier than 2026-08-10 08:00 | Некрасов А | 8h |  |
| 785 | 2.36.3.2 | **монтаж кабель** | 17.38d? | 2026-08-17 09:00 A | 2026-09-09 12:00 |  | 15% | 14.7d? | 130.22d |  |  |  | 13h | 2h |
| 786 | 2.36.3.2.1 | планирование мощности | 2h | 2026-08-17 09:00 A | 2026-08-17 11:00 A |  | 100% |  |  |  | start no earlier than 2026-08-17 09:00 | Домоводов К | 2h | 2h |
| 787 | 2.36.3.2.2 | заявка кабель /щиток | 2h | 2026-08-31 09:00 | 2026-08-31 11:00 | 786 |  |  | 130.22d | 0d | start no earlier than 2026-08-31 09:00 | Домоводов К | 2h |  |
| 788 | 2.36.3.2.3 | контроль доставка | 1h | 2026-09-07 11:00 | 2026-09-07 12:00 | 787FS+5d |  |  | 130.22d | 0d | start no earlier than 2026-08-10 08:00 | Зорькин В | 1h |  |
| 789 | 2.36.3.2.4 | монтаж | 1d? | 2026-09-08 12:00 | 2026-09-09 12:00 | 788FS+1d |  |  | 130.22d |  | start no earlier than 2026-08-10 08:00 | Некрасов А | 8h |  |
| 790 | 2.36.4 | контроль достаточности если не крепить верхние саморезы | 15min | 2026-08-13 09:00 A | 2026-08-13 09:15 A |  | 100% |  |  |  | start no earlier than 2026-08-13 09:00 | Домоводов К | 0.25h | 0.25h |
| 791 | 2.37 | **дверь в мойку сделать герметичный притвор** | 1.25d | 2026-08-14 09:00 A | 2026-08-17 11:00 A |  | 100% |  |  |  |  |  | 2.33h | 2.33h |
| 792 | 2.37.1 | подбор уплотнителя / заказать | 20min | 2026-08-14 09:00 A | 2026-08-14 09:20 A |  | 100% |  |  |  | start no earlier than 2026-08-14 09:00 | Домоводов К | 0.33h | 0.33h |
| 793 | 2.37.2 | монтаж резинки на клей | 2h | 2026-08-16 09:00 A | 2026-08-17 11:00 A |  | 100% |  |  |  | start no earlier than 2026-08-16 09:00 | Бобренок В | 2h | 2h |
| 794 | 2.38 | **на дверь в мойку установить мощный доводчик** | 11.25d | 2026-08-21 09:00 A | 2026-09-07 11:00 |  | 36% | 7.19d | 132.34d |  |  |  | 5.08h | 1.83h |
| 795 | 2.38.1 | закрыть отверстие от ручки (заварить) | 30min | 2026-09-03 09:00 A | 2026-09-03 09:30 A |  | 100% |  |  |  | start no earlier than 2026-09-03 09:00 | Некрасов А | 0.5h | 0.5h |
| 796 | 2.38.2 | установить ручку с защелкой -язычком | 1h | 2026-09-01 09:00 | 2026-09-01 10:00 |  |  |  | 136.47d |  | start no earlier than 2026-09-01 09:00 | Макаревич А | 1h |  |
| 797 | 2.38.3 | установить щетку для герметизации низа двери | 1h | 2026-08-28 09:00 A | 2026-08-28 10:00 A |  | 100% |  |  |  | start no earlier than 2026-08-28 09:00 | Макаревич А | 1h | 1h |
| 798 | 2.38.4 | заявка доводчик | 20min | 2026-08-21 09:00 A | 2026-08-21 09:20 A |  | 100% |  |  |  | start no earlier than 2026-08-21 09:00 | Зорькин В | 0.33h | 0.33h |
| 799 | 2.38.5 | контроль поставки | 15min | 2026-08-31 09:00 | 2026-08-31 09:15 | 798FS+5d |  |  | 136.31d | 3.97d | start no earlier than 2026-08-31 09:00 | Зорькин В | 0.25h |  |
| 800 | 2.38.6 | монтаж | 2h | 2026-09-07 09:00 | 2026-09-07 11:00 | 799FS+1d |  |  | 132.34d |  | start no earlier than 2026-09-07 09:00 | Бобренок В | 2h |  |
| 801 | 2.39 | **пролистыватель с апликтором заказ** | 34.03d? | 2026-08-10 09:00 A | 2026-09-25 09:15 |  | 12% | 29.82d? | 118.56d |  |  |  | 9.42h | 1.17h |
| 802 | 2.39.1 | получить договор + счет | 1h | 2026-08-10 09:00 A | 2026-08-10 10:00 A |  | 100% |  |  |  | start no earlier than 2026-08-10 08:00 | Зорькин В | 1h | 1h |

| ID | WBS | Task | Type | Duration | Start | Finish | Predecessors | Complete | Remaining | Total slack | Free slack | Constraint | Resources | Work | Actual work |
| --- | --- | --- | --- | --- | --- | --- | --- | --- | --- | --- | --- | --- | --- | --- | --- |
| 803 | 2.39.2 | **согласвоание договор** |  | 3.02d | 2026-08-12 09:00 A | 2026-08-17 09:10 A |  | 100% |  |  |  |  |  | 0.17h | 0.17h |
| 804 | 2.39.2.1 | подать договор |  | 5min | 2026-08-12 09:00 A | 2026-08-12 09:05 A |  | 100% |  |  |  | start no earlier than 2026-08-12 09:00 | Домоводов К | 0.08h | 0.08h |
| 805 | 2.39.2.2 | контроль |  | 5min | 2026-08-17 09:05 A | 2026-08-17 09:10 A | 804FS+5d | 100% |  |  |  | start no earlier than 2026-08-12 09:00 | Домоводов К | 0.08h | 0.08h |
| 806 | 2.39.3 | оплата подать счет | milestone | 0d | 2026-08-12 09:00 A | 2026-08-12 09:00 A |  | 100% |  |  |  | start no earlier than 2026-08-12 09:00 | Домоводов К |  |  |
| 807 | 2.39.4 | доставка конетроль |  | 15min | 2026-09-23 09:00 | 2026-09-23 09:15 | 806FS+30d |  |  | 118.56d | 0d | start no earlier than 2026-08-10 08:00 | Зорькин В | 0.25h |  |
| 808 | 2.39.5 | монтаж |  | 1d? | 2026-09-24 09:15 | 2026-09-25 09:15 | 807FS+1d |  |  | 118.56d |  | start no earlier than 2026-08-10 08:00 | Тимофеев В | 8h |  |
| 809 | 2.40 | **вентиляция мойка приточно-вытяжная 1ц 2 линия** |  | 9.19d | 2026-08-13 09:00 A | 2026-08-26 10:30 |  | 29% | 6.56d | 140.41d |  |  |  | 20h | 5h |
| 810 | 2.40.1 | монтаж вытяжной трубы в колектор. После переноса вентиляторов отключен |  | 4h | 2026-08-17 09:00 | 2026-08-17 13:00 |  |  |  | 147.09d |  | start no earlier than 2026-08-16 09:00 | Бобренок В | 4h |  |
| 811 | 2.40.2 | составить проект |  | 4h | 2026-08-13 09:00 A | 2026-08-13 13:00 A |  | 100% |  |  |  | start no earlier than 2026-08-13 09:00 | Домоводов К | 4h | 4h |
| 812 | 2.40.3 | заявка материалы |  | 1h | 2026-08-24 09:00 A | 2026-08-24 10:00 A | 811FS+7d | 100% |  |  |  | start no earlier than 2026-08-24 09:00 | Зорькин В | 1h | 1h |
| 813 | 2.40.4 | контроль поставки |  | 30min | 2026-08-25 10:00 | 2026-08-25 10:30 | 812FS+1d |  |  | 140.41d | 0d | start no earlier than 2026-08-10 08:00 | Зорькин В | 0.5h |  |
| 814 | 2.40.5 | монтаж |  | 1d | 2026-08-25 10:30 | 2026-08-26 10:30 | 813 |  |  | 140.41d |  | start no earlier than 2026-08-10 08:00 | Некрасов А; Тимофеев В | 10.5h |  |
| 815 | 2.41 | **выполнить обрамление двери в охладитель, что бы скрыть поверхность** |  | 14.25d | 2026-08-14 09:00 A | 2026-09-03 11:00 |  | 90% | 1.43d | 134.34d |  |  |  | 2.5h | 2.25h |
| 816 | 2.41.1 | заказ декоративный уголок |  | 15min | 2026-08-14 09:00 A | 2026-08-14 09:15 A |  | 100% |  |  |  | start no earlier than 2026-08-14 09:00 | Домоводов К | 0.25h | 0.25h |
| 817 | 2.41.2 | контроль доставки |  | 15min | 2026-08-31 09:00 | 2026-08-31 09:15 | 816FS+5d |  |  | 137.56d |  | start no earlier than 2026-08-31 09:00 | Зорькин В | 0.25h |  |
| 818 | 2.41.3 | монтаж |  | 2h | 2026-09-03 09:00 A | 2026-09-03 11:00 A | 817FS+1d | 100% |  |  |  | start no earlier than 2026-09-03 09:00 | Труфанов А | 2h | 2h |
| 819 | 2.42 | **ремонт осушителя компрессора 2ц** |  | 20.12d | 2026-08-09 09:00 A | 2026-09-07 10:00 |  | 88% | 2.39d | 132.47d |  |  |  | 11.08h | 8.92h |
| 820 | 2.42.1 | проверка давления фреона |  | 1h | 2026-09-07 09:00 | 2026-09-07 10:00 |  |  |  | 132.47d |  | start no earlier than 2026-09-07 09:00 | Труфанов А; Некрасов А | 2h |  |
| 821 | 2.42.2 | фото шильдик для поиск в продаже |  | 10min | 2026-08-11 09:00 A | 2026-08-11 09:10 A |  | 100% |  |  |  | start no earlier than 2026-08-11 09:00 | Некрасов А | 0.17h | 0.17h |
| 822 | 2.42.3 | связь с сервисным отделом получить дату |  | 1h | 2026-08-12 09:00 A | 2026-08-12 10:00 A |  | 100% |  |  |  | start no earlier than 2026-08-12 09:00 | Зорькин В | 1h | 1h |
| 823 | 2.42.4 | фото шильдик для поиск в продаже |  | 1h | 2026-08-12 09:00 A | 2026-08-12 10:00 A |  | 100% |  |  |  | start no earlier than 2026-08-12 09:00 | Зорькин В | 1h | 1h |
| 824 | 2.42.5 | слить конденсат с компрессора, чистка фильтров | manual | 3h | 2026-08-09 09:00 A | 2026-08-09 12:00 A |  | 100% |  |  |  | start no earlier than 2026-08-09 09:00 | Бобренок В | 3h | 3h |
| 825 | 2.42.6 | попробовать смазать подшипники вентилятора осушителя |  | 15min | 2026-08-18 09:00 A | 2026-08-18 09:15 A |  | 100% |  |  |  | start no earlier than 2026-08-18 09:00 | Некрасов А | 0.25h | 0.25h |
| 826 | 2.42.7 | замер размеров вентилятора |  | 15min | 2026-08-18 09:00 A | 2026-08-18 09:15 A |  | 100% |  |  |  | start no earlier than 2026-08-18 09:00 | Зорькин В; Некрасов А | 0.5h | 0.5h |
| 827 | 2.42.8 | подбор аналога вентилятора погабариту |  | 1h | 2026-08-18 09:15 A | 2026-08-18 10:15 A | 826 | 100% |  |  |  | start no earlier than 2026-08-14 09:00 | Зорькин В | 1h | 1h |
| 828 | 2.42.9 | заменить вентилятор на осушителе (от охладителя, лежит на компрессоре). В 6 утра остановка |  | 2h | 2026-08-19 09:00 A | 2026-08-19 11:00 A |  | 100% |  |  |  | start no earlier than 2026-08-19 09:00 | Бобренок В | 2h | 2h |
| 829 | 2.42.10 | Заявка в сервис не работает осушитель |  | 10min | 2026-08-31 09:00 | 2026-08-31 09:10 |  |  |  | 137.57d |  | start no earlier than 2026-08-31 09:00 | Зорькин В | 0.17h |  |
| 830 | 2.43 | взять у нас в кабинете крышки (обработать) защиты на вентиляторы охладителя | manual | 4h | 2026-09-08 09:00 | 2026-09-08 13:00 |  |  |  |  |  | start no earlier than 2026-09-08 09:00 | Бобренок В | 4h |  |
| 831 | 2.44 | заменить резинки на красном баке (выдать, если будет остановка, поменять) | manual | 1h | 2026-08-31 09:00 A | 2026-08-31 10:00 A |  | 100% |  |  |  | start no earlier than 2026-08-31 09:00 | Бобренок В | 1h | 1h |
| 832 | 2.45 | на приемной горловине красного смесителя закрутить второй ленточный хомут, чтобы не выпадала мука |  | 1h | 2026-08-06 09:00 A | 2026-08-06 10:00 A |  | 100% |  |  |  | start no earlier than 2026-08-06 08:00 | Труфанов А | 1h | 1h |

| ID | WBS | Task | Type | Duration | Start | Finish | Predecessors | Complete | Actual start | Actual finish | Constraint | Resources | Work | Actual work |
| --- | --- | --- | --- | --- | --- | --- | --- | --- | --- | --- | --- | --- | --- | --- |
| 833 | 2.46 | **закрутить болты на петлях двери печи** |  | 0.12d | 2026-09-02 09:00 A | 2026-09-02 10:00 A |  | 100% |  |  |  |  | 1h | 1h |
| 834 | 2.46.1 | попробовать закрутить на винтовые заклепки |  | 1h | 2026-09-02 09:00 A | 2026-09-02 10:00 A |  | 100% |  |  | start no earlier than 2026-09-04 09:00 | Некрасов А | 1h | 1h |
| 835 | 2.47 | установка фильтров на подачу жира (осн. + резерв) |  | 2h | 2026-08-06 08:00 A | 2026-08-06 11:00 A |  | 100% |  |  | start no earlier than 2026-08-06 08:00 | Тимофеев В | 2h | 2h |
| 836 | 2.48 | эксперимент с лейкой подача жиров |  | 1h | 2026-08-06 08:00 A | 2026-08-06 10:00 A |  | 100% |  |  | start no earlier than 2026-08-06 08:00 | Тимофеев В | 1h | 1h |
| 837 | 2.49 | **по аналогии второй линии насверлить сверлом 1 мм отверстия в трубке для жиров** |  | 0.12d | 2026-08-06 09:00 A | 2026-08-06 10:00 A |  | 100% |  |  |  | Макаревич А | 2h | 2h |
| 838 | 2.49.1 | установка трубки на жиры |  | 1h | 2026-08-06 09:00 A | 2026-08-06 10:00 A |  | 100% |  |  | start no earlier than 2026-08-06 09:00 | Тимофеев В | 1h | 1h |
| 839 | 2.50 | поломоечная машинка вырезать из силикона шторку захвата воды |  | 2h | 2026-08-03 08:00 A | 2026-08-03 11:00 A |  | 100% |  |  | start no earlier than 2026-08-03 08:00 | Бобренок В | 2h | 2h |
| 840 | 2.51 | **втулка фторопласт заказать 26х44х5** |  | 1d? | 2026-08-04 09:00 A | 2026-08-04 18:00 A |  | 100% |  |  |  | Шуранов Ю | 8h | 8h |
| 841 | 2.51.1 | счет доставка |  | 1d? | 2026-08-04 09:00 A | 2026-08-04 18:00 A |  | 100% |  |  | start no earlier than 2026-08-04 08:00 |  |  |  |
| 842 | 2.52 | **посмотреть вентилятор Сапелина у нас в кабинете (не работает)** |  | 1d? | 2026-08-04 09:00 A | 2026-08-04 18:00 A |  | 100% |  |  |  | Бобренок В | 8h | 8h |
| 843 | 2.52.1 | сгорел двигатель |  | 1d? | 2026-08-04 09:00 A | 2026-08-04 18:00 A |  | 100% |  |  | start no earlier than 2026-08-04 08:00 |  |  |  |
| 844 | 2.53 | слить конденсат с компрессора |  | 0.5h | 2026-08-02 09:00 A | 2026-08-03 09:30 A |  | 100% |  |  | start no earlier than 2026-08-02 09:00 | Бобренок В | 0.5h | 0.5h |
| 845 | 2.54 | **продолжить изготовление приемной горловины по аналогии 3 ц.** |  | 4h? | 2026-08-10 09:00 | 2026-08-10 13:00 |  | 100% | 2026-07-29 09:00 | 2026-09-04 11:00 |  |  | 14.08h | 14.08h |
| 846 | 2.54.1 | заказать прут нерж. |  | 1d? | 2026-07-29 09:00 A | 2026-07-29 18:00 A |  | 100% |  |  | start no earlier than 2026-07-29 09:00 | Зорькин В | 8h | 8h |
| 847 | 2.54.2 | контроль доставка |  | 5min | 2026-08-18 09:00 A | 2026-08-18 09:05 A |  | 100% |  |  | start no earlier than 2026-08-18 09:00 | Зорькин В | 0.08h | 0.08h |
| 848 | 2.54.3 | изготовление / установка |  | 4h | 2026-08-20 09:00 A | 2026-08-20 13:00 A | 847 | 100% |  |  | start no earlier than 2026-08-20 09:00 | Макаревич А | 4h | 4h |
| 849 | 2.54.4 | Корректировка горловины, сделать более плотные зазоры, посмотреть по месту |  | 2h | 2026-09-04 09:00 A | 2026-09-04 11:00 A |  | 100% |  |  | start no earlier than 2026-09-04 09:00 | Макаревич А | 2h | 2h |
| 850 | 2.55 | прикрутить лотки охладителя, чтобы не задевали сетку (лишние отверстия заварить) | manual | 2h | 2026-08-03 09:00 A | 2026-08-03 11:00 A |  | 100% |  |  | start no earlier than 2026-08-03 09:00 | Бобренок В | 2h | 2h |
| 851 | 2.56 | чистка фильтров кондиционеров | manual | 1h | 2026-08-01 09:00 A | 2026-08-01 10:00 A |  | 100% |  |  | start no earlier than 2026-08-01 09:00 | Бундин В | 1h | 1h |
| 852 | 2.57 | слить конденсат с компрессора |  | 1h | 2026-07-30 08:00 A | 2026-07-30 10:00 A |  | 100% |  |  | start no earlier than 2026-07-30 08:00 | Дедов В | 1h | 1h |
| 853 | 2.58 | слив конденсата с кондиционеров прочистить трубу | manual | 2h | 2026-08-01 09:00 A | 2026-08-01 11:00 A |  | 100% |  |  | start no earlier than 2026-08-01 09:00 | Бундин В | 2h | 2h |
| 854 | 2.59 | Настройка частотника питателя (созвон с Валентином) |  | 1h | 2026-07-31 09:00 A | 2026-07-31 10:00 A |  | 100% |  |  | start no earlier than 2026-07-31 09:00 | Бундин В | 1h | 1h |
| 855 | 2.60 | дверь металлическая зона выдачи ГП ревизия, плоход закрывается |  | 1h | 2026-07-15 09:00 A | 2026-07-15 10:00 A |  | 100% |  |  | start no earlier than 2026-07-15 09:00 | Бундин В | 1h | 1h |
| 856 | 2.61 | крепление доводчик дверь входная |  | 1h | 2026-07-15 09:00 A | 2026-07-15 10:00 A |  | 100% |  |  | start no earlier than 2026-07-15 09:00 | Бундин В | 1h | 1h |
| 857 | 2.62 | снять меющийся, установить новый прайсчекер (лежит у мастеров) |  | 1h | 2026-07-15 09:00 A | 2026-07-15 10:00 A |  | 100% |  |  | start no earlier than 2026-07-15 09:00 | Бундин В | 1h | 1h |
| 858 | 2.63 | ремонт кронштейна датчик давления |  | 30min | 2026-07-10 09:00 A | 2026-07-10 09:30 A |  | 100% |  |  | start no earlier than 2026-07-10 09:00 | Бобренок В | 0.5h | 0.5h |
| 859 | 2.64 | замерить демонтированные шнеки, заполнить ьабличку Зорькина |  | 1h | 2026-07-11 09:00 A | 2026-07-13 10:00 A |  | 100% |  |  | start no earlier than 2026-07-11 09:00 | Макаревич А | 1h | 1h |
| 860 | 2.65 | обшить входной проем п-образным профилем (на складе лежит) | manual | 3h | 2026-07-08 09:00 A | 2026-07-08 12:00 A |  | 100% |  |  | start no earlier than 2026-07-08 09:00 | Некрасов А; Тимофеев В | 6h | 6h |
| 861 | 2.66 | чистка воздушных клапанов на септике |  | 1d? | 2026-07-02 09:00 A | 2026-07-02 18:00 A |  | 100% |  |  | start no earlier than 2026-07-02 09:00 | Олег | 8h | 8h |
| 862 | 2.67 | закрепить щиток транспортера у стены на фасовке, малый дозатор) | manual | 1h | 2026-07-04 09:00 A | 2026-07-04 10:00 A |  | 100% |  |  | start no earlier than 2026-07-04 09:00 | Дедов В | 1h | 1h |

| ID | WBS | Task | Type | Duration | Start | Finish | Complete | Remaining | Total slack | Constraint | Resources | Work | Actual work |
| --- | --- | --- | --- | --- | --- | --- | --- | --- | --- | --- | --- | --- | --- |
| 863 | 2.68 | **под экструдером масло- ревизия откуда** |  | 0.12d | 2026-07-03 09:00 A | 2026-07-03 10:00 A | 100% |  |  |  |  | 1h | 1h |
| 864 | 2.68.1 | заменить шланг 20мм (лежит черный на стеллаже справа, где кабель) при остановке- согласовать с мастером |  | 1h | 2026-07-03 09:00 A | 2026-07-03 10:00 A | 100% |  |  | start no earlier than 2026-07-03 09:00 | Макаревич А | 1h | 1h |
| 865 | 2.69 | чистка труб сброса конденсата с кондиционеров |  | 2h | 2026-06-30 09:00 A | 2026-06-30 11:00 A | 100% |  |  | start no earlier than 2026-06-30 09:00 | Некрасов А; Тимофеев В | 2h | 2h |
| 866 | 2.70 | чистка всех фильтров на кондиционеры, разобраться с питанием внутреннего блока |  | 1d? | 2026-06-29 09:00 A | 2026-06-29 18:00 A | 100% |  |  | start no earlier than 2026-06-29 09:00 |  |  |  |
| 867 | 2.71 | ТО бестром |  | 2h | 2026-06-30 09:00 A | 2026-06-30 11:00 A | 100% |  |  | start no earlier than 2026-06-30 09:00 | Бундин В | 2h | 2h |
| 868 | 2.72 | промыть внешние блоки кондиционеров |  | 3h | 2026-06-26 09:00 A | 2026-06-26 12:00 A | 100% |  |  | start no earlier than 2026-06-26 09:00 | Тимофеев В; Дедов В | 6h | 6h |
| 869 | 2.73 | вернуть кожух защиты на прекондиционер (подогнать в размер) на остановке линии |  | 2h | 2026-06-24 09:00 A | 2026-06-24 11:00 A | 100% |  |  | start no earlier than 2026-06-24 09:00 | Труфанов А | 2h | 2h |
| 870 | 2.74 | подключение тепловой защиты на приточке и вытяжке |  | 2h | 2026-06-23 08:00 A | 2026-06-23 11:00 A | 100% |  |  | start no earlier than 2026-06-23 08:00 | Тимофеев В; Макаревич А | 4h | 4h |
| 871 | 2.75 | заменить фильтр приточка 2 этаж и указать кол-во остатка на складе |  | 1h | 2026-06-20 09:00 A | 2026-06-22 10:00 A | 100% |  |  | start no earlier than 2026-06-20 09:00 | Дедов В | 1h | 1h |
| 872 | 2.76 | сделать защиту жировика от холода (изготовить из сенгвич панели на навесках 2ц.) жировик расскажет | manual | 2h | 2026-06-21 09:00 A | 2026-06-21 11:00 A | 100% |  |  | start no earlier than 2026-06-21 09:00 | Бундин В | 2h | 2h |
| 873 | 2.77 | проверка теко 0,4 -пакет запаенный |  | 1h | 2026-06-18 08:00 A | 2026-06-18 10:00 A | 100% |  |  | start no earlier than 2026-06-18 08:00 | Дедов В | 1h | 1h |
| 874 | 2.78 | подключение датчика давления через гидрошланг |  | 1h | 2026-07-09 09:00 A | 2026-07-09 10:00 A | 100% |  |  | start no earlier than 2026-07-09 09:00 | Бундин В | 1h | 1h |
| 875 | 2.79 | чистка парогенератора |  | 2h | 2026-06-18 08:00 A | 2026-06-18 11:00 A | 100% |  |  | start no earlier than 2026-06-18 08:00 | Тимофеев В | 2h | 2h |
| 876 | 2.80 | слив конденсата с компрессора и продуть радиаторы и фильтры |  | 1h | 2026-06-20 09:00 A | 2026-06-22 10:00 A | 100% |  |  | start no earlier than 2026-06-20 09:00 | Бобренок В | 1h | 1h |
| 877 | 2.81 | проверить, есть ли давление во всех гидроаккумуляторах на отоплении по цеху, зафиксировать с порванными мембранами |  | 2h | 2026-06-11 09:00 A | 2026-06-11 11:00 A | 100% |  |  | start no earlier than 2026-06-11 09:00 | Дедов В | 2h | 2h |
| 878 | 2.82 | дверь охладителя и угол - прикрутить наружний уголок 20х50 и 50х50, чтобы не резали руки (уголок на входе напротив ворот в синем складе) |  | 3h | 2026-06-12 09:00 A | 2026-06-12 12:00 A | 100% |  |  | start no earlier than 2026-06-12 09:00 | Дедов В | 3h | 3h |
| 879 | 2.83 | взять на складе специальный п-образный профиль и обшить дверной проем вход в охладитель | manual | 2h | 2026-07-05 09:00 A | 2026-07-05 11:00 A | 100% |  |  | start no earlier than 2026-07-05 09:00 |  |  |  |
| 880 | 2.84 | проверка гидроаккумулятора на водоподготовке |  | 0.5h | 2026-06-11 09:00 A | 2026-06-11 09:30 A | 100% |  |  | start no earlier than 2026-06-11 09:00 | Дедов В | 0.5h | 0.5h |
| 881 | 2.85 | чистка парогенератора |  | 2h | 2026-06-11 09:00 A | 2026-06-11 11:00 A | 100% |  |  | start no earlier than 2026-06-11 09:00 | Тимофеев В | 2h | 2h |
| 882 | 2.86 | **посмотреть на желтом складе шибер, если найдем устанавливаем на аквариум зона экструдера** |  | 0.12d | 2026-06-12 09:00 A | 2026-06-12 10:00 A | 100% |  |  |  |  | 1h | 1h |
| 883 | 2.86.1 | монтаж воздуховод под углом на шибер- настройка с операторами направление обдува |  | 1h | 2026-06-12 09:00 A | 2026-06-12 10:00 A | 100% |  |  | start no earlier than 2026-06-12 09:00 | Бундин В | 1h | 1h |
| 884 | 2.87 | **ворота выход готовой продукции (прикрутить ролик, ролик у нас в кабинете)** |  | 1d? | 2026-06-11 09:00 A | 2026-06-11 18:00 | 99% | 0d? | 0d |  | Труфанов А | 16h | 15h |
| 885 | 2.87.1 | выкл. Ручной режим |  | 1d? | 2026-06-11 09:00 A | 2026-06-11 18:00 A | 100% |  |  | start no earlier than 2026-06-11 09:00 | Дедов В | 8h | 8h |
| 886 | 2.88 | промерить шнеки / гильзы износ. Маркировать |  | 1h | 2026-07-08 09:00 A | 2026-07-08 10:00 A | 100% |  |  | start no earlier than 2026-07-08 09:00 | Зорькин В | 1h | 1h |
| 887 | 2.89 | сверлить сетку от фильеры, сверлом на станке, все отверстия. |  | 4h | 2026-06-06 09:00 A | 2026-06-08 13:00 A | 100% |  |  | start no earlier than 2026-06-06 09:00 | Бобренок В | 4h | 4h |

| ID | WBS | Task | Type | Duration | Start | Finish | Predecessors | Complete | Remaining | Actual start | Actual finish | Total slack | Constraint | Resources | Work | Actual work |
| --- | --- | --- | --- | --- | --- | --- | --- | --- | --- | --- | --- | --- | --- | --- | --- | --- |
| 888 | 2.90 | **заменаить сальник редуктора транспортер №3** |  | 0.12d | 2026-06-18 09:00 A | 2026-06-18 10:00 A |  | 100% |  |  |  |  |  |  | 2h | 2h |
| 889 | 2.90.1 | заменаить редутор из зип |  | 1h | 2026-06-18 09:00 A | 2026-06-18 10:00 A |  | 100% |  |  |  |  | start no earlier than 2026-06-18 09:00 | Тимофеев В | 1h | 1h |
| 890 | 2.90.2 | замена сальник на снятом |  | 1h | 2026-06-18 09:00 A | 2026-06-18 10:00 A |  | 100% |  |  |  |  | start no earlier than 2026-06-19 09:00 | Тимофеев В | 1h | 1h |
| 891 | 2.91 | законтрогаить шпильки-ножки запайщиков |  | 1h | 2026-06-06 09:00 A | 2026-06-08 10:00 A |  | 100% |  |  |  |  | start no earlier than 2026-06-06 09:00 | Бобренок В | 1h | 1h |
| 892 | 2.92 | **нория квадропак -устранить просыпание** |  | 1d? | 2026-06-04 09:00 A | 2026-06-04 18:00 A |  | 100% |  |  |  |  |  | Тимофеев В | 16h | 16h |
| 893 | 2.92.1 | добавить частоту частотника до 70 на норию |  | 1d? | 2026-06-04 09:00 A | 2026-06-04 18:00 A |  | 100% |  |  |  |  | start no earlier than 2026-06-04 09:00 | Дедов В | 8h | 8h |
| 894 | 2.93 | Замена шнеков (усиленные) - по уровню |  | 4h | 2026-06-04 09:00 A | 2026-06-04 13:00 A |  | 100% |  |  |  |  | start no earlier than 2026-06-04 09:00 | Тимофеев В | 4h | 4h |
| 895 | 2.94 | монтаж воздуховод приточный в площадку загрузки смесителя |  | 3h | 2026-06-05 09:00 A | 2026-06-05 12:00 A |  | 100% |  |  |  |  | start no earlier than 2026-06-05 09:00 | Некрасов А | 3h | 3h |
| 896 | 2.95 | очистка вентилятора окно экструдер |  | 40min | 2026-06-04 09:00 A | 2026-06-04 09:40 A |  | 100% |  |  |  |  | start no earlier than 2026-06-04 09:00 | Некрасов А; Бундин В | 1.33h | 1.33h |
| 897 | 2.96 | **доп освещение зона охладитель** |  | 4.75d? | 2026-06-09 09:00 | 2026-06-15 16:00 |  | 100% |  | 2026-06-10 09:00 | 2026-08-06 11:00 |  |  |  | 12.67h | 12.67h |
| 898 | 2.96.1 | спланировать монтаж / проверить наличие матералов |  | 20min | 2026-06-25 09:00 A | 2026-06-25 09:20 A |  | 100% |  |  |  |  | start no earlier than 2026-06-25 09:00 | Шуранов Ю; Дедов В | 0.67h | 0.67h |
| 899 | 2.96.2 | заказать |  | 1d? | 2026-06-10 09:00 A | 2026-06-10 18:00 A |  | 100% |  |  |  |  | start no earlier than 2026-06-10 09:00 | Шуранов Ю | 8h | 8h |
| 900 | 2.96.3 | монтаж |  | 2h | 2026-08-06 09:00 A | 2026-08-06 11:00 A | 898 | 100% |  |  |  |  | start no earlier than 2026-08-06 09:00 | Тимофеев В; Бундин В | 4h | 4h |
| 901 | 2.97 | отключить двигатель зиплока бестром |  | 1h | 2026-06-12 09:00 A | 2026-06-12 10:00 A |  | 100% |  |  |  |  | start no earlier than 2026-06-12 09:00 | Бундин В | 1h | 1h |
| 902 | 2.98 | ж гардероб душ кабина осмотр гидрозатвор - сильный запах |  | 2h | 2026-05-30 09:00 A | 2026-06-01 11:00 A |  | 100% |  |  |  |  | start no earlier than 2026-05-30 09:00 | Бобренок В | 2h | 2h |
| 903 | 2.99 | ремонт кресло , паук находится на складе у Веры |  | 1h | 2026-06-13 09:00 A | 2026-06-15 10:00 A |  | 100% |  |  |  |  | start no earlier than 2026-06-13 09:00 | Бобренок В | 1h | 1h |
| 904 | 2.100 | ревизия нихром запайщик |  | 1h | 2026-05-29 09:00 A | 2026-05-29 10:00 A |  | 100% |  |  |  |  | start no earlier than 2026-05-29 08:00 | Бундин В | 1h | 1h |
| 905 | 2.101 | штабелер 2ц ревизия колес |  | 1h | 2026-06-01 09:00 A | 2026-06-01 10:00 A |  | 100% |  |  |  |  | start no earlier than 2026-06-01 09:00 | Макаревич А | 1h | 1h |
| 906 | 2.102 | **ремонт эл котел №3 охладитель** |  | 70.25d? | 2026-06-05 09:00 A | 2026-09-11 11:00 |  | 91% | 6.52d? |  |  | 128.34d |  |  | 24.25h | 22h |
| 907 | 2.102.1 | заказать плату |  | 1d? | 2026-07-15 09:00 A | 2026-07-15 18:00 A |  | 100% |  |  |  |  | start no earlier than 2026-07-15 09:00 | Зорькин В | 8h | 8h |
| 908 | 2.102.2 | замена силовой платы зота в районе мойки экструдера (плата на складе) -проверка | manual | 2h | 2026-08-09 09:00 A | 2026-08-09 11:00 A |  | 100% |  |  |  |  | start no earlier than 2026-08-09 09:00 | Бобренок В | 2h | 2h |
| 909 | 2.102.3 | котел №3 проверка платы силовой управления тенами (после откл управления перегрелся пошел дым) на складе есть платы 2 шт. для ЗОТА. Слава плату заменил грешит на д температуры |  | 2h | 2026-09-01 09:00 A | 2026-09-01 11:00 A |  | 100% |  |  |  |  | start no earlier than 2026-09-01 09:00 | Дедов В | 2h | 2h |
| 910 | 2.102.4 | Замена силовой платы, где сгорела 1 ТТР |  | 2h | 2026-08-31 08:00 A | 2026-08-31 11:00 A |  | 100% |  |  |  |  | start no earlier than 2026-08-31 08:00 | Дедов В | 2h | 2h |
| 911 | 2.102.5 | Не работает блок тенов, заказать |  | 10min | 2026-09-01 09:00 | 2026-09-01 09:10 |  |  |  |  |  | 136.57d | start no earlier than 2026-09-01 08:00 | Зорькин В | 0.17h |  |
| 912 | 2.102.6 | Контроль доставки |  | 5min | 2026-09-09 09:00 | 2026-09-09 09:05 |  |  |  |  |  | 130.58d | start no earlier than 2026-09-09 09:00 | Зорькин В | 0.08h |  |
| 913 | 2.102.7 | замена |  | 2h | 2026-09-11 09:00 | 2026-09-11 11:00 |  |  |  |  |  | 128.34d | start no earlier than 2026-09-11 09:00 | Дедов В | 2h |  |
| 914 | 2.102.8 | заказать плату управления |  | 1d? | 2026-06-05 09:00 A | 2026-06-05 18:00 A |  | 100% |  |  |  |  | start no earlier than 2026-06-05 09:00 | Зорькин В | 8h | 8h |
| 915 | 2.103 | замена задних подшипников на прекондиционере (посмотреть итальянские на складе) |  | 6h | 2026-05-26 09:00 A | 2026-05-26 16:00 A |  | 100% |  |  |  |  | start no earlier than 2026-05-26 09:00 | Тимофеев В; Некрасов А | 12h | 12h |
| 916 | 2.104 | перемотать трубы скотчем серым и по низу стык улиток "загерметизировать" |  | 2h | 2026-05-25 08:00 A | 2026-05-25 11:00 A |  | 100% |  |  |  |  | start no earlier than 2026-05-25 08:00 | Макаревич А | 2h | 2h |

| ID | WBS | Task | Type | Duration | Start | Finish | Complete | Actual finish | Constraint | Resources | Work | Actual work |
| --- | --- | --- | --- | --- | --- | --- | --- | --- | --- | --- | --- | --- |
| 917 | 2.105 | **изготовить мойка малая из нерж** |  | 0.5d | 2026-06-01 08:00 A | 2026-06-01 13:00 A | 100% |  |  | Макаревич А | 8h | 8h |
| 918 | 2.105.1 | подключить мойку на месте (по телефону обсудим) |  | 4h | 2026-06-01 08:00 A | 2026-06-01 13:00 A | 100% |  | start no earlier than 2026-06-01 08:00 | Макаревич А | 4h | 4h |
| 919 | 2.106 | **дополнительное освещение в зоне жиров** |  | 6.5d | 2026-05-26 09:00 A | 2026-06-01 13:00 | 100% | 2026-06-04 09:30 |  |  | 5h | 5h |
| 920 | 2.106.1 | заказ светильников |  | 1h | 2026-05-26 09:00 A | 2026-05-26 10:00 A | 100% |  | start no earlier than 2026-05-26 09:00 | Шуранов Ю | 1h | 1h |
| 921 | 2.106.2 | монтаж |  | 4h | 2026-06-01 09:00 A | 2026-06-01 13:00 A | 100% |  | start no earlier than 2026-06-01 09:00 | Макаревич А | 4h | 4h |
| 922 | 2.106.3 | подключить к автомату на мойке |  | 0.5h | 2026-06-04 09:00 A | 2026-06-04 09:30 A | 100% |  | start no earlier than 2026-06-04 09:00 |  |  |  |
| 923 | 2.107 | подключить пк мастеров через ИБП (согласовать с мастером 1 цеха) |  | 1h | 2026-05-25 09:00 A | 2026-05-25 10:00 A | 100% |  | start no earlier than 2026-05-25 08:00 | Шуранов Ю | 1h | 1h |
| 924 | 2.108 | заменить помпу на термопоте в кухне |  | 1h | 2026-05-27 09:00 A | 2026-05-27 10:00 A | 100% |  | start no earlier than 2026-05-27 09:00 | Дедов В | 1h | 1h |
| 925 | 2.109 | лопнул шланг от насосной станции до редуктора- заменить |  | 1h | 2026-05-25 08:00 A | 2026-05-25 10:00 A | 100% |  | start no earlier than 2026-05-25 08:00 | Макаревич А | 1h | 1h |
| 926 | 2.110 | установить влагоотделитель на квадропак |  | 1h | 2026-05-25 08:00 A | 2026-05-25 10:00 A | 100% |  | start no earlier than 2026-05-25 08:00 | Дедов В | 1h | 1h |
| 927 | 2.111 | закрепить монтажную коробку в коридоре до жировика слева, от кондиционера |  | 1h | 2026-05-22 09:00 A | 2026-05-22 10:00 A | 100% |  | start no earlier than 2026-05-22 09:00 | Бобренок В | 1h | 1h |
| 928 | 2.112 | закрепить на доп. Клипсы трубу-воздух к стене за бестромом |  | 1h | 2026-05-23 09:00 A | 2026-05-25 10:00 A | 100% |  | start no earlier than 2026-05-23 09:00 | Бобренок В | 1h | 1h |
| 929 | 2.113 | заменить сетку печки (находиться в слесарке) | manual | 3h | 2026-05-24 09:00 A | 2026-05-24 12:00 A | 100% |  | start no earlier than 2026-05-24 09:00 | Макаревич А | 3h | 3h |
| 930 | 2.114 | уложить красиво и закрепить гофру от нории до красного смесителя | manual | 2h | 2026-05-24 09:00 A | 2026-05-24 11:00 A | 100% |  | start no earlier than 2026-05-24 09:00 | Макаревич А | 2h | 2h |
| 931 | 2.115 | взять ножевой узел с желтого склада и фильеры, подготовить и передать во второй цех на экструдер |  | 1h | 2026-05-21 09:00 A | 2026-05-21 10:00 A | 100% |  | start no earlier than 2026-05-21 08:00 | Бундин В | 1h | 1h |
| 932 | 2.116 | проверить все лотки на охладителе, чтобы не задевали сетку- если нужно поднять. |  | 1h | 2026-05-21 09:00 A | 2026-05-21 10:00 A | 100% |  | start no earlier than 2026-05-21 08:00 | Бундин В | 1h | 1h |
| 933 | 2.117 | чистка парогенератора, если нужно замена электродов |  | 2h | 2026-05-21 08:00 A | 2026-05-21 11:00 A | 100% |  | start no earlier than 2026-05-21 08:00 | Тимофеев В | 2h | 2h |
| 934 | 2.118 | чистка фильтра редуктора экструдера, проверка уровня масла |  | 1h | 2026-05-21 08:00 A | 2026-05-21 10:00 A | 100% |  | start no earlier than 2026-05-21 08:00 | Тимофеев В | 1h | 1h |
| 935 | 2.119 | проверить пневмоцилиндры на встряхивателях квадропака |  | 1h | 2026-05-21 08:00 A | 2026-05-21 10:00 A | 100% |  | start no earlier than 2026-05-21 08:00 | Бобренок В | 1h | 1h |
| 936 | 2.120 | проверка токов на печи, если просадка проверяем перемычки, тены |  | 1h | 2026-05-21 09:00 A | 2026-05-21 10:00 A | 100% |  | start no earlier than 2026-05-21 08:00 | Некрасов А | 1h | 1h |
| 937 | 2.121 | коротит на баке жиров все проверить |  | 1h | 2026-05-21 09:00 A | 2026-05-21 10:00 A | 100% |  | start no earlier than 2026-05-21 08:00 |  |  |  |
| 938 | 2.122 | в зоне фасовки сделать конструкцию, чтобы не выпадала макулатура |  | 6h | 2026-08-31 09:00 A | 2026-08-31 16:00 A | 100% |  | start no earlier than 2026-08-31 09:00 | Макаревич А | 6h | 6h |
| 939 | 2.123 | закрепить доводчик на входной двери |  | 1h | 2026-05-23 09:00 A | 2026-05-25 10:00 A | 100% |  | start no earlier than 2026-05-23 09:00 | Бундин В | 1h | 1h |
| 940 | 2.124 | установить розетку для палетооботчика на его колону |  | 2h | 2026-05-18 09:00 A | 2026-05-18 11:00 A | 100% |  | start no earlier than 2026-05-18 09:00 | Дедов В | 2h | 2h |

| ID | WBS | Task | Type | Duration | Start | Finish | Predecessors | Complete | Constraint | Resources | Work | Actual work |
| --- | --- | --- | --- | --- | --- | --- | --- | --- | --- | --- | --- | --- |
| 941 | 2.125 | **ИБП установить на принтер SAVEMA** |  | 5.25d | 2026-05-19 09:00 A | 2026-05-26 11:00 A |  | 100% |  |  | 3.25h | 3.25h |
| 942 | 2.125.1 | подбор и заявка ИБП |  | 1h | 2026-05-19 09:00 A | 2026-05-19 10:00 A |  | 100% | start no earlier than 2026-05-19 09:00 | Шуранов Ю | 1h | 1h |
| 943 | 2.125.2 | контроль поставки |  | 15min | 2026-05-26 09:00 A | 2026-05-26 09:15 A |  | 100% | start no earlier than 2026-05-26 09:00 | Шуранов Ю | 0.25h | 0.25h |
| 944 | 2.125.3 | монтаж и подключение в шкафу | manual | 2h | 2026-05-26 09:00 A | 2026-05-26 11:00 A | 943 | 100% | start no earlier than 2026-05-26 09:00 | Дедов В | 2h | 2h |
| 945 | 2.126 | **переместить на склад ЗИП палет сетка, зарядка АКБ штабелера** |  | 0.12d | 2026-06-01 09:00 A | 2026-06-01 10:00 A |  | 100% |  |  | 1h | 1h |
| 946 | 2.126.1 | зарядку АКБ переместить в контейнер, она находится в мойке зона экструдера | manual | 1h | 2026-06-01 09:00 A | 2026-06-01 10:00 A |  | 100% | start no earlier than 2026-06-01 09:00 | Макаревич А | 1h | 1h |
| 947 | 2.127 | **бестром замена линейный подшипник прижима красных ремней** |  | 24.5d | 2026-05-15 09:00 A | 2026-06-18 13:00 A |  | 100% |  |  | 5.25h | 5.25h |
| 948 | 2.127.1 | заявка |  | 1h | 2026-05-15 09:00 A | 2026-05-15 10:00 A |  | 100% | start no earlier than 2026-05-15 09:00 | Зорькин В | 1h | 1h |
| 949 | 2.127.2 | доставка контроль |  | 15min | 2026-05-27 10:00 A | 2026-05-27 10:15 A | 948FS+10d | 100% | start no earlier than 2026-05-14 08:00 | Зорькин В | 0.25h | 0.25h |
| 950 | 2.127.3 | замена |  | 4h | 2026-06-18 09:00 A | 2026-06-18 13:00 A | 949 | 100% | start no earlier than 2026-06-18 09:00 | Тимофеев В | 4h | 4h |
| 951 | 2.128 | осмотр цепи муфты редуктора экструдера |  | 1h | 2026-05-14 09:00 A | 2026-05-14 10:00 A |  | 100% | start no earlier than 2026-05-14 09:00 | Тимофеев В | 1h | 1h |
| 952 | 2.129 | Линия 3 на жирах нужно поменять колеса на транспортёре, который идет на охладитель |  | 1h | 2026-05-14 09:00 A | 2026-05-14 10:00 A |  | 100% | start no earlier than 2026-05-14 09:00 | Макаревич А | 1h | 1h |
| 953 | 2.130 | осмотр прекондиционер "звон" |  | 30min | 2026-05-14 09:00 A | 2026-05-14 09:30 A |  | 100% | start no earlier than 2026-05-14 09:00 | Тимофеев В | 0.5h | 0.5h |
| 954 | 2.131 | **заменить гофра унитаз правый отсек** |  | 16.12d | 2026-05-13 09:00 A | 2026-06-04 10:00 A |  | 100% |  |  | 41.25h | 41.25h |
| 955 | 2.131.1 | заявка гофра |  | 15min | 2026-05-13 09:00 A | 2026-05-13 09:15 A |  | 100% | start no earlier than 2026-05-13 09:00 | Зорькин В | 0.25h | 0.25h |
| 956 | 2.131.2 | доставка |  | 5d | 2026-05-13 09:15 A | 2026-05-20 09:15 A | 955 | 100% | start no earlier than 2026-05-12 08:00 | Карабанов | 40h | 40h |
| 957 | 2.131.3 | замена |  | 1h | 2026-06-04 09:00 A | 2026-06-04 10:00 A | 956 | 100% | start no earlier than 2026-06-04 09:00 | Бобренок В | 1h | 1h |
| 958 | 2.132 | замена смазка шприц на экструдере |  | 30min | 2026-05-13 09:00 A | 2026-05-13 09:30 A |  | 100% | start no earlier than 2026-05-13 09:00 | Некрасов А | 0.5h | 0.5h |
| 959 | 2.133 | замена передний подшипник + набивка прекондиционер |  | 1h | 2026-05-14 09:00 A | 2026-05-14 10:00 A |  | 100% | start no earlier than 2026-05-14 09:00 | Тимофеев В | 1h | 1h |
| 960 | 2.134 | прикрутить лоток выше на 1 ярусе, задевает сетку со сторону редуктора |  | 1h | 2026-05-08 08:00 A | 2026-05-08 10:00 A |  | 100% | start no earlier than 2026-05-08 08:00 | Макаревич А | 1h | 1h |
| 961 | 2.135 | взять шайбу у нас в кабинете и шлифануть одну сторону |  | 1h | 2026-05-08 09:00 A | 2026-05-08 10:00 A |  | 100% | start no earlier than 2026-05-08 09:00 | Макаревич А | 1h | 1h |
| 962 | 2.136 | смотровое окно на загрузке прекондиционера установить |  | 4h | 2026-08-25 09:00 A | 2026-08-25 13:00 A |  | 100% | start no earlier than 2026-08-31 09:00 | Тимофеев В | 4h | 4h |
| 963 | 2.137 | добавить воду в систему отопления зота охладитель |  | 1h | 2026-05-09 09:00 A | 2026-05-11 10:00 A |  | 100% | start no earlier than 2026-05-09 09:00 | Макаревич А | 1h | 1h |
| 964 | 2.138 | монтаж сетки на палетообмотчике | manual | 4h | 2026-05-14 09:00 A | 2026-05-14 13:00 A |  | 100% | start no earlier than 2026-05-14 09:00 | Некрасов А; Труфанов А | 8h | 8h |
| 965 | 2.139 | Собрать стул, находится в кабинете мастеров 2 цех |  | 1h | 2026-05-13 09:00 A | 2026-05-13 10:00 A |  | 100% | start no earlier than 2026-05-13 09:00 | Бундин В | 1h | 1h |

| ID | WBS | Task | Type | Duration | Start | Finish | Complete | Actual start | Actual finish | Constraint | Resources | Work | Actual work |
| --- | --- | --- | --- | --- | --- | --- | --- | --- | --- | --- | --- | --- | --- |
| 966 | 2.140 | **взять у нас на складе инсектицидные светильники и повесить их во 2 цехе, где нет** |  | 1.12d | 2026-05-12 09:00 A | 2026-05-13 10:00 A | 100% |  |  |  |  | 3h | 3h |
| 967 | 2.140.1 | ремонт |  | 2h | 2026-05-12 09:00 A | 2026-05-12 11:00 A | 100% |  |  | start no earlier than 2026-05-12 09:00 | Бундин В | 2h | 2h |
| 968 | 2.140.2 | монтаж ламп / заполнить в журнал мастера |  | 1h | 2026-05-13 09:00 A | 2026-05-13 10:00 A | 100% |  |  | start no earlier than 2026-05-13 09:00 | Бундин В | 1h | 1h |
| 969 | 2.141 | герметиком замазать гофру на унитазах (запах) | manual | 1h | 2026-05-07 08:00 A | 2026-05-07 09:00 A | 100% |  |  | start no earlier than 2026-05-07 08:00 | Бобренок В | 1h | 1h |
| 970 | 2.142 | заменить фильтр на приточку 2 этаж |  | 1h | 2026-05-07 08:00 A | 2026-05-07 10:00 A | 100% |  |  | start no earlier than 2026-05-07 08:00 | Тимофеев В | 1h | 1h |
| 971 | 2.143 | ревизия перемычек, тен на печи - замена |  | 4h | 2026-05-07 09:00 A | 2026-05-07 13:00 A | 100% |  |  | start no earlier than 2026-05-07 08:00 | Труфанов А | 4h | 4h |
| 972 | 2.144 | **повесить на места светильники инсектицидные (замена ламп)** |  | 1d? | 2026-05-11 09:00 | 2026-05-11 18:00 | 100% | 2026-05-12 09:00 | 2026-05-12 11:00 |  |  | 2h | 2h |
| 973 | 2.144.1 | **заказать досели** |  | 0.25d | 2026-05-12 09:00 A | 2026-05-12 11:00 A | 100% |  |  |  |  | 2h | 2h |
| 974 | 2.144.1.1 | ремонт не рабочих светильников |  | 2h | 2026-05-12 09:00 A | 2026-05-12 11:00 A | 100% |  |  | start no earlier than 2026-05-12 09:00 | Бундин В | 2h | 2h |
| 975 | 2.145 | уложить кабель в гофре вдоль экструдера в лоток |  | 2h | 2026-05-04 09:00 A | 2026-05-04 11:00 A | 100% |  |  | start no earlier than 2026-05-04 08:00 | Бундин В | 2h | 2h |
| 976 | 2.146 | **подготовить ТРМ для парогенератора цех 2** |  | 0d | 2026-05-16 09:00 A | 2026-05-16 10:00 A | 100% |  |  |  | Дедов В | 1h | 1h |
| 977 | 2.146.1 | установить на остановке ТРМ (который сняли отдать Дедову для восстановления) восстановить кнопку | manual | 1h | 2026-05-16 09:00 A | 2026-05-16 10:00 A | 100% |  |  | start no earlier than 2026-05-16 09:00 | Дедов В | 1h | 1h |
| 978 | 2.147 | повесить светильники 3шт. |  | 1h | 2026-05-04 09:00 A | 2026-05-04 10:00 A | 100% |  |  | start no earlier than 2026-05-04 08:00 | Труфанов А | 1h | 1h |
| 979 | 2.148 | монтаж свет на фасовке |  | 8h | 2026-05-05 09:00 A | 2026-05-05 18:00 A | 100% |  |  | start no earlier than 2026-05-05 09:00 | Тимофеев В; Труфанов А | 15h | 15h |
| 980 | 2.149 | заменить кулер в ШУ на жирах |  | 1h | 2026-04-29 08:00 A | 2026-04-29 10:00 A | 100% |  |  | start no earlier than 2026-04-29 08:00 | Дедов В | 1h | 1h |
| 981 | 2.150 | заменить 3х ходовой кран и фитинги с гайкой на жирах |  | 1h | 2026-04-29 09:00 A | 2026-04-29 10:00 A | 100% |  |  | start no earlier than 2026-04-30 09:00 | Дедов В | 1h | 1h |
| 982 | 2.151 | закрепить на подножке резинку на штабелере зона экструдера (можно на саморез/клепки) |  | 1h | 2026-04-29 08:00 A | 2026-04-29 10:00 A | 100% |  |  | start no earlier than 2026-04-29 08:00 | Дедов В | 1h | 1h |
| 983 | 2.152 | **заменить сетку для печи из зип** |  | 0.38d | 2026-05-05 09:00 A | 2026-05-05 12:00 A | 100% |  |  |  |  | 5h | 5h |
| 984 | 2.152.1 | **заменить сетку , которую сняли с печи** |  | 3h | 2026-05-05 09:00 A | 2026-05-05 12:00 A | 100% |  |  |  | Бундин В | 5h | 5h |
| 985 | 2.152.1.1 | ремонт сетки |  | 2h | 2026-05-05 09:00 A | 2026-05-05 11:00 A | 100% |  |  | start no earlier than 2026-05-05 09:00 | Бобренок В | 2h | 2h |
| 986 | 2.153 | под норией сыпит сырье устранить |  | 4h | 2026-04-30 09:00 A | 2026-04-30 13:00 A | 100% |  |  | start no earlier than 2026-04-30 09:00 | Труфанов А; Некрасов А | 8h | 8h |
| 987 | 2.154 | устранить течь, сброс пара под прекондиционером |  | 1h | 2026-05-01 09:00 A | 2026-05-01 10:00 A | 100% |  |  | start no earlier than 2026-05-01 09:00 | Дедов В | 1h | 1h |
| 988 | 2.155 | устранить течь редуктор прекондиционера |  | 5h | 2026-04-29 09:00 A | 2026-04-29 15:00 A | 100% |  |  | start no earlier than 2026-04-29 08:00 | Некрасов А; Труфанов А | 10h | 10h |
| 989 | 2.156 | почистить фильтр на поломоечной машинке |  | 1h | 2026-04-29 09:00 A | 2026-04-29 10:00 A | 100% |  |  | start no earlier than 2026-04-29 09:00 | Тимофеев В | 1h | 1h |
| 990 | 2.157 | Полное ТО квадропак (чистка тен, смазка штоков пневмоцилиндров, шприцевание подшипников) |  | 3h | 2026-04-28 09:00 A | 2026-04-28 12:00 A | 100% |  |  | start no earlier than 2026-04-28 09:00 | Тимофеев В | 3h | 3h |
| 991 | 2.158 | Полное ТО бестром (чистка тен, смазка штоков пневмоцилиндров, шприцевание подшипников) |  | 2h | 2026-04-28 09:00 A | 2026-04-28 11:00 A | 100% |  |  | start no earlier than 2026-04-28 09:00 | Тимофеев В | 2h | 2h |
| 992 | 2.159 | демонтаж инсектютерной ламп на очистку / продуть |  | 1h | 2026-04-27 08:00 A | 2026-04-27 10:00 A | 100% |  |  | start no earlier than 2026-04-27 08:00 | Тимофеев В | 1h | 1h |
| 993 | 2.160 | ремонт инсектецидных ламп взять у Мастера в каб. (проверить контакты соединения самих лам, дросели). 3 исправно/1 сломан дросель |  | 1h | 2026-04-29 09:00 A | 2026-04-29 10:00 A | 100% |  |  | start no earlier than 2026-04-29 09:00 | Дедов В | 1h | 1h |

| ID | WBS | Task | Type | Duration | Start | Finish | Predecessors | Complete | Remaining | Actual start | Total slack | Constraint | Resources | Work | Actual work |
| --- | --- | --- | --- | --- | --- | --- | --- | --- | --- | --- | --- | --- | --- | --- | --- |
| 994 | 2.161 | **замена дроселя инсекцидной лампы** |  | 17.38d | 2026-04-30 09:00 A | 2026-05-25 12:00 A |  | 100% |  |  |  |  |  | 84.25h | 84.25h |
| 995 | 2.161.1 | заявка |  | 15min | 2026-04-30 09:00 A | 2026-04-30 09:15 A |  | 100% |  |  |  | start no earlier than 2026-04-30 08:00 | Шуранов Ю | 0.25h | 0.25h |
| 996 | 2.161.2 | замена |  | 3h | 2026-05-25 08:00 A | 2026-05-25 12:00 A |  | 100% |  |  |  | start no earlier than 2026-05-25 08:00 | Дедов В | 3h | 3h |
| 997 | 2.161.3 | доставка |  | 10d | 2026-05-04 09:00 A | 2026-05-18 18:00 A | 995 | 100% |  |  |  | start no earlier than 2026-05-04 09:00 | Карабанов | 80h | 80h |
| 998 | 2.161.4 | замена |  | 1h | 2026-05-12 09:00 A | 2026-05-12 10:00 A |  | 100% |  |  |  | start no earlier than 2026-05-12 09:00 | Бундин В | 1h | 1h |
| 999 | 2.162 | поликарбанат в зоне седла жировика оторвался, ремонт |  | 1h | 2026-04-30 09:00 A | 2026-04-30 10:00 A |  | 100% |  |  |  | start no earlier than 2026-04-30 09:00 | Бундин В | 1h | 1h |
| 1000 | 2.163 | зачистить и покрасить решетку на входе в 2 ц. |  | 4h | 2026-04-28 09:00 A | 2026-04-28 13:00 A |  | 100% |  |  |  | start no earlier than 2026-04-28 09:00 | Дворник | 4h | 4h |
| 1001 | 2.164 | поднять лотки на 10 мм на охладителе со стороны фасовки (видео вышлю) |  | 1h | 2026-04-24 09:00 A | 2026-04-24 10:00 A |  | 100% |  |  |  | start no earlier than 2026-04-24 08:00 | Бундин В | 1h | 1h |
| 1002 | 2.165 | добавить в систему отопления котла в мойке и в охладителе воды | manual | 2h | 2026-04-24 09:00 A | 2026-04-24 11:00 A |  | 100% |  |  |  | start no earlier than 2026-04-24 09:00 | Бундин В | 2h | 2h |
| 1003 | 2.166 | на углы установить отбойники выход с зоны экструдера |  | 2h | 2026-04-23 09:00 A | 2026-04-23 11:00 A |  | 100% |  |  |  | start no earlier than 2026-04-23 08:00 | Бундин В | 2h | 2h |
| 1004 | 2.167 | сделать ТО Бестром (чистка тен и т.д.) |  | 2h | 2026-04-22 08:00 A | 2026-04-22 11:00 A |  | 100% |  |  |  | start no earlier than 2026-04-22 08:00 | Дедов В | 2h | 2h |
| 1005 | 2.168 | собрать кабинку в мужской раздевалке, она там стоит в коробке |  | 1h | 2026-04-23 09:00 A | 2026-04-23 10:00 A |  | 100% |  |  |  | start no earlier than 2026-04-23 09:00 | Дедов В | 1h | 1h |
| 1006 | 2.169 | заменить датчик переполнения на загрузке с синего бункера, на складе взять |  | 1h | 2026-04-29 09:00 A | 2026-04-29 10:00 A |  | 100% |  |  |  | start no earlier than 2026-04-29 09:00 | Дедов В | 1h | 1h |
| 1007 | 2.170 | **включить все исектицидные светильники по цеху, проверить есть ли напряжение в розетках** |  | 0.12d | 2026-04-23 09:00 A | 2026-04-23 10:00 A |  | 100% |  |  |  |  | Дедов В | 2h | 2h |
| 1008 | 2.170.1 | проверить напряжение в розетке светильника на фасовке |  | 1h | 2026-04-23 09:00 A | 2026-04-23 10:00 A |  | 100% |  |  |  | start no earlier than 2026-04-23 08:00 | Бундин В | 1h | 1h |
| 1009 | 2.171 | **установить кольцо "вентури" в фильеру** |  | 2.38d? | 2026-05-04 09:00 | 2026-05-06 12:00 |  | 78% | 0.53d? | 2026-04-27 09:00 |  |  |  | 4.5h | 3.5h |
| 1010 | 2.171.1 | определить диаметр отверстия кольца |  | 1h | 2026-04-27 09:00 A | 2026-04-27 10:00 A |  | 100% |  |  |  | start no earlier than 2026-04-27 09:00 | Зорькин В | 1h | 1h |
| 1011 | 2.171.2 | заявка на изготовление |  | 1h | 2026-04-28 10:00 A | 2026-04-28 11:00 A | 1010FS+1d | 100% |  |  |  | start no earlier than 2026-04-20 08:00 | Зорькин В | 1h | 1h |
| 1012 | 2.171.3 | контроль |  | 1h | 2026-05-04 09:00 A | 2026-05-04 10:00 A | 1011FS+1d | 100% |  |  |  | start no earlier than 2026-05-04 09:00 | Зорькин В | 1h | 1h |
| 1013 | 2.171.4 | заявка на выжечь проставку лдя кольца |  | 30min | 2026-07-15 09:00 A | 2026-07-15 09:30 A |  | 100% |  |  |  | start no earlier than 2026-07-15 09:00 | Зорькин В | 0.5h | 0.5h |
| 1014 | 2.171.5 | контроль доставки | milestone | 0d | 2026-07-22 09:30 A | 2026-07-22 09:30 A | 1013FS+5d | 100% |  |  |  | start no earlier than 2026-07-15 09:00 | Зорькин В |  |  |
| 1015 | 2.171.6 | провести тест |  | 1h | 2026-08-31 09:00 | 2026-08-31 10:00 |  |  |  |  | 137.47d | start no earlier than 2026-08-31 09:00 | Зорькин В | 1h |  |
| 1016 | 2.172 | замена фильтр вода подача в накопитель |  | 1h | 2026-04-21 09:00 A | 2026-04-21 10:00 A |  | 100% |  |  |  | start no earlier than 2026-04-21 09:00 | Тимофеев В | 1h | 1h |
| 1017 | 2.173 | замена потускневших ламп в инсекютере. Мастеру сообщить кол-во. б/у складывать в коробку |  | 2h | 2026-05-04 09:00 A | 2026-05-04 11:00 A |  | 100% |  |  |  | start no earlier than 2026-05-04 09:00 | Макаревич А | 2h | 2h |

| ID | WBS | Task | Type | Duration | Start | Finish | Predecessors | Complete | Remaining | Actual start | Total slack | Constraint | Resources | Work | Actual work |
| --- | --- | --- | --- | --- | --- | --- | --- | --- | --- | --- | --- | --- | --- | --- | --- |
| 1018 | 2.174 | **ограждение палетообмотчика** |  | 19.25d | 2026-04-17 08:00 A | 2026-05-14 11:00 A |  | 100% |  |  |  |  |  | 190.5h | 190.5h |
| 1019 | 2.174.1 | **подготовка и монтаж рамы** |  | 6.75d | 2026-04-17 08:00 A | 2026-04-27 16:00 A |  | 100% |  |  |  |  |  | 24h | 24h |
| 1020 | 2.174.1.1 | изготовить ограждения для палетообмотчика (размеры обговорим) |  | 10h | 2026-04-17 08:00 A | 2026-04-20 11:00 A |  | 100% |  |  |  | start no earlier than 2026-04-17 08:00 | Макаревич А | 10h | 10h |
| 1021 | 2.174.1.2 | очистка, покраска рам ограждения. Быстросохн грунт-эмаль по ржавчине 3в1. |  | 4h | 2026-04-20 08:00 A | 2026-04-20 13:00 A |  | 100% |  |  |  | start no earlier than 2026-04-20 08:00 | Макаревич А | 4h | 4h |
| 1022 | 2.174.1.3 | монтаж рамы ограждения |  | 4h | 2026-04-27 09:00 A | 2026-04-27 13:00 A | 1021 | 100% |  |  |  | start no earlier than 2026-04-27 09:00 | Тимофеев В | 4h | 4h |
| 1023 | 2.174.1.4 | приварить пластины под стойки ограждения и закрепить к полу, чтобы оператор был вне зоны опасности) |  | 6h | 2026-04-25 09:00 A | 2026-04-27 16:00 A |  | 100% |  |  |  | start no earlier than 2026-04-25 09:00 | Макаревич А | 6h | 6h |
| 1024 | 2.174.2 | **обклеить рамы лентой** |  | 17.25d | 2026-04-21 09:00 A | 2026-05-14 11:00 A |  | 100% |  |  |  |  |  | 82.25h | 82.25h |
| 1025 | 2.174.2.1 | заявка клейка лента сигнальная черно-желтая / негабарит |  | 15min | 2026-04-21 09:00 A | 2026-04-21 09:15 A |  | 100% |  |  |  | start no earlier than 2026-04-21 09:00 | Зорькин В | 0.25h | 0.25h |
| 1026 | 2.174.2.2 | доставка |  | 10d | 2026-04-21 09:15 A | 2026-05-05 09:15 A | 1025 | 100% |  |  |  | start no earlier than 2026-04-20 08:00 | Карабанов | 80h | 80h |
| 1027 | 2.174.2.3 | монтаж ленты черно-желтой |  | 2h | 2026-05-14 09:00 A | 2026-05-14 11:00 A | 1026 | 100% |  |  |  | start no earlier than 2026-05-14 09:00 | Бобренок В | 2h | 2h |
| 1028 | 2.174.3 | **монтаж сетки на раму** |  | 10.03d | 2026-04-21 09:00 A | 2026-05-05 09:15 A |  | 100% |  |  |  |  |  | 84.25h | 84.25h |
| 1029 | 2.174.3.1 | заявка сетка для ограждения |  | 15min | 2026-04-21 09:00 A | 2026-04-21 09:15 A |  | 100% |  |  |  | start no earlier than 2026-04-21 09:00 | Зорькин В | 0.25h | 0.25h |
| 1030 | 2.174.3.2 | доставка сетка |  | 10d | 2026-04-21 09:15 A | 2026-05-05 09:15 A | 1029 | 100% |  |  |  | start no earlier than 2026-04-20 08:00 | Карабанов | 80h | 80h |
| 1031 | 2.174.3.3 | монтаж сетка |  | 4h | 2026-05-04 09:15 A | 2026-05-04 14:15 A | 1030 | 100% |  |  |  | start no earlier than 2026-04-20 08:00 | Некрасов А | 4h | 4h |
| 1032 | 2.175 | воздухозабоник циклона отпилить и вернуть как было раньше |  | 1h | 2026-04-28 09:00 A | 2026-04-28 10:00 A |  | 100% |  |  |  | start no earlier than 2026-04-28 09:00 | Тимофеев В | 1h | 1h |
| 1033 | 2.176 | проверка всех гидроаккумуляторов парогенератор, в вент комнате и отопительные |  | 2h | 2026-04-17 09:00 A | 2026-04-17 11:00 A |  | 100% |  |  |  | start no earlier than 2026-04-17 08:00 |  |  |  |
| 1034 | 2.177 | сборка полетообмотчика на фасовке |  | 1h | 2026-04-16 09:00 A | 2026-04-16 10:00 A |  | 100% |  |  |  | start no earlier than 2026-04-16 09:00 | Бобренок В | 1h | 1h |
| 1035 | 2.178 | заменить ремень на охладителе |  | 1h | 2026-04-15 09:00 A | 2026-04-15 10:00 A |  | 100% |  |  |  | start no earlier than 2026-04-15 08:00 | Некрасов А | 1h | 1h |
| 1036 | 2.179 | оторвался контроллер мониторинга на ШУ экструдера |  | 1h | 2026-04-15 09:00 A | 2026-04-15 10:00 A |  | 100% |  |  |  | start no earlier than 2026-04-15 08:00 | Некрасов А | 1h | 1h |
| 1037 | 2.180 | **сделать горловину на быстросъемах прекондиционер** |  | 3.88d? | 2026-04-16 09:00 | 2026-04-21 17:00 |  | 50% | 1.94d? | 2026-08-20 09:00 |  |  |  | 16h | 8h |
| 1038 | 2.180.1 | заказать защелки |  | 1d? | 2026-08-31 09:00 | 2026-08-31 18:00 |  |  |  |  | 136.59d | start no earlier than 2026-08-31 09:00 | Шуранов Ю | 8h |  |
| 1039 | 2.180.2 | установка |  | 1d? | 2026-08-20 09:00 A | 2026-08-20 18:00 A |  | 100% |  |  |  | start no earlier than 2026-09-02 09:00 | Тимофеев В | 8h | 8h |
| 1040 | 2.181 | перенести светильник квадропака (на край мезонина) |  | 2h | 2026-04-13 09:00 A | 2026-04-13 11:00 A |  | 100% |  |  |  | start no earlier than 2026-04-13 09:00 | Труфанов А | 2h | 2h |
| 1041 | 2.182 | сделать или мусоросборник на лотке выхода экструдера, или обратный лоток в сторону охдадителя (обсудим по телефону) |  | 4h | 2026-08-31 09:00 A | 2026-08-31 13:00 A |  | 100% |  |  |  | start no earlier than 2026-08-31 09:00 | Макаревич А | 4h | 4h |
| 1042 | 2.183 | слить конденсат с компрессора, продуть радиаторы, чистка фильтров | manual | 2h | 2026-04-12 09:00 A | 2026-04-12 11:00 A |  | 100% |  |  |  | start no earlier than 2026-04-12 09:00 | Труфанов А | 2h | 2h |
| 1043 | 2.184 | добавить в систему отопления воды (зона экструдера, вход в мойку) | manual | 2h | 2026-04-12 09:00 A | 2026-04-12 11:00 A |  | 100% |  |  |  | start no earlier than 2026-04-12 09:00 | Труфанов А | 2h | 2h |
| 1044 | 2.185 | починить стул Шелепову (выстучать середину и посадить на хомут) |  | 1h | 2026-04-11 09:00 A | 2026-04-13 10:00 A |  | 100% |  |  |  | start no earlier than 2026-04-11 09:00 | Труфанов А | 1h | 1h |
| 1045 | 2.186 | не работает вентилятор третий справа, плохой контакт- прикрутить |  | 1h | 2026-04-10 08:00 A | 2026-04-10 10:00 A |  | 100% |  |  |  | start no earlier than 2026-04-10 08:00 | Бобренок В | 1h | 1h |
| 1046 | 2.187 | взять канистру со склада и сделать подачу снизу, взять сгон с канистры 2 линии (канистру я видел в гидрализатной 1 ц.) |  | 1h | 2026-04-26 09:00 A | 2026-04-27 10:00 A |  | 100% |  |  |  | start no earlier than 2026-04-26 09:00 | Макаревич А | 1h | 1h |
| 1047 | 2.188 | сделать лоток под канистру рыбий жир - подача в прекондиционер |  | 3h | 2026-04-11 09:00 A | 2026-04-13 12:00 A |  | 100% |  |  |  | start no earlier than 2026-04-11 09:00 | Макаревич А | 3h | 3h |
| 1048 | 2.189 | перескочила цепь на 2ом ярусе охладителя -поправить |  | 1h | 2026-04-10 08:00 A | 2026-04-10 10:00 A |  | 100% |  |  |  | start no earlier than 2026-04-10 08:00 | Макаревич А | 1h | 1h |

| ID | WBS | Task | Type | Duration | Start | Finish | Predecessors | Complete | Remaining | Total slack | Constraint | Resources | Work | Actual work |
| --- | --- | --- | --- | --- | --- | --- | --- | --- | --- | --- | --- | --- | --- | --- |
| 1049 | 2.190 | **установка фосунок - подача жира 2 линия** |  | 5d | 2026-04-24 09:00 A | 2026-04-30 18:00 A |  | 100% |  |  |  |  | 8.42h | 8.42h |
| 1050 | 2.190.1 | заявка краны 1/2 |  | 15min | 2026-04-24 09:00 A | 2026-04-24 09:15 A |  | 100% |  |  | start no earlier than 2026-04-24 08:00 | Зорькин В | 0.25h | 0.25h |
| 1051 | 2.190.2 | доставка контроль |  | 10min | 2026-04-30 09:15 A | 2026-04-30 09:25 A | 1050FS+5d | 100% |  |  | start no earlier than 2026-04-24 08:00 | Зорькин В | 0.17h | 0.17h |
| 1052 | 2.190.3 | сборка кронштейн для фильтров + счетчик |  | 4h | 2026-04-30 09:25 A | 2026-04-30 14:25 A | 1051 | 100% |  |  | start no earlier than 2026-04-24 08:00 | Тимофеев В | 4h | 4h |
| 1053 | 2.190.4 | монтаж на линию фильтры + кронштейн + форсунка |  | 4h | 2026-04-30 13:25 A | 2026-04-30 18:00 A | 1052 | 100% |  |  | start no earlier than 2026-04-24 08:00 | Тимофеев В | 4h | 4h |
| 1054 | 2.191 | вывести на синий склад старые цепи от печи зона навесок |  | 2h | 2026-05-22 09:00 A | 2026-05-22 11:00 A |  | 100% |  |  | start no earlier than 2026-04-09 08:00 | Тимофеев В | 2h | 2h |
| 1055 | 2.192 | прикрутить уголок снизу выхода охладителя, забивается кормом (фото скину) |  | 1h | 2026-04-08 09:00 A | 2026-04-08 10:00 A |  | 100% |  |  | start no earlier than 2026-04-08 08:00 | Бундин В | 1h | 1h |
| 1056 | 2.193 | закрыть шибер кондиционера над жировиком |  | 1h | 2026-04-09 09:00 A | 2026-04-09 10:00 A |  | 100% |  |  | start no earlier than 2026-04-09 09:00 | Бобренок В | 1h | 1h |
| 1057 | 2.194 | прикрутить оргстекло в аквариуме где забрасывают навески в смеситель |  | 1h | 2026-04-08 09:00 A | 2026-04-08 10:00 A |  | 100% |  |  | start no earlier than 2026-04-08 09:00 | Бундин В | 1h | 1h |
| 1058 | 2.195 | ревизия двигатель, контакты ножевого узла |  | 1h | 2026-04-09 09:00 A | 2026-04-09 10:00 A |  | 100% |  |  | start no earlier than 2026-04-09 09:00 | Тимофеев В | 1h | 1h |
| 1059 | 2.196 | земена сеток печи |  | 2h | 2026-05-04 09:00 A | 2026-05-04 11:00 A |  | 100% |  |  | start no earlier than 2026-05-04 09:00 | Макаревич А; Некрасов А; Тимофеев В | 4h | 4h |
| 1060 | 2.197 | получить метал-лоток 100х50, закрепить слева от двери выхода с зоны экструдера и уложить все провода | manual | 2h | 2026-04-11 09:00 A | 2026-04-11 11:00 A |  | 100% |  |  |  | Труфанов А | 2h | 2h |
| 1061 | 2.198 | получить аллюминевый скотч- замотать стыки циклона, улитки печек, место рычага шибера улитки | manual | 2h | 2026-04-05 09:00 A | 2026-04-05 11:00 A |  | 100% |  |  | start no earlier than 2026-04-05 09:00 | Труфанов А | 2h | 2h |
| 1062 | 2.199 | **установить водоподготовку на парогенератор** |  | 109d? | 2026-04-08 09:00 A | 2026-09-07 18:00 |  | 3% | 106.05d? | 131.59d |  |  | 17.25h | 0.25h |
| 1063 | 2.199.1 | планирование монтажа |  | 1h | 2026-08-31 09:00 | 2026-08-31 10:00 |  |  |  | 137.47d | start no earlier than 2026-08-31 09:00 | Домоводов К | 1h |  |
| 1064 | 2.199.2 | запрос КП | milestone | 0min | 2026-04-08 09:00 A | 2026-04-08 09:00 A |  | 100% |  |  | start no earlier than 2026-04-08 09:00 | Зорькин В |  |  |
| 1065 | 2.199.3 | решение о покупке | milestone | 0d | 2026-04-08 18:00 A | 2026-04-08 18:00 A | 1064FS+1d | 100% |  |  | start no earlier than 2026-04-03 08:00 | Домоводов К |  |  |
| 1066 | 2.199.4 | контроль поставки |  | 15min | 2026-04-27 09:00 A | 2026-04-27 09:15 A |  | 100% |  |  | start no earlier than 2026-04-27 09:00 | Зорькин В | 0.25h | 0.25h |
| 1067 | 2.199.5 | монтаж (установка) |  | 1d? | 2026-09-07 09:00 | 2026-09-07 18:00 |  |  |  | 131.59d | start no earlier than 2026-09-07 09:00 | Тимофеев В; Некрасов А | 16h |  |
| 1068 | 2.200 | **изготовить сетку перед фильерой экструдера от костей** |  | 11d | 2026-04-17 09:00 A | 2026-05-01 18:00 A |  | 100% |  |  |  |  | 83.25h | 83.25h |
| 1069 | 2.200.1 | составить чертеж |  | 2h | 2026-04-17 09:00 A | 2026-04-17 11:00 A |  | 100% |  |  | start no earlier than 2026-04-17 09:00 | Зорькин В | 2h | 2h |
| 1070 | 2.200.2 | разместить заказ |  | 1h | 2026-04-18 11:00 A | 2026-04-20 10:00 A | 1069FS+1d | 100% |  |  | start no earlier than 2026-04-03 08:00 | Зорькин В | 1h | 1h |
| 1071 | 2.200.3 | изготовление |  | 10d | 2026-04-18 12:00 A | 2026-05-01 18:00 A | 1070 | 100% |  |  | start no earlier than 2026-04-03 08:00 | Подрядчик | 80h | 80h |
| 1072 | 2.200.4 | контроль | milestone | 0d | 2026-04-30 12:00 A | 2026-04-30 12:00 A | 1071 | 100% |  |  | start no earlier than 2026-04-03 08:00 | Зорькин В |  |  |
| 1073 | 2.200.5 | орг забрать |  | 15min | 2026-05-01 12:00 A | 2026-05-01 12:15 A | 1072FS+1d | 100% |  |  | start no earlier than 2026-04-03 08:00 | Зорькин В | 0.25h | 0.25h |

| ID | WBS | Task | Type | Duration | Start | Finish | Predecessors | Complete | Actual start | Actual finish | Constraint | Resources | Work | Actual work |
| --- | --- | --- | --- | --- | --- | --- | --- | --- | --- | --- | --- | --- | --- | --- |
| 1074 | 2.201 | **вешалка для дамских сумочек в тамбур при надевании бахил** |  | 13.25d | 2026-05-04 09:00 | 2026-05-18 11:00 |  | 100% | 2026-04-17 09:00 | 2026-06-15 10:00 |  |  | 82h | 82h |
| 1075 | 2.201.1 | заявка |  | 1h | 2026-04-17 09:00 A | 2026-04-17 10:00 A |  | 100% |  |  | start no earlier than 2026-04-17 09:00 | Зорькин В | 1h | 1h |
| 1076 | 2.201.2 | доставка |  | 10d | 2026-04-17 10:00 A | 2026-05-01 10:00 A | 1075 | 100% |  |  | start no earlier than 2026-04-02 08:00 | Карабанов | 80h | 80h |
| 1077 | 2.201.3 | монтаж |  | 1h | 2026-06-13 09:00 A | 2026-06-15 10:00 A | 1076 | 100% |  |  | start no earlier than 2026-06-13 09:00 | Бобренок В | 1h | 1h |
| 1078 | 2.202 | Врезка фитинга 1/2х12мм в дверку прекондиционера 2 цех (созвон с Зорькиным) |  | 30min | 2026-04-09 09:00 A | 2026-04-09 09:30 A |  | 100% |  |  | start no earlier than 2026-04-09 09:00 | Тимофеев В | 0.5h | 0.5h |
| 1079 | 2.203 | проверить контур управления насосом ПГ |  | 1h | 2026-04-02 09:00 A | 2026-04-02 10:00 A |  | 100% |  |  | start no earlier than 2026-04-02 09:00 | Тимофеев В | 1h | 1h |
| 1080 | 2.204 | замена электродной группы или чистка до металла электродов |  | 1h | 2026-04-16 09:00 A | 2026-04-16 10:00 A |  | 100% |  |  | start no earlier than 2026-04-16 09:00 | Макаревич А | 1h | 1h |
| 1081 | 2.205 | закрепить шкаф управления приточной вентиляцией |  | 30min | 2026-04-01 08:00 A | 2026-04-01 09:30 A |  | 100% |  |  | start no earlier than 2026-04-01 08:00 | Бобренок В | 0.5h | 0.5h |
| 1082 | 2.206 | установить пневмо пистолеты на охладители с длинным носиком (у мастеров) |  | 1h | 2026-04-01 08:00 A | 2026-04-01 10:00 A |  | 100% |  |  | start no earlier than 2026-04-01 08:00 | Бобренок В | 1h | 1h |
| 1083 | 2.207 | утечка группа безопасности котел склад навесок устранить |  | 30min | 2026-03-31 08:00 A | 2026-03-31 09:30 A |  | 100% |  |  | start no earlier than 2026-03-31 08:00 | Бобренок В | 0.5h | 0.5h |
| 1084 | 2.208 | закрепить две трубы подачи воздуха в охладителе, пневмо шланг подачи в улитку крепим к стене |  | 2h | 2026-03-27 09:00 A | 2026-03-27 11:00 A |  | 100% |  |  | start no earlier than 2026-03-27 08:00 | Труфанов А | 2h | 2h |
| 1085 | 2.209 | изготовить 2 лотка 700х400х50 мм из нерж под транспортерную ленту транспортер №1 и №2 |  | 6h | 2026-04-04 09:00 A | 2026-04-06 16:00 A |  | 100% |  |  | start no earlier than 2026-04-04 09:00 | Макаревич А | 6h | 6h |
| 1086 | 2.210 | открутить вилку-розетку возле насоса подачи жиров в экструдер |  | 1h | 2026-04-01 09:00 A | 2026-04-01 10:00 A |  | 100% |  |  | start no earlier than 2026-04-01 09:00 | Бобренок В | 1h | 1h |
| 1087 | 2.211 | прикруть кусок металлопрофиля ,чтобы заделать отверстие куда проходит труба отопления (зона где привозят навески) фото скину | manual | 1h | 2026-03-29 09:00 A | 2026-03-29 10:00 A |  | 100% |  |  | start no earlier than 2026-03-29 09:00 | Бундин В | 1h | 1h |
| 1088 | 2.212 | **замена ленты нория** |  | 4.5d | 2026-03-27 08:00 A | 2026-04-02 13:00 A |  | 100% |  |  |  |  | 39.5h | 39.5h |
| 1089 | 2.212.1 | получить материал весь | manual | 30min | 2026-03-29 09:00 A | 2026-03-29 09:30 A |  | 100% |  |  | start no earlier than 2026-03-29 09:00 | Тимофеев В | 0.5h | 0.5h |
| 1090 | 2.212.2 | подготовка кондуктора |  | 2h | 2026-03-27 08:00 A | 2026-03-27 11:00 A |  | 100% |  |  | start no earlier than 2026-03-27 08:00 | Некрасов А; Тимофеев В | 4h | 4h |
| 1091 | 2.212.3 | подготовить к установке норийную ленту, ковши, болты |  | 15h | 2026-03-28 09:00 A | 2026-03-31 17:00 A |  | 100% |  |  | start no earlier than 2026-03-28 09:00 | Дедов В | 15h | 15h |
| 1092 | 2.212.4 | подготовка крепления лебедки для затягивания ленты |  | 4h | 2026-03-31 09:00 A | 2026-03-31 13:00 A |  | 100% |  |  | start no earlier than 2026-03-31 09:00 | Труфанов А; Некрасов А | 8h | 8h |
| 1093 | 2.212.5 | замена ленты |  | 4h | 2026-04-02 09:00 A | 2026-04-02 13:00 A |  | 100% |  |  | start no earlier than 2026-04-02 09:00 | Некрасов А; Макаревич А; Тимофеев В | 12h | 12h |
| 1094 | 2.213 | закрепить гофру на трос -рефрежераторы на территории |  | 1h | 2026-03-27 09:00 A | 2026-03-27 10:00 A |  | 100% |  |  | start no earlier than 2026-03-27 09:00 | Некрасов А | 1h | 1h |
| 1095 | 2.214 | монтаж розетки до канистры с жиром для подачи в экструдер (подключение весов) |  | 2h | 2026-03-26 09:00 A | 2026-03-26 11:00 A |  | 100% |  |  | start no earlier than 2026-03-26 09:00 | Дедов В | 2h | 2h |
| 1096 | 2.215 | заделать щели / маршпуты крыс . Зона хранения навесок (закрутить профлист и запенить отверстие под трубу) |  | 1h | 2026-03-26 09:00 A | 2026-03-26 10:00 A |  | 100% |  |  | start no earlier than 2026-03-26 09:00 | Некрасов А | 1h | 1h |
| 1097 | 2.216 | оперативная замена шнеков |  | 6h | 2026-03-23 09:00 A | 2026-03-23 16:00 A |  | 100% |  |  | start no earlier than 2026-03-23 09:00 | Бобренок В; Бундин В | 12h | 12h |
| 1098 | 2.217 | выдать шланг для продувки бестрома |  | 1h | 2026-03-23 09:00 A | 2026-03-23 10:00 A |  | 100% |  |  | start no earlier than 2026-03-23 09:00 | Бундин В | 1h | 1h |
| 1099 | 2.218 | приварить уголок на лотке в охладитель (фото скину) |  | 2h | 2026-03-24 09:00 A | 2026-03-24 11:00 A |  | 100% |  |  | start no earlier than 2026-03-24 09:00 | Бобренок В | 2h | 2h |
| 1100 | 2.219 | на транспортере с охладителя отрезать концы саморезов на оргстекле (зарапают руки) |  | 1h | 2026-03-23 09:00 A | 2026-03-23 10:00 A |  | 100% |  |  | start no earlier than 2026-03-23 08:00 | Бундин В | 1h | 1h |
| 1101 | 2.220 | насосная станция включить и проверить на кз (выбивало автомат) |  | 2h | 2026-03-31 09:00 A | 2026-03-31 11:00 A |  | 100% |  |  | start no earlier than 2026-03-31 09:00 | Тимофеев В | 2h | 2h |
| 1102 | 2.221 | закрепить трубу РР к стене в районе хранения кубов гидролизат |  | 1h | 2026-03-26 09:00 A | 2026-03-26 10:00 A |  | 100% |  |  | start no earlier than 2026-03-26 09:00 | Тимофеев В | 1h | 1h |
| 1103 | 2.222 | настройка продувка ПГ ч/з 30 мин |  | 30min | 2026-04-02 09:00 A | 2026-04-02 09:30 A |  | 100% |  |  | start no earlier than 2026-04-02 09:00 | Шуранов Ю | 0.5h | 0.5h |
| 1104 | 2.223 | на красном смесителе закусывает ручку шибера - разобраться |  | 2h | 2026-03-26 09:00 A | 2026-03-26 11:00 A |  | 100% |  |  | start no earlier than 2026-03-26 09:00 | Тимофеев В | 2h | 2h |
| 1105 | 2.224 | посмотреть эл. магнит на двери вход ц.2 |  | 1h | 2026-03-27 09:00 A | 2026-03-27 10:00 A |  | 100% |  |  | start no earlier than 2026-03-27 09:00 | Тимофеев В | 1h | 1h |
| 1106 | 2.225 | ящик возле нашего кабинета- прибить или прикрутить дно |  | 1h | 2026-03-22 09:00 A | 2026-03-23 10:00 A |  | 100% |  |  | start no earlier than 2026-03-22 09:00 | Бобренок В | 1h | 1h |
| 1107 | 2.226 | слить конденсат, почистить фильтры и продуть радиаторы |  | 1h | 2026-03-21 09:00 A | 2026-03-23 10:00 A |  | 100% |  |  | start no earlier than 2026-03-21 09:00 | Дедов В | 1h | 1h |
| 1108 | 2.227 | забрать кресло Сапелина на ремонт в слесарку с каб. Шелепова |  | 2h | 2026-03-23 09:00 A | 2026-03-23 11:00 A |  | 100% |  |  | start no earlier than 2026-03-23 09:00 | Тимофеев В | 2h | 2h |
| 1109 | 2.228 | закрепить кабель в гофре на клипсы от розетки слева от ворот жировика |  | 1h | 2026-03-26 09:00 A | 2026-03-26 10:00 A |  | 100% |  |  | start no earlier than 2026-03-26 09:00 | Труфанов А | 1h | 1h |
| 1110 | 2.229 | уложить выше подиума и красиво закрепить на клипсы кабель в гофре от ворот справа (фото вышлю) |  | 1h | 2026-04-16 09:00 A | 2026-04-16 10:00 A |  | 100% |  |  | start no earlier than 2026-04-10 09:00 | Тимофеев В | 1h | 1h |
| 1111 | 2.230 | монтаж отбойников по периметру |  | 4h | 2026-03-25 09:00 A | 2026-03-25 13:00 A |  | 100% |  |  | start no earlier than 2026-03-25 09:00 | Бундин В | 4h | 4h |
| 1112 | 2.231 | перенос отбойник ГП с стороны эл щита, что бы не входл палет |  | 2h | 2026-03-19 08:00 A | 2026-03-19 11:00 A |  | 100% |  |  | start no earlier than 2026-03-19 08:00 | Бобренок В | 2h | 2h |
| 1113 | 2.232 | установить лист сендвич панель на стену жир/экструдер с стороны мойки |  | 3h | 2026-04-07 09:00 A | 2026-04-07 12:00 A |  | 100% |  |  | start no earlier than 2026-04-07 09:00 | Некрасов А; Труфанов А | 6h | 6h |
| 1114 | 2.233 | подлючить пневмоулитку к воздуху в охладителе |  | 1h | 2026-03-31 09:00 A | 2026-03-31 10:00 A |  | 100% |  |  | start no earlier than 2026-03-31 09:00 | Бобренок В | 1h | 1h |
| 1115 | 2.234 | выдать уплотнение на крышки прекондиционера |  | 30min | 2026-03-19 08:00 A | 2026-03-19 09:30 A |  | 100% |  |  | start no earlier than 2026-03-19 08:00 | Бобренок В | 0.5h | 0.5h |

| ID | WBS | Task | Type | Duration | Start | Finish | Predecessors | Complete | Actual start | Actual finish | Total slack | Free slack | Constraint | Resources | Work | Actual work |
| --- | --- | --- | --- | --- | --- | --- | --- | --- | --- | --- | --- | --- | --- | --- | --- | --- |
| 1116 | 2.235 | **ворота фасовка** |  | 0.12d | 2026-03-26 09:00 A | 2026-03-26 10:00 A |  | 100% |  |  |  |  |  |  | 1h | 1h |
| 1117 | 2.235.1 | закрепить гофру до розетки слева от ворот и закрыть монтажную коробку |  | 1h | 2026-03-26 09:00 A | 2026-03-26 10:00 A |  | 100% |  |  |  |  | start no earlier than 2026-03-26 09:00 | Некрасов А | 1h | 1h |
| 1118 | 2.236 | **забивает лоток прекондиционер/экструдер, передалать** |  | 1.62d | 2026-08-31 09:00 | 2026-09-01 15:00 |  |  |  |  | 135.97d |  |  |  | 5h |  |
| 1119 | 2.236.1 | изготовить чертежи лекалы для воронки |  | 1h | 2026-08-31 09:00 | 2026-08-31 10:00 |  |  |  |  | 135.97d | 0d | start no earlier than 2026-08-31 09:00 | Шуранов Ю | 1h |  |
| 1120 | 2.236.2 | изготовление воронки |  | 4h | 2026-09-01 10:00 | 2026-09-01 15:00 | 1119FS+1d |  |  |  | 135.97d |  | start no earlier than 2026-09-01 09:00 | Макаревич А | 4h |  |
| 1121 | 2.237 | уложить в лоток пучек управления заслонками, отвязать от батареи |  | 1h | 2026-03-17 08:00 A | 2026-03-17 10:00 A |  | 100% |  |  |  |  | start no earlier than 2026-03-17 08:00 | Бобренок В | 1h | 1h |
| 1122 | 2.238 | распред коробка подкл вентилятора которого уже нет (кондиционер №3 жиры) - облогородить |  | 30min | 2026-03-17 08:00 A | 2026-03-17 09:30 A |  | 100% |  |  |  |  | start no earlier than 2026-03-17 08:00 | Бобренок В | 0.5h | 0.5h |
| 1123 | 2.239 | удалить лотаки с барана |  | 2h | 2026-03-19 09:00 A | 2026-03-19 11:00 A |  | 100% |  |  |  |  | start no earlier than 2026-03-19 08:00 | Труфанов А; Некрасов А | 4h | 4h |
| 1124 | 2.240 | упорядочить проводку регистратора данных - стянуть в пучек |  | 1h | 2026-03-20 09:00 A | 2026-03-20 10:00 A |  | 100% |  |  |  |  | start no earlier than 2026-03-20 09:00 | Дедов В | 1h | 1h |
| 1125 | 2.241 | **открыть люк у бестрома / ревизяия / закрыть на герметик** |  | 0.12d | 2026-03-19 09:00 A | 2026-03-19 10:00 A |  | 100% |  |  |  |  |  | Труфанов А | 2h | 2h |
| 1126 | 2.241.1 | хим. Лаборатория устранить течь с оборудования |  | 1h | 2026-03-19 09:00 A | 2026-03-19 10:00 A |  | 100% |  |  |  |  | start no earlier than 2026-03-19 08:00 | Труфанов А | 1h | 1h |
| 1127 | 2.242 | **изготовить 2 лотка из нерж. в зоне жиров по аналогии с первым цехом под транспортером тип 1 и тип 2** |  | 0.25d | 2026-03-16 09:00 A | 2026-03-16 11:00 A |  | 100% |  |  |  |  |  | Макаревич А | 4h | 4h |
| 1128 | 2.242.1 | установить отбойник в зону ХХХ, брать в 5А |  | 2h | 2026-03-16 09:00 A | 2026-03-16 11:00 A |  | 100% |  |  |  |  | start no earlier than 2026-03-16 09:00 | Бобренок В | 2h | 2h |
| 1129 | 2.243 | **сточить острый край лотка загрузки в охладитель** |  | 0.12d | 2026-03-15 09:00 A | 2026-03-16 10:00 A |  | 100% |  |  |  |  |  | Некрасов А | 3h | 3h |
| 1130 | 2.243.1 | вывезти люльку, вывезти бойлер, провода на жирах спрятать в коробку |  | 1h | 2026-03-15 09:00 A | 2026-03-16 10:00 A |  | 100% |  |  |  |  | start no earlier than 2026-03-15 09:00 | Бобренок В | 1h | 1h |
| 1131 | 2.243.2 | бойлер в душе - установить трубку на клапан сброса и смонтировать её по стене до канализ трубы |  | 1h | 2026-03-16 09:00 A | 2026-03-16 10:00 A |  | 100% |  |  |  |  | start no earlier than 2026-03-16 09:00 | Макаревич А | 1h | 1h |
| 1132 | 2.244 | облогородить кабельный пучек, сделать аккуратно/закрыить крышкой. Слева от двери экструдер/тамбур под лестницей |  | 6h | 2026-04-09 09:00 A | 2026-04-09 16:00 A |  | 100% |  |  |  |  | start no earlier than 2026-04-11 09:00 | Труфанов А | 6h | 6h |
| 1133 | 2.245 | **изготовить сетку после барабана по аналогии с сущ 10мм** |  | 2.5d | 2026-03-12 09:00 A | 2026-03-16 13:00 A |  | 100% |  |  |  |  |  | Макаревич А | 25.5h | 25.5h |
| 1134 | 2.245.1 | на лоток загрузки в охладитель - установить доп борт с левой стороны, такой же как с правой (съемный) |  | 4h | 2026-03-15 09:00 A | 2026-03-16 13:00 A |  | 100% |  |  |  |  | start no earlier than 2026-03-15 09:00 | Бобренок В | 4h | 4h |
| 1135 | 2.245.2 | квадропак стол подачи пакетов устновить кайки с барашком/приварить. + зафиксировать от бокового смещения |  | 1h | 2026-03-16 09:00 A | 2026-03-16 10:00 A |  | 100% |  |  |  |  | start no earlier than 2026-03-16 09:00 | Тимофеев В | 1h | 1h |
| 1136 | 2.245.3 | изменить время разгон/торожение привод барабана |  | 30min | 2026-03-12 09:00 A | 2026-03-12 09:30 A |  | 100% |  |  |  |  | start no earlier than 2026-03-13 09:00 | Дедов В | 0.5h | 0.5h |
| 1137 | 2.246 | изготовить кожух на шестерни прекондиционера |  | 6h | 2026-04-03 09:00 A | 2026-04-03 16:00 A |  | 100% |  |  |  |  | start no earlier than 2026-04-03 09:00 | Макаревич А | 6h | 6h |
| 1138 | 2.247 | **ремонт датчик давления линия 3** |  | 30.25d | 2026-03-26 09:00 | 2026-04-30 11:00 |  | 100% | 2026-05-14 09:00 | 2026-06-11 12:00 |  |  |  |  | 124.75h | 124.75h |
| 1139 | 2.247.1 | заявка переходник G1/4 /M20*1.5 токарю |  | 15min | 2026-05-14 09:00 A | 2026-05-14 09:15 A |  | 100% |  |  |  |  | start no earlier than 2026-05-14 09:00 | Зорькин В | 0.25h | 0.25h |
| 1140 | 2.247.2 | контроль изг/орг доставка | milestone | 0d | 2026-05-14 09:15 A | 2026-05-14 09:15 A | 1139 | 100% |  |  |  |  | start no earlier than 2026-03-20 08:00 |  |  |  |
| 1141 | 2.247.3 | заказ замена + в ЗИП |  | 15min | 2026-05-14 09:15 A | 2026-05-14 09:30 A | 1140 | 100% |  |  |  |  | start no earlier than 2026-03-13 09:00 | Зорькин В | 0.25h | 0.25h |
| 1142 | 2.247.4 | заявка на РВД удлинитель |  | 15min | 2026-05-14 09:30 A | 2026-05-14 09:45 A | 1141 | 100% |  |  |  |  | start no earlier than 2026-03-12 08:00 | Зорькин В | 0.25h | 0.25h |
| 1143 | 2.247.5 | доставка |  | 15d | 2026-05-14 09:45 A | 2026-06-04 09:45 A | 1142 | 100% |  |  |  |  | start no earlier than 2026-03-12 08:00 | Карабанов | 120h | 120h |
| 1144 | 2.247.6 | монтаж |  | 1h | 2026-06-04 09:00 A | 2026-06-04 10:00 A |  | 100% |  |  |  |  | start no earlier than 2026-06-04 09:00 | Тимофеев В | 1h | 1h |
| 1145 | 2.247.7 | датчик давления экструдера проверка подключения |  | 3h | 2026-06-11 09:00 A | 2026-06-11 12:00 A |  | 100% |  |  |  |  | start no earlier than 2026-06-11 09:00 | Дедов В | 3h | 3h |

| ID | WBS | Task | Duration | Start | Finish | Predecessors | Complete | Constraint | Resources | Work | Actual work |
| --- | --- | --- | --- | --- | --- | --- | --- | --- | --- | --- | --- |
| 1146 | 2.248 | **установить сирену при отключении автомата ПГ** | 28.12d | 2026-03-13 09:00 A | 2026-04-22 10:00 A |  | 100% |  |  | 81.5h | 81.5h |
| 1147 | 2.248.1 | заявка на реле / сирена | 30min | 2026-03-13 09:00 A | 2026-03-13 09:30 A |  | 100% | start no earlier than 2026-03-13 09:00 | Шуранов Ю | 0.5h | 0.5h |
| 1148 | 2.248.2 | доставка | 10d | 2026-03-13 09:30 A | 2026-03-27 09:30 A | 1147 | 100% | start no earlier than 2026-03-12 08:00 | Карабанов | 80h | 80h |
| 1149 | 2.248.3 | монтаж в схему (проверить почему не срабатывает) | 1h | 2026-04-22 09:00 A | 2026-04-22 10:00 A | 1148 | 100% | start no earlier than 2026-04-22 09:00 | Дедов В | 1h | 1h |
| 1150 | 2.249 | **установить сирену на отключение автоматов в печи** | 16d | 2026-03-11 09:00 A | 2026-04-01 18:00 A |  | 100% |  |  | 44.25h | 44.25h |
| 1151 | 2.249.1 | заявка сирена | 15min | 2026-03-13 09:30 A | 2026-03-13 09:45 A | 1147 | 100% | start no earlier than 2026-03-12 08:00 | Шуранов Ю | 0.25h | 0.25h |
| 1152 | 2.249.2 | доставка | 5d | 2026-03-13 09:45 A | 2026-03-20 09:45 A | 1151 | 100% | start no earlier than 2026-03-12 08:00 | Карабанов | 40h | 40h |
| 1153 | 2.249.3 | монтаж | 2h | 2026-03-19 09:00 A | 2026-03-19 11:00 A | 1152 | 100% | start no earlier than 2026-03-19 09:00 | Дедов В | 2h | 2h |
| 1154 | 2.249.4 | доставка сирены | 10d | 2026-03-19 09:00 A | 2026-04-01 18:00 A |  | 100% | start no earlier than 2026-03-19 08:00 |  |  |  |
| 1155 | 2.249.5 | монтаж сирены | 1h | 2026-03-31 09:00 A | 2026-03-31 10:00 A | 1154 | 100% | start no earlier than 2026-03-31 09:00 | Дедов В | 1h | 1h |
| 1156 | 2.249.6 | настройка доводчика дверь вход в зону экструдера | 1h | 2026-03-11 09:00 A | 2026-03-11 10:00 A |  | 100% | start no earlier than 2026-03-11 09:00 | Макаревич А | 1h | 1h |
| 1157 | 2.250 | **выпадает фильера с матрицы - делать стпор** | 0.5d | 2026-04-27 09:00 A | 2026-04-27 13:00 A |  | 100% |  |  | 4.5h | 4.5h |
| 1158 | 2.250.1 | подготовка сверла / метчика | 30min | 2026-04-27 09:00 A | 2026-04-27 09:30 A |  | 100% | start no earlier than 2026-04-27 09:00 | Шуранов Ю | 0.5h | 0.5h |
| 1159 | 2.250.2 | сверлить и резать резьбу для фикс болта | 4h | 2026-04-27 09:00 A | 2026-04-27 13:00 A |  | 100% | start no earlier than 2026-04-27 09:00 | Подрядчик | 4h | 4h |
| 1160 | 2.251 | **замена поликарбанат на перегородках металопрофилем** | 68.75d | 2026-03-11 09:00 A | 2026-06-15 16:00 A |  | 100% |  |  | 114h | 114h |
| 1161 | 2.251.1 | расчет материал стена охладитель | 1h | 2026-03-19 09:00 A | 2026-03-19 10:00 A |  | 100% | start no earlier than 2026-03-19 09:00 | Шуранов Ю | 1h | 1h |
| 1162 | 2.251.2 | заявка | 1h | 2026-03-19 10:00 A | 2026-03-19 11:00 A | 1161 | 100% | start no earlier than 2026-03-12 08:00 | Шуранов Ю | 1h | 1h |
| 1163 | 2.251.3 | доставка | 10d | 2026-03-19 11:00 A | 2026-04-02 11:00 A | 1162 | 100% | start no earlier than 2026-03-12 08:00 | Карабанов | 80h | 80h |
| 1164 | 2.251.4 | из металлопрофиля 3м. Обшиваем охладитель внутри и снаружи + утеплитель | 5h | 2026-05-29 09:00 A | 2026-05-29 15:00 A |  | 100% | start no earlier than 2026-05-29 09:00 | Некрасов А; Бобренок В | 10h | 10h |
| 1165 | 2.251.5 | продолжить монтаж (со стороны охладителя и со стороны жиров) | 6h | 2026-06-15 09:00 A | 2026-06-15 16:00 A | 1163 | 100% | start no earlier than 2026-06-15 09:00 | Некрасов А; Бундин В | 12h | 12h |
| 1166 | 2.251.6 | замена шланг реле давление и настройка. фильтр приточная офис | 1h | 2026-03-12 09:00 A | 2026-03-12 10:00 A |  | 100% | start no earlier than 2026-03-13 09:00 | Дедов В | 1h | 1h |
| 1167 | 2.251.7 | замена насос гидролизата | 1h | 2026-03-12 08:00 A | 2026-03-12 10:00 A |  | 100% | start no earlier than 2026-03-12 08:00 | Бундин В; Тимофеев В | 2h | 2h |
| 1168 | 2.251.8 | замена подшипник прекондиционер | 1h | 2026-03-12 09:00 A | 2026-03-12 10:00 A |  | 100% | start no earlier than 2026-03-12 08:00 | Бундин В | 1h | 1h |
| 1169 | 2.251.9 | ремонт вал охладитель | 4h | 2026-03-12 09:00 A | 2026-03-12 13:00 A |  | 100% | start no earlier than 2026-03-19 09:00 | Тимофеев В | 4h | 4h |
| 1170 | 2.251.10 | плохо закр дверь на фасовку. заменить личинку двери / выравнить напильником в коробке. | 1h | 2026-03-11 09:00 A | 2026-03-11 10:00 A |  | 100% | start no earlier than 2026-03-11 09:00 | Макаревич А | 1h | 1h |
| 1171 | 2.251.11 | крепить поликарбанат стена печь/жир длинная часть | 1h | 2026-03-11 09:00 A | 2026-03-11 10:00 A |  | 100% | start no earlier than 2026-03-11 09:00 | Макаревич А | 1h | 1h |
| 1172 | 2.252 | сетку на выходе барабана жир закрепить. Устр вспомогактельные крепжи операторам | 1h | 2026-03-19 09:00 A | 2026-03-19 10:00 A |  | 100% | start no earlier than 2026-03-19 09:00 | Тимофеев В | 1h | 1h |

| ID | WBS | Task | Duration | Start | Finish | Predecessors | Complete | Constraint | Resources | Work | Actual work |
| --- | --- | --- | --- | --- | --- | --- | --- | --- | --- | --- | --- |
| 1173 | 2.253 | **установить / снять трубу от ПГ для чистки сетки** | 0.25d | 2026-03-12 09:00 A | 2026-03-12 11:00 A |  | 100% |  | Тимофеев В | 7h | 7h |
| 1174 | 2.253.1 | чистка циклон снаружи от копоти. Средство для чистки выдаст Шелепов К | 2h | 2026-03-12 09:00 A | 2026-03-12 11:00 A |  | 100% | start no earlier than 2026-03-12 09:00 | Тимофеев В; Бундин В | 4h | 4h |
| 1175 | 2.253.2 | замена датчик расхода пара | 1h | 2026-03-12 09:00 A | 2026-03-12 10:00 A |  | 100% | start no earlier than 2026-03-12 09:00 | Некрасов А | 1h | 1h |
| 1176 | 2.254 | **замениь фитинги на жир** | 0.25d | 2026-03-10 09:00 A | 2026-03-10 11:00 A | 573 | 100% |  | Некрасов А | 4h | 4h |
| 1177 | 2.254.1 | замена бойлер в мойке экструдера на бойлер который весит за экструдером | 2h | 2026-03-10 09:00 A | 2026-03-10 11:00 A |  | 100% | start no earlier than 2026-03-10 09:00 | Дедов В | 2h | 2h |
| 1178 | 2.255 | **переключить освещение на автолномный выключатель, запитанный от системы освещения, а не от оборудования.** | 15.38d | 2026-03-05 09:00 A | 2026-03-26 12:00 A |  | 100% |  |  | 13h | 13h |
| 1179 | 2.255.1 | ножевой узел | 1.5h | 2026-03-26 09:00 A | 2026-03-26 10:30 A |  | 100% | start no earlier than 2026-03-26 09:00 | Дедов В; Некрасов А | 3h | 3h |
| 1180 | 2.255.2 | бестром | 1.5h | 2026-03-26 09:00 A | 2026-03-26 10:30 A |  | 100% | start no earlier than 2026-03-26 09:00 | Некрасов А; Дедов В | 3h | 3h |
| 1181 | 2.255.3 | выход с охладителя | 1.5h | 2026-03-26 10:30 A | 2026-03-26 12:00 A | 1179 | 100% | start no earlier than 2026-03-26 09:00 | Дедов В; Некрасов А | 3h | 3h |
| 1182 | 2.255.4 | переключить норию квадропака стационрно, без розетки | 2h | 2026-03-05 09:00 A | 2026-03-05 11:00 A |  | 100% | start no earlier than 2026-03-05 09:00 | Дедов В | 2h | 2h |
| 1183 | 2.255.5 | перемонтаж провода заземления нории квадропак эстетично и удобно для прохода и уборщицы | 2h | 2026-03-05 09:00 A | 2026-03-05 11:00 A |  | 100% | start no earlier than 2026-03-05 09:00 | Дедов В | 2h | 2h |
| 1184 | 2.256 | **сетки на дно печи в зип изготовить** | 10.5d | 2026-03-10 09:00 A | 2026-03-24 13:00 A |  | 100% |  |  | 85h | 85h |
| 1185 | 2.256.1 | заявка сетка уголки | 1h | 2026-03-10 09:00 A | 2026-03-10 10:00 A |  | 100% | start no earlier than 2026-03-10 09:00 | Шуранов Ю | 1h | 1h |
| 1186 | 2.256.2 | доставка | 10d | 2026-03-10 10:00 A | 2026-03-24 10:00 A | 1185 | 100% | start no earlier than 2026-03-06 08:00 | Карабанов | 80h | 80h |
| 1187 | 2.256.3 | изготовление | 4h | 2026-03-24 09:00 A | 2026-03-24 13:00 A | 1186 | 100% | start no earlier than 2026-03-24 09:00 | Тимофеев В | 4h | 4h |
| 1188 | 2.257 | закрепить лоток для совка с спиртом. Изготовить усилит косынку | 2h | 2026-03-07 09:00 A | 2026-03-09 11:00 A |  | 100% | start no earlier than 2026-03-07 09:00 | Бундин В | 2h | 2h |
| 1189 | 2.258 | **установить монтажную коробку квадропак. Инструктаж Шуранов по тлф** | 0.12d | 2026-03-06 08:00 A | 2026-03-06 10:00 A |  | 100% |  | Бундин В | 2h | 2h |
| 1190 | 2.258.1 | Не уходит вода в душевой кабине, посмотреть, устранить. | 1h | 2026-03-06 08:00 A | 2026-03-06 10:00 A |  | 100% | start no earlier than 2026-03-06 08:00 | Бобренок В | 1h | 1h |
| 1191 | 2.259 | ревизия вентиляторов охладителя, не закрываются крышки | 30min | 2026-03-05 09:00 A | 2026-03-05 09:30 A |  | 100% | start no earlier than 2026-03-05 09:00 | Тимофеев В | 0.5h | 0.5h |
| 1192 | 2.260 | **Квадропак** | 0.38d | 2026-03-05 09:00 A | 2026-03-05 12:00 A |  | 100% |  |  | 3h | 3h |
| 1193 | 2.260.1 | Уложить красиво провода на лестнице квадропака цех 2 (созвон с Шурановым) | 3h | 2026-03-05 09:00 A | 2026-03-05 12:00 A |  | 100% | start no earlier than 2026-03-05 09:00 | Дедов В | 3h | 3h |
| 1194 | 2.261 | **Сброс ошибо Н4 и Е9 на кондиционерах** | 0.08d | 2026-03-04 09:00 A | 2026-03-04 09:40 A |  | 100% |  |  | 0.67h | 0.67h |
| 1195 | 2.261.1 | Договориться с оплотом по решению | 30min | 2026-03-04 09:00 A | 2026-03-04 09:30 A |  | 100% | start no earlier than 2026-03-04 09:00 | Зорькин В | 0.5h | 0.5h |
| 1196 | 2.261.2 | устранить ошибки | 10min | 2026-03-04 09:30 A | 2026-03-04 09:40 A | 1195 | 100% | start no earlier than 2026-03-03 08:00 | Зорькин В | 0.17h | 0.17h |
| 1197 | 2.262 | закреить поликарбанат по периметру | 4h | 2026-03-08 09:00 A | 2026-03-09 13:00 A |  | 100% | start no earlier than 2026-03-08 09:00 | Макаревич А | 4h | 4h |
| 1198 | 2.263 | смазать ручки и шарниры дверей | 1h | 2026-03-08 09:00 A | 2026-03-09 10:00 A |  | 100% | start no earlier than 2026-03-08 09:00 | Макаревич А | 1h | 1h |

| ID | WBS | Task | Duration | Start | Finish | Predecessors | Complete | Constraint | Resources | Work | Actual work |
| --- | --- | --- | --- | --- | --- | --- | --- | --- | --- | --- | --- |
| 1199 | 2.264 | **сделать ровным порог вход в мойку экструдера** | 23.5d | 2026-03-03 09:00 A | 2026-04-03 13:00 A |  | 100% |  |  | 86.25h | 86.25h |
| 1200 | 2.264.1 | Показать Олегу порог | 30min | 2026-03-03 09:00 A | 2026-03-03 09:30 A |  | 100% | start no earlier than 2026-03-03 08:00 | Зорькин В; Олег лукас | 1h | 1h |
| 1201 | 2.264.2 | составить план ремонта | 15min | 2026-03-03 09:00 A | 2026-03-03 09:15 A |  | 100% | start no earlier than 2026-03-03 09:00 | Зорькин В; Некрасов А; Труфанов А | 0.75h | 0.75h |
| 1202 | 2.264.3 | составить заявку на материал | 30min | 2026-03-04 09:00 A | 2026-03-04 09:30 A | 1201 | 100% | start no earlier than 2026-03-04 09:00 | Зорькин В | 0.5h | 0.5h |
| 1203 | 2.264.4 | доставка | 10d | 2026-03-04 09:30 A | 2026-03-18 09:30 A | 1202 | 100% | start no earlier than 2026-03-03 08:00 | Карабанов | 80h | 80h |
| 1204 | 2.264.5 | реализация | 4h | 2026-04-03 09:00 A | 2026-04-03 13:00 A | 1203 | 100% | start no earlier than 2026-04-03 09:00 | Олег | 4h | 4h |
| 1205 | 2.265 | востановить профлист. Проход навески экструдер. Обрезками с 3ц, цвет любой | 5h | 2026-03-08 09:00 A | 2026-03-09 15:00 A |  | 100% | start no earlier than 2026-03-08 09:00 | Макаревич А | 5h | 5h |
| 1206 | 2.266 | установить отбойники в проход и углы проезд навесок. Барть с 5а | 4h | 2026-03-09 09:00 A | 2026-03-09 13:00 A |  | 100% | start no earlier than 2026-03-09 09:00 | Макаревич А | 4h | 4h |
| 1207 | 2.267 | **установить отбойники в углы проезд навесок** | 24.25d | 2026-03-13 09:00 A | 2026-04-16 11:00 A |  | 100% |  |  | 82.17h | 82.17h |
| 1208 | 2.267.1 | заявка 2 отбойника | 10min | 2026-03-13 09:00 A | 2026-03-13 09:10 A |  | 100% | start no earlier than 2026-03-13 09:00 | Зорькин В | 0.17h | 0.17h |
| 1209 | 2.267.2 | доставка | 10d | 2026-03-13 09:10 A | 2026-03-27 09:10 A | 1208 | 100% | start no earlier than 2026-03-12 08:00 | Карабанов | 80h | 80h |
| 1210 | 2.267.3 | монтаж | 2h | 2026-04-16 09:00 A | 2026-04-16 11:00 A | 1209 | 100% | start no earlier than 2026-04-16 09:00 | Бундин В | 2h | 2h |
| 1211 | 2.268 | **наростить ножки на бестроме бункер, вместо деревянной** | 3.38d | 2026-03-05 09:00 A | 2026-03-10 12:00 A |  | 100% |  | Макаревич А | 39h | 39h |
| 1212 | 2.268.1 | **мойка** | 0.38d | 2026-03-05 09:00 A | 2026-03-05 12:00 A |  | 100% |  |  | 6h | 6h |
| 1213 | 2.268.1.1 | ревизия вытяжка принудительная из печи (нерж вентилятор), очистка | 3h | 2026-03-05 09:00 A | 2026-03-05 12:00 A |  | 100% | start no earlier than 2026-03-05 09:00 | Некрасов А; Труфанов А | 6h | 6h |
| 1214 | 2.268.2 | ремонт колесо штабелер/замена подшипник | 3h | 2026-03-10 09:00 A | 2026-03-10 12:00 A |  | 100% | start no earlier than 2026-03-10 09:00 | Тимофеев В; Дедов В | 6h | 6h |
| 1215 | 2.269 | **увеличить освещение в зоне квадропака** | 41.88d | 2026-03-02 09:00 A | 2026-04-28 17:00 A |  | 100% |  |  | 101h | 101h |
| 1216 | 2.269.1 | составить список мматериал для монтажа | 30min | 2026-03-02 09:00 A | 2026-03-02 09:30 A |  | 100% | start no earlier than 2026-03-02 09:00 | Труфанов А; Некрасов А; Зорькин В | 1.5h | 1.5h |
| 1217 | 2.269.2 | заявка светильники | 30min | 2026-03-02 09:30 A | 2026-03-02 10:00 A | 1216 | 100% | start no earlier than 2026-02-27 08:00 | Зорькин В | 0.5h | 0.5h |
| 1218 | 2.269.3 | доставка | 10d | 2026-03-02 10:00 A | 2026-03-16 10:00 A | 1217 | 100% | start no earlier than 2026-02-27 08:00 | Карабанов | 80h | 80h |
| 1219 | 2.269.4 | монтаж светильников зона фасовки 8 светильников, операторы помогут | 15h | 2026-04-25 09:00 A | 2026-04-28 17:00 A |  | 100% | start no earlier than 2026-04-25 09:00 | Бобренок В | 15h | 15h |
| 1220 | 2.269.5 | монтаж светильников зона квадропак 1шт - перевесить светильник | 1h | 2026-04-16 09:00 A | 2026-04-16 10:00 A |  | 100% | start no earlier than 2026-04-16 09:00 | Тимофеев В | 1h | 1h |
| 1221 | 2.269.6 | монтаж | 2h | 2026-03-06 09:00 A | 2026-03-06 11:00 A |  | 100% | start no earlier than 2026-03-06 09:00 | Бобренок В | 2h | 2h |
| 1222 | 2.269.7 | **замена сетка печи на мелкую** | 0.12d | 2026-03-02 09:00 A | 2026-03-02 10:00 A |  | 100% |  |  | 1h | 1h |
| 1223 | 2.269.7.1 | согласовать спецификацию / оплата счет | 1h | 2026-03-02 09:00 A | 2026-03-02 10:00 A |  | 100% | start no earlier than 2026-03-02 09:00 | Домоводов К | 1h | 1h |

| ID | WBS | Task | Duration | Start | Finish | Predecessors | Complete | Remaining | Total slack | Free slack | Constraint | Resources | Work | Actual work |
| --- | --- | --- | --- | --- | --- | --- | --- | --- | --- | --- | --- | --- | --- | --- |
| 1224 | 2.270 | **монтаж дозации жира в экструдер** | 34.25d? | 2026-02-27 09:00 A | 2026-04-16 11:00 |  | 38% | 21.26d? | 234.34d |  |  |  | 25h | 15h |
| 1225 | 2.270.1 | монтаж частотного привода | 2h | 2026-02-27 09:00 A | 2026-02-27 11:00 A |  | 100% |  |  |  | start no earlier than 2026-02-27 09:00 | Тимофеев В | 2h | 2h |
| 1226 | 2.270.2 | монтаж трассы гидравлической | 2h | 2026-03-02 09:00 A | 2026-03-02 11:00 A | 1225 | 100% |  |  |  | start no earlier than 2026-03-02 09:00 | Тимофеев В | 2h | 2h |
| 1227 | 2.270.3 | сборка канистры с фитингом | 1h | 2026-03-02 11:00 A | 2026-03-02 12:00 A | 1226 | 100% |  |  |  | start no earlier than 2026-02-26 08:00 | Тимофеев В | 1h | 1h |
| 1228 | 2.270.4 | калибровка на нужный расход | 1h | 2026-03-03 09:00 A | 2026-03-03 10:00 A |  | 100% |  |  |  | start no earlier than 2026-03-03 09:00 | Зорькин В; Тимофеев В | 2h | 2h |
| 1229 | 2.270.5 | испытание | 1h | 2026-03-04 09:00 A | 2026-03-04 10:00 A |  | 100% |  |  |  | start no earlier than 2026-03-04 09:00 | Зорькин В | 1h | 1h |
| 1230 | 2.270.6 | подключить управление насосом синхронно с запуском ножей экструдера. Проложить кабель, изучить параметары, передать по смене что подключать | 4h | 2026-03-04 09:00 | 2026-03-04 13:00 |  |  |  | 265.09d |  | start no earlier than 2026-03-04 09:00 | Дедов В | 4h |  |
| 1231 | 2.270.7 | подключить кабель/ неастроить параметры, что передаст Дедов | 1h | 2026-03-05 09:00 | 2026-03-05 10:00 |  |  |  | 264.47d |  | start no earlier than 2026-03-05 09:00 | Труфанов А | 1h |  |
| 1232 | 2.270.8 | поставка контрллра | 1d? | 2026-03-11 09:00 | 2026-03-11 18:00 |  |  |  | 259.34d | 25d | start no earlier than 2026-03-11 09:00 |  |  |  |
| 1233 | 2.270.9 | подключить контрллера расходомер | 2h | 2026-04-16 09:00 | 2026-04-16 11:00 | 1232 |  |  | 234.34d |  | start no earlier than 2026-04-16 09:00 | Тимофеев В | 2h |  |
| 1234 | 2.270.10 | Прокинуть интерфейсный кабель от черной коробочки до нового частотника на синем бункере (проложить так чтоб ни где ничего не торчало) | 3h | 2026-03-05 09:00 | 2026-03-05 12:00 |  |  |  | 264.22d |  | start no earlier than 2026-03-05 08:00 | Дедов В | 3h |  |
| 1235 | 2.270.11 | сделать регулировку угла наклона приемная воронка конв в охладитель после жира | 3h | 2026-03-05 09:00 A | 2026-03-05 12:00 A |  | 100% |  |  |  | start no earlier than 2026-03-05 09:00 | Некрасов А; Труфанов А | 6h | 6h |
| 1236 | 2.270.12 | сборка и монтаж полка для дез раствора на охладитель | 1h | 2026-03-02 09:00 A | 2026-03-02 10:00 A |  | 100% |  |  |  | start no earlier than 2026-03-02 09:00 | Тимофеев В | 1h | 1h |
| 1237 | 2.271 | **настройка блокировок отключения котла, если отключена приточка** | 130.25d | 2026-03-03 09:00 A | 2026-09-01 11:00 |  | 7% | 120.93d | 136.34d |  |  |  | 86.17h | 6.17h |
| 1238 | 2.271.1 | внести в схему котла блокировку либо от трм 33 либо от частотника | 4h | 2026-03-03 09:00 A | 2026-03-03 13:00 A |  | 100% |  |  |  | start no earlier than 2026-03-03 09:00 | Дедов В | 4h | 4h |
| 1239 | 2.271.2 | Заявка на реле протока воды | 10min | 2026-03-10 09:00 A | 2026-03-10 09:10 A |  | 100% |  |  |  | start no earlier than 2026-03-10 09:00 | Зорькин В | 0.17h | 0.17h |
| 1240 | 2.271.3 | Доставка | 10d | 2026-03-10 09:10 | 2026-03-24 09:10 | 1239 |  |  | 251.57d |  | start no earlier than 2026-03-02 09:00 | Карабанов | 80h |  |
| 1241 | 2.271.4 | Замена | 2h | 2026-09-01 09:00 A | 2026-09-01 11:00 A | 1240 | 100% |  |  |  | start no earlier than 2026-09-01 09:00 | Дедов В | 2h | 2h |
| 1242 | 2.272 | Запрет работы вентилятора если низкая температура калорифера | 2h | 2026-03-12 09:00 A | 2026-03-12 11:00 A |  | 100% |  |  |  | start no earlier than 2026-03-12 09:00 | Дедов В | 2h | 2h |
| 1243 | 2.273 | **установить на охладитель ролики + скольжение трубы** | 9d? | 2026-09-01 09:00 | 2026-09-11 18:00 |  |  |  | 127.59d |  |  |  | 10h |  |
| 1244 | 2.273.1 | печать кронштейнов | 2h | 2026-09-01 09:00 | 2026-09-01 11:00 |  |  |  | 136.34d |  | start no earlier than 2026-09-01 09:00 | Домоводов К | 2h |  |
| 1245 | 2.273.2 | установить держатели труб | 1d? | 2026-09-11 09:00 | 2026-09-11 18:00 |  |  |  | 127.59d |  | start no earlier than 2026-09-11 09:00 | Тимофеев В | 8h |  |
| 1246 | 2.274 | **установить паровопровод для очистки сетки печи на мойке парогенератором** | 8.75d | 2026-03-02 09:00 A | 2026-03-12 16:00 A |  | 100% |  |  |  |  |  | 18.5h | 18.5h |
| 1247 | 2.274.1 | проверка фитингов | 30min | 2026-03-02 09:00 A | 2026-03-02 09:30 A |  | 100% |  |  |  | start no earlier than 2026-03-02 09:00 | Зорькин В | 0.5h | 0.5h |
| 1248 | 2.274.2 | монтаж | 2h | 2026-03-05 09:00 A | 2026-03-05 11:00 A | 1247 | 100% |  |  |  | start no earlier than 2026-03-05 09:00 | Тимофеев В | 2h | 2h |

| ID | WBS | Task | Type | Duration | Start | Finish | Predecessors | Complete | Total slack | Free slack | Constraint | Resources | Work | Actual work |
| --- | --- | --- | --- | --- | --- | --- | --- | --- | --- | --- | --- | --- | --- | --- |
| 1249 | 2.274.3 | **лоток с транспортера в барабан. Большой** |  | 2.75d | 2026-03-10 09:00 A | 2026-03-12 16:00 A |  | 100% |  |  |  |  | 16h | 16h |
| 1250 | 2.274.3.1 | изготовить из листа лоток. Заготовку 612*965 с пропилами для сгиба по чертежу |  | 4h | 2026-03-10 09:00 A | 2026-03-10 13:00 A |  | 100% |  |  | start no earlier than 2026-03-10 09:00 | Макаревич А | 4h | 4h |
| 1251 | 2.274.3.2 | подготовить раму крепежа |  | 4h | 2026-03-12 09:00 A | 2026-03-12 13:00 A | 1250 | 100% |  |  | start no earlier than 2026-03-12 09:00 | Некрасов А; Труфанов А | 8h | 8h |
| 1252 | 2.274.3.3 | монтаж |  | 2h | 2026-03-12 14:00 A | 2026-03-12 16:00 A | 1251 | 100% |  |  | start no earlier than 2026-02-27 08:00 | Некрасов А; Труфанов А | 4h | 4h |
| 1253 | 2.275 | **установка ворот шлюз в проходе вент камеры** |  | 119d? | 2026-02-24 09:00 A | 2026-08-09 13:00 A |  | 100% |  |  |  |  | 163.5h | 163.5h |
| 1254 | 2.275.1 | изготовить и установить шпингалеты |  | 4h | 2026-02-27 09:00 A | 2026-02-27 13:00 A |  | 100% |  |  | start no earlier than 2026-02-27 09:00 | Некрасов А; Бобренок В | 8h | 8h |
| 1255 | 2.275.2 | установка петель, транспортировка, монтаж |  | 1d? | 2026-02-24 09:00 A | 2026-02-24 18:00 A |  | 100% |  |  | start no earlier than 2026-02-24 09:00 | Труфанов А; Некрасов А | 16h | 16h |
| 1256 | 2.275.3 | установить полосу притвора |  | 3h | 2026-02-27 09:00 A | 2026-02-27 12:00 A |  | 100% |  |  | start no earlier than 2026-02-28 09:00 | Бобренок В | 3h | 3h |
| 1257 | 2.275.4 | установить силиконовые уплотнители на пол |  | 2h | 2026-02-26 09:00 A | 2026-02-26 11:00 A |  | 100% |  |  | start no earlier than 2026-02-26 08:00 | Некрасов А | 2h | 2h |
| 1258 | 2.275.5 | заявка доводчики, шпингалеты |  | 30min | 2026-03-02 09:00 A | 2026-03-02 09:30 A |  | 100% |  |  | start no earlier than 2026-03-02 09:00 | Зорькин В | 0.5h | 0.5h |
| 1259 | 2.275.6 | доставка |  | 10d | 2026-03-02 09:30 A | 2026-03-16 09:30 A | 1258 | 100% |  |  | start no earlier than 2026-02-27 08:00 | Карабанов | 80h | 80h |
| 1260 | 2.275.7 | монтаж шпингалетов |  | 2h | 2026-03-25 09:00 A | 2026-03-25 11:00 A | 1259 | 100% |  |  | start no earlier than 2026-03-25 09:00 | Бобренок В | 2h | 2h |
| 1261 | 2.275.8 | **установить концевики блокировки открывания роль ворот, если не закрыты шлюз** |  | 109d | 2026-03-10 09:00 A | 2026-08-09 13:00 A |  | 100% |  |  |  |  | 52h | 52h |
| 1262 | 2.275.8.1 | **установить доводчики на ворота в зоне навесок** |  | 0.25d | 2026-06-14 09:00 A | 2026-06-15 11:00 A |  | 100% |  |  |  |  | 2h | 2h |
| 1263 | 2.275.8.1.1 | пробурить для задвижек ворот в полу отверстия -фиксация для проезда штабелера |  | 2h | 2026-06-14 09:00 A | 2026-06-15 11:00 A |  | 100% |  |  | start no earlier than 2026-06-14 09:00 | Бобренок В | 2h | 2h |
| 1264 | 2.275.8.2 | составить список материалов |  | 30min | 2026-03-10 09:00 A | 2026-03-10 09:30 A |  | 100% |  |  | start no earlier than 2026-03-10 09:00 | Дедов В | 0.5h | 0.5h |
| 1265 | 2.275.8.3 | заявка |  | 30min | 2026-03-10 09:30 A | 2026-03-10 10:00 A | 1264 | 100% |  |  | start no earlier than 2026-03-03 09:00 | Зорькин В | 0.5h | 0.5h |
| 1266 | 2.275.8.4 | доставка |  | 5d | 2026-03-10 10:00 A | 2026-03-17 10:00 A | 1265 | 100% |  |  | start no earlier than 2026-02-27 08:00 | Карабанов | 40h | 40h |
| 1267 | 2.275.8.5 | монтаж датчиков на двери / доводчиков. | manual | 4h | 2026-08-09 09:00 A | 2026-08-09 13:00 A | 1266 | 100% |  |  | start no earlier than 2026-08-09 09:00 | Бундин В | 4h | 4h |
| 1268 | 2.275.8.6 | монтаж кабеля от датчиков до блока рольворот, не подключать | manual | 4h | 2026-08-09 09:00 A | 2026-08-09 13:00 A | 1267 | 100% |  |  | start no earlier than 2026-08-09 09:00 | Бундин В | 4h | 4h |
| 1269 | 2.275.8.7 | установить концевики на ворота - установить закладные под них | manual | 1h | 2026-08-08 09:00 A | 2026-08-08 10:00 A |  | 100% |  |  | start no earlier than 2026-08-08 09:00 | Бундин В | 1h | 1h |
| 1270 | 2.276 | **схема блокировки роль ворот при открытым шлюзе + авт закрытие + датчик препятствия** |  | 5.5d | 2026-08-31 09:00 | 2026-09-07 13:00 |  |  | 132.09d |  |  |  | 8h |  |
| 1271 | 2.276.1 | разработка схемы |  | 4h | 2026-08-31 09:00 | 2026-08-31 13:00 |  |  | 135.59d | 3.5d | start no earlier than 2026-08-31 09:00 | Домоводов К | 4h |  |
| 1272 | 2.276.2 | монтаж |  | 4h | 2026-09-07 09:00 | 2026-09-07 13:00 | 1271FS+1d |  | 132.09d |  | start no earlier than 2026-09-07 09:00 | Труфанов А | 4h |  |
| 1273 | 2.277 | ремонт нижних сеток печи просева гранулы |  | 4h | 2025-01-23 09:00 A | 2025-01-23 13:00 A |  | 100% |  |  | start no earlier than 2025-01-23 09:00 | Черепанов И | 4h | 4h |

| ID | WBS | Task | Type | Duration | Start | Finish | Predecessors | Complete | Remaining | Total slack | Free slack | Constraint | Resources | Work | Actual work |
| --- | --- | --- | --- | --- | --- | --- | --- | --- | --- | --- | --- | --- | --- | --- | --- |
| 1274 | 2.278 | **замена реле безопасности бойлер ж** |  | 91.12d | 2024-10-16 09:00 A | 2025-02-20 10:00 A |  | 100% |  |  |  |  |  | 82h | 82h |
| 1275 | 2.278.1 | заЯВка |  | 1h | 2024-10-16 09:00 A | 2024-10-16 10:00 A |  | 100% |  |  |  | start no earlier than 2024-10-16 09:00 | Зорькин В | 1h | 1h |
| 1276 | 2.278.2 | доставка |  | 10d | 2024-10-16 10:00 A | 2024-10-30 10:00 A | 1275 | 100% |  |  |  | start no earlier than 2024-10-16 09:00 | Мультан | 80h | 80h |
| 1277 | 2.278.3 | замена |  | 1h | 2025-02-20 09:00 A | 2025-02-20 10:00 A | 1276 | 100% |  |  |  | start no earlier than 2025-02-20 09:00 | Некрасов А | 1h | 1h |
| 1278 | 2.279 | **установить пульты на регулировку шибиров вентиляции** |  | 11.25d? | 2026-08-31 09:00 | 2026-09-15 11:00 |  |  |  | 126.34d |  |  |  | 90h |  |
| 1279 | 2.279.1 | заявка на блок питания, шкаф управления, кабель |  | 2h | 2026-08-31 09:00 | 2026-08-31 11:00 |  |  |  | 126.34d | 0d | start no earlier than 2026-08-31 09:00 | Домоводов К | 2h |  |
| 1280 | 2.279.2 | доставка |  | 10d | 2026-08-31 11:00 | 2026-09-14 11:00 | 1279 |  |  | 126.34d | 0d | start no earlier than 2024-05-08 08:00 | Мультан | 80h |  |
| 1281 | 2.279.3 | монтаж |  | 1d? | 2026-09-14 11:00 | 2026-09-15 11:00 | 1280 |  |  | 126.34d |  | start no earlier than 2024-05-08 08:00 | Некрасов А | 8h |  |
| 1282 | 2.280 | заменить местами 2 зеркала маленький и большой бункер |  | 4h | 2024-10-03 09:00 | 2024-10-03 13:00 |  |  |  | 634.09d |  | start no earlier than 2024-10-03 09:00 | Черепанов И | 4h |  |
| 1283 | 2.281 | установить провод заземления на дверь шкафа упр сушки |  | 1h | 2024-01-08 09:00 | 2024-01-08 10:00 |  |  |  | 827.47d |  | start no earlier than 2024-01-06 09:00 | Тимофеев В | 1h |  |
| 1284 | 2.282 | **Палетообмотчик** |  | 50.06d | 2026-05-19 09:00 A | 2026-07-28 09:30 A |  | 100% |  |  |  |  |  | 80.67h | 80.67h |
| 1285 | 2.282.1 | заказать цепь |  | 10min | 2026-05-19 09:00 A | 2026-05-19 09:10 A |  | 100% |  |  |  | start no earlier than 2026-05-19 08:00 | Зорькин В | 0.17h | 0.17h |
| 1286 | 2.282.2 | доставка |  | 10d | 2026-05-29 09:00 A | 2026-06-11 18:00 A |  | 100% |  |  |  | start no earlier than 2026-05-29 09:00 | Карабанов | 80h | 80h |
| 1287 | 2.282.3 | замена цепи на вход в зону палетирования на складе взять 10М оцинкованная 3мм | manual | 30min | 2026-07-28 09:00 A | 2026-07-28 09:30 A |  | 100% |  |  |  | start no earlier than 2026-07-28 09:00 | Макаревич А | 0.5h | 0.5h |
| 1288 | 2.283 | Изготовить полочки из нержавейки по образцу на 18 баночек еще 2 шт |  | 3h | 2026-07-24 09:00 A | 2026-07-24 12:00 A |  | 100% |  |  |  | start no earlier than 2026-07-24 09:00 | Бундин В | 3h | 3h |
| 1289 | 2.284 | **разделить воду на ПГ и экструдер** |  | 0.25d | 2026-09-04 09:00 | 2026-09-04 11:00 |  |  |  | 0d |  |  |  | 2h |  |
| 1290 | 2.284.1 | изготовить промежуточную емкость для прекондера, подача воды, сделать по аналогу 3 цеха | manual | 2h | 2026-09-04 09:00 | 2026-09-04 11:00 |  |  |  |  |  | start no earlier than 2026-09-04 09:00 | Макаревич А | 2h |  |
| 1291 | 2.285 | **отмена** |  | 77.31d? | 2026-08-11 09:00 A | 2026-11-26 11:30 |  | 2% | 75.56d? | 74.28d |  |  |  | 11h | 0.25h |
| 1292 | 2.285.1 | **найти места утечки тепла под потолком- перемерзает труба подачи воды в 3 цех** |  | 77.31d? | 2026-08-11 09:00 A | 2026-11-26 11:30 |  | 2% | 75.56d? | 74.28d |  |  |  | 11h | 0.25h |
| 1293 | 2.285.1.1 | вспомнить из-за чего холод под потолком? Какие нужны мероприятия?- никто не помнит |  | 15min | 2026-08-11 09:00 A | 2026-08-11 09:15 A |  | 100% |  |  |  | start no earlier than 2026-08-11 09:00 | Некрасов А | 0.25h | 0.25h |
| 1294 | 2.285.1.2 | подать олегу заявку |  | 15min | 2026-08-31 09:00 | 2026-08-31 09:15 |  |  |  | 137.56d |  | start no earlier than 2026-08-31 09:00 | Зорькин В | 0.25h |  |
| 1295 | 2.285.1.3 | проверка пирометром / тепловизором |  | 2h | 2026-11-11 09:00 | 2026-11-11 11:00 |  |  |  | 74.28d | 0d | start no earlier than 2026-11-11 09:00 | Некрасов А | 2h |  |
| 1296 | 2.285.1.4 | заявка (подумать материал) |  | 15min | 2026-11-11 11:00 | 2026-11-11 11:15 | 1295 |  |  | 74.28d | 0d | start no earlier than 2026-08-13 09:00 | Зорькин В | 0.25h |  |
| 1297 | 2.285.1.5 | доставка- контроль |  | 15min | 2026-11-25 11:15 | 2026-11-25 11:30 | 1296FS+10d |  |  | 74.28d | 0d | start no earlier than 2026-08-12 09:00 | Зорькин В | 0.25h |  |
| 1298 | 2.285.1.6 | монтаж |  | 1d? | 2026-11-25 11:30 | 2026-11-26 11:30 | 1297 |  |  | 74.28d |  | start no earlier than 2026-08-11 09:00 | Тимофеев В | 8h |  |

| ID | WBS | Task | Type | Duration | Start | Finish | Predecessors | Complete | Remaining | Total slack | Free slack | Constraint | Resources | Work | Actual work |
| --- | --- | --- | --- | --- | --- | --- | --- | --- | --- | --- | --- | --- | --- | --- | --- |
| 1299 | 2.286 | **вентиляция** |  | 11.25d | 2026-08-13 09:00 A | 2026-08-28 11:00 A |  | 100% |  |  |  |  |  | 4h | 4h |
| 1300 | 2.286.1 | Монтаж частотников на ШУ | manual | 2h | 2026-08-13 09:00 A | 2026-08-13 11:00 A |  | 100% |  |  |  | start no earlier than 2026-08-13 09:00 | Труфанов А | 2h | 2h |
| 1301 | 2.286.2 | В ШУ вырезать окна для частотников в двери, закрыть оргстеклом. Желательно на шарниры. |  | 2h | 2026-08-28 09:00 A | 2026-08-28 11:00 A |  | 100% |  |  |  | start no earlier than 2026-08-31 09:00 | Бундин В | 2h | 2h |
| 1302 | 2.287 | **Синий бункер** |  | 0.25d | 2026-07-30 09:00 A | 2026-07-30 11:00 A |  | 100% |  |  |  |  |  | 4h | 4h |
| 1303 | 2.287.1 | Ремонт синего бункера в зоне вибратора |  | 2h | 2026-07-30 09:00 A | 2026-07-30 11:00 A |  | 100% |  |  |  | start no earlier than 2026-07-30 09:00 | Труфанов А; Бундин В | 4h | 4h |
| 1304 | 2.288 | **Охладитель** |  | 0.38d | 2026-07-30 09:00 A | 2026-07-30 12:00 A |  | 100% |  |  |  |  |  | 3h | 3h |
| 1305 | 2.288.1 | Установка защиты сетки на полозья/направляющие, спросить Зорькина |  | 3h | 2026-07-30 09:00 A | 2026-07-30 12:00 A |  | 100% |  |  |  | start no earlier than 2026-07-30 09:00 | Тимофеев В | 3h | 3h |
| 1306 | 2.289 | Осмотреть/устранить течь раковины возле туалета |  | 1h | 2026-07-29 08:00 A | 2026-07-29 10:00 A |  | 100% |  |  |  | start no earlier than 2026-07-29 08:00 | Дедов В | 1h | 1h |
| 1307 | 3 | **3 цех** |  | 288d? | 2025-09-01 09:00 A | 2026-10-07 18:00 |  | 75% | 71.03d? | 109.59d |  |  |  | 1261.5h | 969.58h |
| 1308 | 3.1 | По схемам Труфанова разобраться с автоматикой шкафа и подключить 3 датчика уровня и подписать, где и что находится +кнопки и переключатели на шкафу тоже подписать |  | 3h | 2026-09-07 09:00 | 2026-09-07 12:00 |  |  |  | 132.22d |  | start no earlier than 2026-09-05 09:00 | Дедов В | 3h |  |
| 1309 | 3.2 | **установить ограничитель на дверь что бы попадала под движение рольворот** |  | 6.19d | 2026-09-04 09:00 | 2026-09-14 10:30 |  |  |  | 127.41d |  |  |  | 1.5h |  |
| 1310 | 3.2.1 | заявка |  | 15min | 2026-09-04 09:00 | 2026-09-04 09:15 |  |  |  | 127.41d | 0d | start no earlier than 2026-09-04 09:00 | Зорькин В | 0.25h |  |
| 1311 | 3.2.2 | контроль доставки |  | 15min | 2026-09-11 09:15 | 2026-09-11 09:30 | 1310FS+5d |  |  | 127.41d | 0d | start no earlier than 2026-09-03 08:00 | Зорькин В | 0.25h |  |
| 1312 | 3.2.3 | монтаж |  | 1h | 2026-09-14 09:30 | 2026-09-14 10:30 | 1311FS+1d |  |  | 127.41d |  | start no earlier than 2026-09-03 08:00 | Некрасов А | 1h |  |
| 1313 | 3.3 | приварить к люку сливной ямы вспомогательную ручку (ручка весит на стеллаже в слесарке) | manual | 2h | 2026-08-30 09:00 | 2026-08-30 11:00 |  |  |  |  |  | start no earlier than 2026-08-30 09:00 | Бундин В | 2h |  |
| 1314 | 3.4 | **монтаж унитаз, получить на складе** |  | 0d | 2026-08-17 09:00 A | 2026-08-17 09:00 A |  | 100% |  |  |  |  |  |  |  |
| 1315 | 3.4.1 | крышка бачка лопнувшая- поменять по гарантии | milestone | 0d | 2026-08-17 09:00 A | 2026-08-17 09:00 A |  | 100% |  |  |  | start no earlier than 2026-08-17 09:00 | Зорькин В |  |  |
| 1316 | 3.5 | закрыить металлом 1.5мм щель стена / площадка загрузки муки. Между рольворотой и стеной с окнами |  | 2h | 2026-08-15 09:00 A | 2026-08-17 11:00 A |  | 100% |  |  |  | start no earlier than 2026-08-15 09:00 | Бундин В | 2h | 2h |
| 1317 | 3.6 | закрыть щель битумной лентой стык площадка-профлист стенка. Полоску клеить из нутри, обезжирить. |  | 2h | 2026-08-16 09:00 A | 2026-08-17 11:00 A |  | 100% |  |  |  | start no earlier than 2026-08-16 09:00 | Бундин В | 2h | 2h |
| 1318 | 3.7 | монтаж светильник в корридор / лестница на площадку жиров |  | 3h | 2026-08-16 09:00 A | 2026-08-17 12:00 A |  | 100% |  |  |  | start no earlier than 2026-08-16 09:00 | Бундин В | 3h | 3h |
| 1319 | 3.8 | **ломает гранулу после печи** |  | 13.5d? | 2026-08-18 09:00 A | 2026-09-04 13:00 |  | 31% | 9.34d? | 133.09d |  |  |  | 24.5h | 8.25h |
| 1320 | 3.8.1 | тест на ручной загрузке |  | 2h | 2026-08-18 09:00 A | 2026-08-18 11:00 A |  | 100% |  |  |  | start no earlier than 2026-08-18 09:00 | Шуранов Ю | 2h | 2h |
| 1321 | 3.8.2 | полная раборка трассы на ревизию острых граней? |  | 2h | 2026-08-19 09:00 A | 2026-08-19 11:00 A |  | 100% |  |  |  | start no earlier than 2026-08-19 09:00 | Тимофеев В | 2h | 2h |
| 1322 | 3.8.3 | определить параметры нории для запроса цены |  | 2h | 2026-08-18 09:00 A | 2026-08-18 11:00 A |  | 100% |  |  |  | start no earlier than 2026-08-18 09:00 | Шуранов Ю | 2h | 2h |
| 1323 | 3.8.4 | контроль отвта |  | 15min | 2026-09-03 09:00 | 2026-09-03 09:15 | 1322FS+5d |  |  | 134.56d |  | start no earlier than 2026-09-03 09:00 | Зорькин В | 0.25h |  |
| 1324 | 3.8.5 | изготовить новый отвод 90 с фланцем, учесть степеньку. Позвонить Юре |  | 4h | 2026-09-04 09:00 | 2026-09-04 13:00 |  |  |  | 133.09d |  | start no earlier than 2026-09-04 09:00 | Макаревич А | 4h |  |
| 1325 | 3.8.6 | тест |  | 1h | 2026-08-19 09:00 A | 2026-08-19 10:00 A |  | 100% |  |  |  | start no earlier than 2026-08-19 09:00 | Тимофеев В; Шуранов Ю | 2h | 2h |
| 1326 | 3.8.7 | переварить фланец на угловом соединении (объясню по телефону). То же самое | milestone | 0h | 2026-09-04 09:00 | 2026-09-04 09:00 |  |  |  | 133.59d |  | start no earlier than 2026-09-04 09:00 | Макаревич А |  |  |
| 1327 | 3.8.8 | печать переходника на 3д принтере |  | 1d? | 2026-08-31 09:00 | 2026-08-31 18:00 |  |  |  | 136.59d |  | start no earlier than 2026-08-31 09:00 | Домоводов К | 8h |  |
| 1328 | 3.8.9 | проверка размещения нории от квадропака |  | 15min | 2026-08-18 09:00 A | 2026-08-18 09:15 A |  | 100% |  |  |  | start no earlier than 2026-08-18 09:00 | Шуранов Ю | 0.25h | 0.25h |
| 1329 | 3.8.10 | установить угловой фланец на пневмотрассу |  | 4h | 2026-09-04 09:00 | 2026-09-04 13:00 |  |  |  | 133.09d |  | start no earlier than 2026-09-04 09:00 | Макаревич А | 4h |  |

| ID | WBS | Task | Type | Duration | Start | Finish | Predecessors | Complete | Remaining | Total slack | Free slack | Constraint | Resources | Work | Actual work |
| --- | --- | --- | --- | --- | --- | --- | --- | --- | --- | --- | --- | --- | --- | --- | --- |
| 1330 | 3.9 | **доп мощности для приточной вентиляции** |  | 34d? | 2026-08-21 09:00 A | 2026-10-07 18:00 |  | 16% | 28.63d? | 109.59d |  |  |  | 152h | 24h |
| 1331 | 3.9.1 | проект автоматика ограничения мощности в автомате |  | 1d? | 2026-08-31 09:00 | 2026-08-31 18:00 |  |  |  | 109.59d | 0d | start no earlier than 2026-08-31 09:00 | Домоводов К | 8h |  |
| 1332 | 3.9.2 | составить ТЗ на монтаж кабеля |  | 3d | 2026-08-21 09:00 A | 2026-08-25 18:00 A |  | 100% |  |  |  | start no earlier than 2026-08-21 09:00 | Домоводов К | 24h | 24h |
| 1333 | 3.9.3 | получить КП / счет договор | milestone | 0d | 2026-09-01 18:00 | 2026-09-01 18:00 | 1331FS+1d, 1332FS+2d |  |  | 109.59d | 0d | start no earlier than 2026-08-27 09:00 | Домоводов К |  |  |
| 1334 | 3.9.4 | предоплата | milestone | 0d | 2026-09-02 18:00 | 2026-09-02 18:00 | 1333FS+1d |  |  | 109.59d | 0d | start no earlier than 2026-08-10 08:00 | Домоводов К |  |  |
| 1335 | 3.9.5 | монтаж |  | 15d | 2026-09-17 09:00 | 2026-10-07 18:00 | 1334FS+10d |  |  | 109.59d |  | start no earlier than 2026-08-10 08:00 | Подрядчик | 120h |  |
| 1336 | 3.10 | сделать перемычку на нижней части системы загрузки палет подачи жиров и гидрализата | manual | 3h | 2026-08-15 09:00 | 2026-08-15 12:00 |  |  |  |  |  | start no earlier than 2026-08-15 09:00 | Бундин В | 3h |  |
| 1337 | 3.11 | **сборка квадропака 3 цех** |  | 15.25d | 2026-08-14 09:00 A | 2026-09-04 11:00 |  | 52% | 7.29d | 133.34d |  |  |  | 29h | 14h |
| 1338 | 3.11.1 | Монтаж/позиционирование квадропака |  | 5h | 2026-09-02 09:00 A | 2026-09-02 15:00 A |  | 100% |  |  |  | start no earlier than 2026-09-02 09:00 | Труфанов А | 5h | 5h |
| 1339 | 3.11.2 | перестановка норий, задействовать бункер |  | 2h | 2026-08-17 09:00 A | 2026-08-17 11:00 A |  | 100% |  |  |  | start no earlier than 2026-08-17 09:00 | Тимофеев В; Некрасов А | 4h | 4h |
| 1340 | 3.11.3 | сборка накопительный стол |  | 2h | 2026-08-19 09:00 A | 2026-08-19 11:00 A | 1339 | 100% |  |  |  | start no earlier than 2026-08-19 09:00 | Тимофеев В | 2h | 2h |
| 1341 | 3.11.4 | подключение дозатор |  | 1h | 2026-08-14 09:00 | 2026-08-14 10:00 |  |  |  | 148.47d |  | start no earlier than 2026-08-14 09:00 | Труфанов А | 1h |  |
| 1342 | 3.11.5 | зарисовка схема ШУ нория - понять управление бункером |  | 4h | 2026-08-14 09:00 | 2026-08-14 13:00 |  |  |  | 147.59d | 0d | start no earlier than 2026-08-14 09:00 | Труфанов А | 4h |  |
| 1343 | 3.11.6 | подключение нория к упаковке |  | 2h | 2026-08-14 14:00 | 2026-08-14 16:00 | 1342 |  |  | 147.59d | 14.25d | start no earlier than 2026-08-14 09:00 | Труфанов А | 2h |  |
| 1344 | 3.11.7 | подключение вводный кабель (питание) информация у Труфанова |  | 2h | 2026-09-04 09:00 | 2026-09-04 11:00 | 1343 |  |  | 133.34d |  | start no earlier than 2026-09-04 09:00 | Бундин В; Труфанов А | 4h |  |
| 1345 | 3.11.8 | подключениекомпрессор |  | 1h | 2026-09-03 09:00 A | 2026-09-03 10:00 A | 1344 | 100% |  |  |  | start no earlier than 2026-09-03 09:00 | Бобренок В | 1h | 1h |
| 1346 | 3.11.9 | Установка квадропака (позиционирование нижней машины) информация у Труфанова |  | 2h | 2026-09-02 09:00 | 2026-09-02 11:00 |  |  |  | 135.34d |  | start no earlier than 2026-09-02 09:00 | Труфанов А; Бундин В | 4h |  |
| 1347 | 3.11.10 | Выставить опоры верхней рамы и лестницы по уровню |  | 1h | 2026-09-02 09:00 A | 2026-09-02 10:00 A |  | 100% |  |  |  | start no earlier than 2026-09-02 08:00 | Бундин В | 1h | 1h |
| 1348 | 3.11.11 | Редуктор стола повернуть кабелем к электрощиту (на столе) |  | 30min | 2026-09-02 09:00 A | 2026-09-02 09:30 A |  | 100% |  |  |  | start no earlier than 2026-09-02 08:00 | Бундин В | 0.5h | 0.5h |
| 1349 | 3.11.12 | Провод от редуктора и кнопки в гофре закрепить по раме стола завести в шкаф |  | 30min | 2026-09-02 09:00 A | 2026-09-02 09:30 A |  | 100% |  |  |  | start no earlier than 2026-09-02 08:00 | Бундин В | 0.5h | 0.5h |
| 1350 | 3.12 | сделать ручку и зацепной крюк для открытия люка сливной ямы | manual | 2h | 2026-08-08 09:00 A | 2026-08-08 11:00 A |  | 100% |  |  |  | start no earlier than 2026-08-08 09:00 | Бобренок В | 2h | 2h |
| 1351 | 3.13 | **карусель добавить перемычку снизу, чтобы не выпал мешок** |  | 14.25d | 2026-08-18 09:00 A | 2026-09-07 11:00 |  | 7% | 13.23d | 132.34d |  |  |  | 2.33h | 0.17h |
| 1352 | 3.13.1 | заказать краску |  | 10min | 2026-08-18 09:00 A | 2026-08-18 09:10 A |  | 100% |  |  |  | start no earlier than 2026-08-18 09:00 | Шуранов Ю | 0.17h | 0.17h |
| 1353 | 3.13.2 | контроль доставки |  | 10min | 2026-08-31 09:00 | 2026-08-31 09:10 | 1352FS+5d |  |  | 136.32d | 3.98d | start no earlier than 2026-08-31 09:00 | Зорькин В | 0.17h |  |
| 1354 | 3.13.3 | покрасить перемычки система безопасности) |  | 2h | 2026-09-07 09:00 | 2026-09-07 11:00 | 1353FS+1d |  |  | 132.34d |  | start no earlier than 2026-09-07 09:00 | Тимофеев В | 2h |  |
| 1355 | 3.14 | убрать битумную ленту снаружи мезонина |  | 1h | 2026-08-04 08:00 A | 2026-08-04 10:00 A |  | 100% |  |  |  | start no earlier than 2026-08-04 08:00 | Макаревич А | 1h | 1h |
| 1356 | 3.15 | хорошо закрепить шланг подачи воды в прекондеционер |  | 2h | 2026-08-04 08:00 A | 2026-08-04 11:00 A |  | 100% |  |  |  | start no earlier than 2026-08-04 08:00 | Макаревич А | 2h | 2h |
| 1357 | 3.16 | на выходе ротаметра поменять шланг большего диаметра |  | 1h | 2026-07-31 08:00 A | 2026-07-31 10:00 A |  | 100% |  |  |  | start no earlier than 2026-07-31 08:00 | Тимофеев В | 1h | 1h |
| 1358 | 3.17 | покрасить кронштейн крепления ротаметра |  | 1h | 2026-07-31 09:00 A | 2026-07-31 10:00 A |  | 100% |  |  |  | start no earlier than 2026-07-31 09:00 | Бундин В | 1h | 1h |
| 1359 | 3.18 | не набирает заданную температуру 4 зона экструдера- разобраться |  | 2h | 2026-07-30 08:00 A | 2026-07-30 11:00 A |  | 100% |  |  |  | start no earlier than 2026-07-30 08:00 | Дедов В | 2h | 2h |
| 1360 | 3.19 | сборка кожухи на печи |  | 2h | 2026-07-15 09:00 A | 2026-07-15 11:00 A |  | 100% |  |  |  | start no earlier than 2026-07-15 09:00 | Бундин В | 2h | 2h |

| ID | WBS | Task | Type | Duration | Start | Finish | Predecessors | Complete | Remaining | Actual start | Total slack | Constraint | Resources | Work | Actual work |
| --- | --- | --- | --- | --- | --- | --- | --- | --- | --- | --- | --- | --- | --- | --- | --- |
| 1361 | 3.20 | **установить зеркало сферическое на бункер** |  | 15.5d | 2026-07-07 09:00 A | 2026-07-28 13:00 A |  | 100% |  |  |  |  |  | 5h | 5h |
| 1362 | 3.20.1 | заявка |  | 1h | 2026-07-07 09:00 A | 2026-07-07 10:00 A |  | 100% |  |  |  | start no earlier than 2026-07-07 09:00 | Зорькин В | 1h | 1h |
| 1363 | 3.20.2 | контроль доставки | milestone | 0d | 2026-07-17 10:00 A | 2026-07-17 10:00 A | 1362FS+10d | 100% |  |  |  | start no earlier than 2026-07-14 08:00 | Зорькин В |  |  |
| 1364 | 3.20.3 | монтаж |  | 4h | 2026-07-28 09:00 A | 2026-07-28 13:00 A | 1363FS+1d | 100% |  |  |  | start no earlier than 2026-07-28 09:00 | Макаревич А | 4h | 4h |
| 1365 | 3.21 | поиск след от смазки на охладителе |  | 1h | 2026-07-10 09:00 A | 2026-07-10 10:00 A |  | 100% |  |  |  | start no earlier than 2026-07-10 09:00 | Тимофеев В; Зорькин В | 2h | 2h |
| 1366 | 3.22 | **установить наосос центробежный на бочку слив с парогенератора, врезать штуцер в бочку** |  | 0.25d | 2026-07-15 09:00 A | 2026-07-15 11:00 A |  | 100% |  |  |  |  |  | 4h | 4h |
| 1367 | 3.22.1 | орг закуп с курьером |  | 2h | 2026-07-15 09:00 A | 2026-07-15 11:00 A |  | 100% |  |  |  | start no earlier than 2026-07-15 09:00 | Зорькин В | 2h | 2h |
| 1368 | 3.22.2 | монтаж штуцер |  | 2h | 2026-07-15 09:00 A | 2026-07-15 11:00 A |  | 100% |  |  |  | start no earlier than 2026-07-15 09:00 | Бобренок В | 2h | 2h |
| 1369 | 3.23 | **вода идет не стабильно** |  | 4.38d | 2026-07-09 09:00 A | 2026-07-15 12:00 A |  | 100% |  |  |  |  |  | 8h | 8h |
| 1370 | 3.23.1 | Поставить гидроаккумулятор на насос между выходом насосной станции и 3-х ходомым краном подачи воды в экструдер и заменить трубки на шланги |  | 3h | 2026-07-09 09:00 A | 2026-07-09 12:00 A |  | 100% |  |  |  | start no earlier than 2026-07-09 09:00 | Тимофеев В | 3h | 3h |
| 1371 | 3.23.2 | тест работы воды с ПГ на давлении питательного насоса 3+ |  | 1h | 2026-07-10 09:00 A | 2026-07-10 10:00 A |  | 100% |  |  |  | start no earlier than 2026-07-10 09:00 | Зорькин В; Тимофеев В | 2h | 2h |
| 1372 | 3.23.3 | орг закуп с курьером |  | 2h | 2026-07-15 09:00 A | 2026-07-15 11:00 A | 1367SS | 100% |  |  |  | start no earlier than 2026-07-13 09:00 | Зорькин В | 2h | 2h |
| 1373 | 3.23.4 | замена шланг напорный с насоса до ротаметра |  | 1h | 2026-07-15 11:00 A | 2026-07-15 12:00 A | 1372 | 100% |  |  |  | start no earlier than 2026-07-13 09:00 | Бобренок В | 1h | 1h |
| 1374 | 3.24 | Доработать крутилку ссыпа гранулы, прихватить на сварку |  | 1h | 2026-07-09 09:00 A | 2026-07-09 10:00 A |  | 100% |  |  |  | start no earlier than 2026-07-09 09:00 | Макаревич А | 1h | 1h |
| 1375 | 3.25 | удлинить лоток ножевого узла, до кромки загрузки применик пневмотранспорта |  | 3h | 2026-07-09 09:00 A | 2026-07-09 12:00 A |  | 100% |  |  |  | start no earlier than 2026-07-09 09:00 | Макаревич А | 3h | 3h |
| 1376 | 3.26 | Снять торцевые дверцы на печи для доступа к сетке |  | 1h | 2026-07-08 09:00 A | 2026-07-08 10:00 A |  | 100% |  |  |  | start no earlier than 2026-07-08 08:00 | Бундин В | 1h | 1h |
| 1377 | 3.27 | Снять кожухи на редукторах на цепях |  | 1h | 2026-07-08 09:00 A | 2026-07-08 10:00 A |  | 100% |  |  |  | start no earlier than 2026-07-08 08:00 | Бундин В | 1h | 1h |
| 1378 | 3.28 | Установка раковины,унитаза в 3 цеху 2 этаж |  | 4h | 2026-07-07 09:00 A | 2026-07-07 13:00 A |  | 100% |  |  |  | start no earlier than 2026-07-07 09:00 | Бундин В | 4h | 4h |
| 1379 | 3.29 | Установить тройник на компрессор маленький, на входе. (тройни пришел сегодня на склад) |  | 1h | 2026-07-08 09:00 A | 2026-07-08 10:00 A |  | 100% |  |  |  | start no earlier than 2026-07-08 08:00 | Бундин В | 1h | 1h |
| 1380 | 3.30 | Вернуть упакованный унитаз на склад |  | 30min | 2026-07-08 09:00 A | 2026-07-08 09:30 A |  | 100% |  |  |  | start no earlier than 2026-07-08 08:00 | Бундин В | 0.5h | 0.5h |
| 1381 | 3.31 | **на тепловых реле 1 и 2 смесителя добавить порог выключения** |  | 1h? | 2026-07-11 09:00 | 2026-07-11 10:00 |  | 33% | 0.67h? | 2026-07-14 09:00 |  |  |  | 1.5h | 0.5h |
| 1382 | 3.31.1 | заявка на тепловые реле с большим номинолом |  | 15min | 2026-07-14 09:00 A | 2026-07-14 09:15 A |  | 100% |  |  |  | start no earlier than 2026-07-14 08:00 | Зорькин В | 0.25h | 0.25h |
| 1383 | 3.31.2 | доставка контроль |  | 15min | 2026-08-28 09:00 A | 2026-08-28 09:15 A | 1382FS+5d | 100% |  |  |  | start no earlier than 2026-08-28 09:00 | Зорькин В | 0.25h | 0.25h |
| 1384 | 3.31.3 | замена тепловых реле, получить на складе |  | 1h | 2026-09-03 09:00 | 2026-09-03 10:00 | 1383FS+1d |  |  |  | 134.47d | start no earlier than 2026-09-03 09:00 | Бобренок В | 1h |  |
| 1385 | 3.32 | сделать ручки с резьбой для снятия матрицы экструдера |  | 2h | 2026-07-04 09:00 A | 2026-07-06 11:00 A |  | 100% |  |  |  | start no earlier than 2026-07-04 09:00 | Макаревич А | 2h | 2h |
| 1386 | 3.33 | сделать противоудары головы на циклоне в зоне жиров | manual | 1h | 2026-07-26 09:00 A | 2026-07-26 10:00 A |  | 100% |  |  |  | start no earlier than 2026-07-26 09:00 | Макаревич А | 1h | 1h |
| 1387 | 3.34 | сделать откидную крышку на ножевом узле (расскажу как) |  | 8h | 2026-07-04 09:00 A | 2026-07-06 18:00 A |  | 100% |  |  |  | start no earlier than 2026-07-04 09:00 | Макаревич А | 8h | 8h |
| 1388 | 3.35 | подклинивает охладитель (все ярусы)- разобраться почему |  | 2h | 2026-07-11 09:00 A | 2026-07-13 11:00 A |  | 100% |  |  |  | start no earlier than 2026-07-11 09:00 | Макаревич А | 2h | 2h |

| ID | WBS | Task | Type | Duration | Start | Finish | Complete | Actual finish | Total slack | Constraint | Resources | Work | Actual work |
| --- | --- | --- | --- | --- | --- | --- | --- | --- | --- | --- | --- | --- | --- |
| 1389 | 3.36 | **откалибровать весы красных смесителей, муку с контрольным весом обеспечит 5ц** |  | 2h? | 2026-07-29 09:00 A | 2026-07-29 11:00 | 100% | 2026-08-03 18:00 |  |  | Дедов В | 10h | 10h |
| 1390 | 3.36.1 | вызвать специалистов |  | 1d? | 2026-08-03 09:00 A | 2026-08-03 18:00 A | 100% |  |  | start no earlier than 2026-08-03 09:00 | Шуранов Ю | 8h | 8h |
| 1391 | 3.37 | **установка частотника на шнек подачи со смесителей на ногу опоры шнека в разрыв питания шнека** |  | 0.12d | 2026-07-04 09:00 A | 2026-07-06 10:00 A | 100% |  |  |  |  | 1h | 1h |
| 1392 | 3.37.1 | демонтировать частотник шнека (в слесарку) |  | 1h | 2026-07-04 09:00 A | 2026-07-06 10:00 A | 100% |  |  | start no earlier than 2026-07-04 09:00 | Дедов В | 1h | 1h |
| 1393 | 3.38 | щель запенить выход из цеха |  | 1d? | 2026-07-02 09:00 A | 2026-07-02 18:00 A | 100% |  |  | start no earlier than 2026-07-02 09:00 | Олег | 8h | 8h |
| 1394 | 3.39 | силиконим двери прекондиционера (одну эксперимент) |  | 2h | 2026-07-02 09:00 A | 2026-07-02 11:00 A | 100% |  |  | start no earlier than 2026-07-03 09:00 | Дедов В | 2h | 2h |
| 1395 | 3.40 | наростить лопатку датчика переполнения на приемном лотке прекондиционера |  | 1h | 2026-06-30 09:00 A | 2026-06-30 10:00 A | 100% |  |  | start no earlier than 2026-06-30 09:00 | Бундин В | 1h | 1h |
| 1396 | 3.41 | установка бака стабилизации на подачу воды в прекондеционер (подключение) |  | 2h | 2026-07-02 09:00 A | 2026-07-02 11:00 A | 100% |  |  | start no earlier than 2026-07-02 09:00 | Тимофеев В | 2h | 2h |
| 1397 | 3.42 | изготовить фильтры на установки охлаждения |  | 1d? | 2026-07-06 09:00 | 2026-07-06 18:00 |  |  | 176.59d | start no earlier than 2026-07-06 09:00 | Тимофеев В | 8h |  |
| 1398 | 3.43 | удлинить горловину для второго красного смесителя |  | 2h | 2026-06-29 09:00 A | 2026-06-29 11:00 A | 100% |  |  | start no earlier than 2026-06-29 09:00 | Бундин В | 2h | 2h |
| 1399 | 3.44 | закрепить датчик сырья лопаткой в горке, под магнитом. Бункер экструдера |  | 4h | 2026-06-27 09:00 A | 2026-06-29 13:00 A | 100% |  |  | start no earlier than 2026-06-27 09:00 | Бундин В | 4h | 4h |
| 1400 | 3.45 | над магнитом сделать приемную воронку, борта, чтобы не пересыпалось сырье |  | 4h | 2026-06-27 09:00 A | 2026-06-29 13:00 A | 100% |  |  | start no earlier than 2026-06-27 09:00 | Бундин В | 4h | 4h |
| 1401 | 3.46 | удлинить воронку смесителя до горловины шнека. Приготовить сварщику, обяснить что нужно сделать. Вместо вибратора |  | 4h | 2026-06-27 09:00 A | 2026-06-29 13:00 A | 100% |  |  | start no earlier than 2026-06-27 09:00 | Дедов В; Бундин В | 8h | 8h |
| 1402 | 3.47 | байпас для масленной станции |  | 2h | 2026-07-01 09:00 A | 2026-07-01 11:00 A | 100% |  |  | start no earlier than 2026-07-01 09:00 | Тимофеев В | 2h | 2h |
| 1403 | 3.48 | **площадка для операторов для доступа к бункеру, что бы не наступали на краны** |  | 0.12d | 2026-07-02 09:00 A | 2026-07-02 10:00 A | 100% |  |  |  | Макаревич А; Некрасов А | 4h | 4h |
| 1404 | 3.48.1 | убрать заусенцы болгаркой |  | 1h | 2026-07-02 09:00 A | 2026-07-02 10:00 A | 100% |  |  | start no earlier than 2026-07-02 09:00 | Макаревич А; Тимофеев В | 2h | 2h |
| 1405 | 3.49 | **монтаж второй площадки с другой стороны (лестницу берем у 5 цеха -белую)** |  | 0.12d | 2026-07-03 09:00 A | 2026-07-03 10:00 A | 100% |  |  |  | Макаревич А; Некрасов А | 3h | 3h |
| 1406 | 3.49.1 | покрасить лестницу (мастер ц.1 даст людей- контроль) |  | 1h | 2026-07-03 09:00 A | 2026-07-03 10:00 A | 100% |  |  | start no earlier than 2026-07-03 09:00 | Макаревич А | 1h | 1h |
| 1407 | 3.50 | закрутить крышку двигателя улитки на циклоне жиров |  | 1h | 2026-06-25 09:00 A | 2026-06-25 10:00 A | 100% |  |  | start no earlier than 2026-06-25 09:00 | Дедов В | 1h | 1h |
| 1408 | 3.51 | укоротить шланг подачи масла | manual | 1h | 2026-06-25 08:00 A | 2026-06-25 09:00 A | 100% |  |  | start no earlier than 2026-06-25 08:00 | Макаревич А | 1h | 1h |
| 1409 | 3.52 | проверка подачи воды на парогенератор и прекондиционер, почему клапан подачи в бак заблокирован. |  | 2h | 2026-06-25 09:00 A | 2026-06-25 11:00 A | 100% |  |  | start no earlier than 2026-06-25 09:00 | Дедов В | 2h | 2h |
| 1410 | 3.53 | проверить парогенератор |  | 0.5h | 2026-06-25 09:00 A | 2026-06-25 09:30 A | 100% |  |  | start no earlier than 2026-06-25 09:00 | Дедов В | 0.5h | 0.5h |
| 1411 | 3.54 | вскрыть парогенератор, чистка электродов- фото |  | 3h | 2026-06-25 08:00 A | 2026-06-25 12:00 A | 100% |  |  | start no earlier than 2026-06-25 08:00 | Макаревич А | 3h | 3h |
| 1412 | 3.55 | подключить ролеты на охладителе |  | 1h | 2026-06-25 09:00 A | 2026-06-25 10:00 A | 100% |  |  | start no earlier than 2026-06-25 09:00 | Дедов В | 1h | 1h |
| 1413 | 3.56 | изготовление и установка шибера в лоток |  | 2h | 2026-06-25 09:00 A | 2026-06-25 11:00 A | 100% |  |  | start no earlier than 2026-06-25 09:00 | Дедов В | 2h | 2h |
| 1414 | 3.57 | контроль печи, будет включена пока не перестанет дымить |  | 1h | 2026-06-24 09:00 A | 2026-06-24 10:00 A | 100% |  |  | start no earlier than 2026-06-24 09:00 | Труфанов А; Макаревич А | 2h | 2h |

| ID | WBS | Task | Type | Duration | Start | Finish | Predecessors | Complete | Constraint | Resources | Work | Actual work |
| --- | --- | --- | --- | --- | --- | --- | --- | --- | --- | --- | --- | --- |
| 1415 | 3.58 | **взять на складе у Веры кронштейн под щетку, закрепить на него саму щетку и прикрутить на мезонине навесок в сторону ворот** |  | 28.38d | 2026-07-07 09:00 A | 2026-08-14 12:00 A |  | 100% |  |  | 3.5h | 3.5h |
| 1416 | 3.58.1 | заказать профиль 5мм |  | 15min | 2026-07-07 09:00 A | 2026-07-07 09:15 A |  | 100% | start no earlier than 2026-07-07 09:00 | Зорькин В | 0.25h | 0.25h |
| 1417 | 3.58.2 | контроль досставки |  | 15min | 2026-07-17 09:15 A | 2026-07-17 09:30 A | 1416FS+10d | 100% | start no earlier than 2026-07-07 09:00 | Зорькин В | 0.25h | 0.25h |
| 1418 | 3.58.3 | прикрепить на клепки/ саморезу щетку и установить на мезонине где ворота (все это находиться в 3 ц. справа на входе) Еще одна щетка есть у веры на складе, висела на кабинке | manual | 3h | 2026-08-14 09:00 A | 2026-08-14 12:00 A | 1417 | 100% |  | Макаревич А | 3h | 3h |
| 1419 | 3.59 | кабель трется о дверь, уложить в лоток, приподнять -закрепить к воздуховоду |  | 3h | 2026-06-24 09:00 A | 2026-06-24 12:00 A |  | 100% | start no earlier than 2026-06-24 09:00 | Труфанов А | 3h | 3h |
| 1420 | 3.60 | на частотнике пневмоулитки на жирах- увеличить время разгона и торможения |  | 1h | 2026-06-23 09:00 A | 2026-06-23 10:00 A |  | 100% | start no earlier than 2026-06-23 09:00 | Труфанов А | 1h | 1h |
| 1421 | 3.61 | проверить редукторы на печи (утечка есть или нет) |  | 1h | 2026-06-23 09:00 A | 2026-06-23 10:00 A |  | 100% | start no earlier than 2026-06-23 09:00 | Труфанов А | 1h | 1h |
| 1422 | 3.62 | убрать трубу нерж в коридоре возле охладителя в комнату на выходе из цеха | manual | 1h | 2026-06-20 09:00 A | 2026-06-20 10:00 A |  | 100% | start no earlier than 2026-06-20 09:00 | Бундин В | 1h | 1h |
| 1423 | 3.63 | капает с улитки вытяжки печи- просверлить сверло 6мм |  | 1h | 2026-06-20 09:00 A | 2026-06-22 10:00 A |  | 100% | start no earlier than 2026-06-20 09:00 | Дедов В | 1h | 1h |
| 1424 | 3.64 | герметизация всех стыков вневмотрубы аллюминевым скотчем (улитка с печи на жиры) | manual | 1h | 2026-06-21 09:00 A | 2026-06-21 10:00 A |  | 100% | start no earlier than 2026-06-21 09:00 | Труфанов А | 1h | 1h |
| 1425 | 3.65 | отпилить одну перекладину опоры вентиляции, чтобы открывалась дверь печи | manual | 3h | 2026-06-21 09:00 A | 2026-06-21 12:00 A |  | 100% | start no earlier than 2026-06-21 09:00 | Бундин В | 3h | 3h |
| 1426 | 3.66 | проверка подачи воды в прекондиционер | manual | 1h | 2026-06-21 09:00 A | 2026-06-21 10:00 A |  | 100% | start no earlier than 2026-06-21 09:00 | Труфанов А | 1h | 1h |
| 1427 | 3.67 | включаем печь, прожигаем масло- чтобы вагорело и не дымило… контроль |  | 1h | 2026-06-23 09:00 A | 2026-06-23 10:00 A |  | 100% | start no earlier than 2026-06-23 09:00 | Шуранов Ю | 1h | 1h |
| 1428 | 3.68 | прикрутить горловину прекондиционера (находиться в комнате на выходе из цеха) | manual | 1h | 2026-06-20 09:00 A | 2026-06-20 10:00 A |  | 100% | start no earlier than 2026-06-20 09:00 | Бундин В | 1h | 1h |
| 1429 | 3.69 | на 1 и 2 зоне температура растет больше факта- проверить |  | 1h | 2026-06-23 09:00 A | 2026-06-23 10:00 A |  | 100% | start no earlier than 2026-06-23 09:00 | Труфанов А | 1h | 1h |
| 1430 | 3.70 | собрать парогенератор (насос+ вход вода в парик) |  | 1h | 2026-06-19 09:00 A | 2026-06-19 10:00 A |  | 100% | start no earlier than 2026-06-19 09:00 | Дедов В | 1h | 1h |
| 1431 | 3.71 | увеличить частоту на пневмоулитку с печи в жиры |  | 1h | 2026-06-19 09:00 A | 2026-06-19 10:00 A |  | 100% | start no earlier than 2026-06-19 09:00 | Дедов В | 1h | 1h |
| 1432 | 3.72 | трубу жиротопки утеплить |  | 2h | 2026-06-18 09:00 A | 2026-06-18 11:00 A |  | 100% | start no earlier than 2026-06-18 08:00 | Труфанов А | 2h | 2h |
| 1433 | 3.73 | установка смесителя душа 2 этаж продолжить |  | 4h | 2026-07-07 09:00 A | 2026-07-07 13:00 A |  | 100% | start no earlier than 2026-07-07 09:00 | Бундин В | 4h | 4h |
| 1434 | 3.74 | на прекондеционере настроить премыкание на всех дверцах | manual | 3h | 2026-06-21 09:00 A | 2026-06-21 12:00 A |  | 100% | start no earlier than 2026-06-21 09:00 | Труфанов А | 3h | 3h |
| 1435 | 3.75 | обрезить шпильки, которые торчат, на воздуховодах вентиляции (зона навесок и жиров) |  | 2h | 2026-06-18 09:00 A | 2026-06-18 11:00 A |  | 100% | start no earlier than 2026-06-18 08:00 | Труфанов А | 2h | 2h |
| 1436 | 3.76 | **модернизация схема ШУ жиротопки - отключается циркуляц насос при достжении температуры** |  | 5.5d | 2026-06-07 09:00 A | 2026-06-15 13:00 A |  | 100% |  |  | 5h | 5h |
| 1437 | 3.76.1 | изучить схему, согласовать предложения модернизации |  | 1h | 2026-06-07 09:00 A | 2026-06-08 10:00 A |  | 100% | start no earlier than 2026-06-07 09:00 | Дедов В | 1h | 1h |
| 1438 | 3.76.2 | реализации модернизации |  | 4h | 2026-06-15 09:00 A | 2026-06-15 13:00 A | 1437 | 100% | start no earlier than 2026-06-15 09:00 | Дедов В | 4h | 4h |

| ID | WBS | Task | Type | Duration | Start | Finish | Predecessors | Complete | Remaining | Actual start | Actual finish | Total slack | Free slack | Constraint | Resources | Work | Actual work |
| --- | --- | --- | --- | --- | --- | --- | --- | --- | --- | --- | --- | --- | --- | --- | --- | --- | --- |
| 1439 | 3.77 | **сборка квадропак с системой дозации** |  | 56.5d | 2026-06-18 09:00 A | 2026-09-04 13:00 |  | 31% | 38.97d |  |  | 133.09d |  |  |  | 67h | 28h |
| 1440 | 3.77.1 | сборка нория |  | 8h | 2026-07-17 09:00 | 2026-07-17 18:00 |  |  |  |  |  | 166.59d | 0d | start no earlier than 2026-07-17 09:00 | Некрасов А; Тимофеев В | 15h |  |
| 1441 | 3.77.2 | сборка площадка |  | 4h | 2026-07-20 09:00 | 2026-07-20 13:00 | 1440 |  |  |  |  | 166.59d | 0d | start no earlier than 2026-07-09 08:00 | Некрасов А; Тимофеев В | 8h |  |
| 1442 | 3.77.3 | монтаж весы |  | 4h | 2026-07-20 14:00 | 2026-07-20 18:00 | 1441 |  |  |  |  | 166.59d |  | start no earlier than 2026-07-09 08:00 | Некрасов А; Тимофеев В | 8h |  |
| 1443 | 3.77.4 | подключить квадропак / пусконаладка |  | 4h | 2026-09-04 09:00 | 2026-09-04 13:00 |  |  |  |  |  | 133.09d |  | start no earlier than 2026-09-04 09:00 | Зорькин В; Труфанов А | 8h |  |
| 1444 | 3.77.5 | разгрузка / распаковка |  | 1h | 2026-06-18 09:00 A | 2026-06-18 10:00 A |  | 100% |  |  |  |  |  | start no earlier than 2026-06-18 09:00 | Некрасов А; Тимофеев В | 1h | 1h |
| 1445 | 3.77.6 | сборка рама в 1ц над столом выгрузки пакетов. Примерка/доработка рамы по месту |  | 4h | 2026-07-09 09:00 A | 2026-07-09 13:00 A |  | 100% |  |  |  |  |  | start no earlier than 2026-07-09 09:00 | Некрасов А; Макаревич А; Тимофеев В | 11h | 11h |
| 1446 | 3.77.7 | сборка дозатор |  | 4h | 2026-07-09 09:00 A | 2026-07-09 13:00 A |  | 100% |  |  |  |  |  | start no earlier than 2026-07-09 09:00 | Зорькин В; Макаревич А; Некрасов А; Тимофеев В | 16h | 16h |
| 1447 | 3.78 | устранить заусенцы пол площадки жиротопки. Рвет тряпку уборщица. |  | 4h | 2026-05-31 09:00 A | 2026-06-01 13:00 A |  | 100% |  |  |  |  |  | start no earlier than 2026-05-31 09:00 | Макаревич А | 4h | 4h |
| 1448 | 3.79 | **востановить насос циркуляция воды на жиротопке** |  | 8.32d | 2026-06-06 09:00 A | 2026-06-18 11:35 A |  | 100% |  |  |  |  |  |  |  | 3.58h | 3.58h |
| 1449 | 3.79.1 | разборка насос / выяснить причину заклинивания |  | 1h | 2026-06-06 09:00 A | 2026-06-08 10:00 A |  | 100% |  |  |  |  |  | start no earlier than 2026-06-06 09:00 | Бундин В | 1h | 1h |
| 1450 | 3.79.2 | заявка аналог |  | 20min | 2026-06-08 09:00 A | 2026-06-08 09:20 A | 1449 | 100% |  |  |  |  |  | start no earlier than 2026-06-08 09:00 | Шуранов Ю | 0.33h | 0.33h |
| 1451 | 3.79.3 | контроль доставка |  | 15min | 2026-06-17 09:20 A | 2026-06-17 09:35 A | 1450FS+7d | 100% |  |  |  |  |  | start no earlier than 2026-06-05 08:00 | Шуранов Ю | 0.25h | 0.25h |
| 1452 | 3.79.4 | замена |  | 2h | 2026-06-18 09:35 A | 2026-06-18 11:35 A | 1451FS+1d | 100% |  |  |  |  |  | start no earlier than 2026-06-05 08:00 | Тимофеев В | 2h | 2h |
| 1453 | 3.80 | **жиротопка** |  | 9.5d | 2026-06-09 09:00 A | 2026-06-22 13:00 A |  | 100% |  |  |  |  |  |  |  | 9h | 9h |
| 1454 | 3.80.1 | (проверить двигатель и сам насос) |  | 1h | 2026-06-09 09:00 A | 2026-06-09 10:00 A |  | 100% |  |  |  |  |  | start no earlier than 2026-06-09 09:00 | Тимофеев В | 1h | 1h |
| 1455 | 3.80.2 | ремонт заклинившего насоса жиров (сняли сегодя голову ) |  | 1h | 2026-06-18 09:00 A | 2026-06-18 10:00 A | 1454 | 100% |  |  |  |  |  | start no earlier than 2026-06-18 09:00 | Труфанов А | 1h | 1h |
| 1456 | 3.80.3 | установить насос, который перебрал Труфанов поставить на штатное место / если не заработает ставим новый | manual | 1h | 2026-06-21 09:00 A | 2026-06-21 10:00 A | 1455 | 100% |  |  |  |  |  | start no earlier than 2026-06-21 09:00 | Бундин В | 1h | 1h |
| 1457 | 3.80.4 | восстановить работу пускателя на насос перекачки с бака в бак |  | 4h | 2026-06-20 09:00 A | 2026-06-22 13:00 A |  | 100% |  |  |  |  |  | start no earlier than 2026-06-20 09:00 | Дедов В | 4h | 4h |
| 1458 | 3.80.5 | подключить все шланги подачи жира в баки | manual | 2h | 2026-06-22 09:00 A | 2026-06-22 11:00 A |  | 100% |  |  |  |  |  | start no earlier than 2026-06-22 09:00 | Труфанов А | 2h | 2h |
| 1459 | 3.81 | **трасса нерж жиротопка- баки, найти утечки устранить** |  | 0.75d | 2026-05-23 09:00 A | 2026-05-25 16:00 A |  | 100% |  |  |  |  |  |  |  | 6h | 6h |
| 1460 | 3.81.1 | заварить места утечки и восстановить утеплитель + греющий кабель |  | 6h | 2026-05-23 09:00 A | 2026-05-25 16:00 A |  | 100% |  |  |  |  |  | start no earlier than 2026-05-23 09:00 | Макаревич А | 6h | 6h |
| 1461 | 3.82 | **защита ворот на мезонине загрузки** |  | 8h? | 2026-05-22 09:00 | 2026-05-22 18:00 |  | 100% |  | 2026-05-29 09:00 | 2026-08-13 13:00 |  |  |  |  | 27h | 27h |
| 1462 | 3.82.1 | покрасить конструкцию |  | 2h | 2026-05-31 09:00 A | 2026-06-01 11:00 A |  | 100% |  |  |  |  |  | start no earlier than 2026-05-31 09:00 | Макаревич А | 2h | 2h |
| 1463 | 3.82.2 | приварить дополнительную перекладину на защиту воротины |  | 2h | 2026-07-07 09:00 A | 2026-07-07 11:00 A |  | 100% |  |  |  |  |  | start no earlier than 2026-07-07 09:00 | Труфанов А; Тимофеев В | 4h | 4h |
| 1464 | 3.82.3 | заказать щетку и битумную ленту |  | 1h | 2026-05-31 11:00 A | 2026-06-01 10:00 A | 1462 | 100% |  |  |  |  |  | start no earlier than 2026-05-22 09:00 | Шуранов Ю | 1h | 1h |
| 1465 | 3.82.4 | контроль доставки |  | 1d? | 2026-05-31 12:00 A | 2026-06-01 18:00 A | 1464 | 100% |  |  |  |  |  | start no earlier than 2026-05-29 09:00 | Шуранов Ю | 8h | 8h |
| 1466 | 3.82.5 | установка щетки |  | 4h | 2026-08-13 09:00 A | 2026-08-13 13:00 A |  | 100% |  |  |  |  |  | start no earlier than 2026-08-13 09:00 | Макаревич А | 4h | 4h |
| 1467 | 3.82.6 | монтаж |  | 1d? | 2026-05-29 09:00 A | 2026-05-29 18:00 A |  | 100% |  |  |  |  |  | start no earlier than 2026-05-29 09:00 | Некрасов А | 8h | 8h |
| 1468 | 3.83 | установить щетку на поломоечную машину (щетка на складе) |  | 2h | 2026-05-21 09:00 A | 2026-05-21 11:00 A |  | 100% |  |  |  |  |  | start no earlier than 2026-05-21 08:00 | Бундин В | 2h | 2h |
| 1469 | 3.84 | площадка мезонина зона фасовки- убрать щели профиля битумной лентой |  | 2h | 2026-05-21 09:00 A | 2026-05-21 11:00 A |  | 100% |  |  |  |  |  | start no earlier than 2026-05-21 09:00 | Бундин В | 2h | 2h |
| 1470 | 3.85 | прикрутить дюзы форсунок подачи воды в прекондиционер, взять у меня на столе. |  | 1h | 2026-05-22 09:00 A | 2026-05-22 10:00 A |  | 100% |  |  |  |  |  | start no earlier than 2026-05-22 09:00 | Тимофеев В | 1h | 1h |
| 1471 | 3.86 | проверить насос подачи жира со 2 бака на барабаны, Викторович его разобрал |  | 2h | 2026-05-19 08:00 A | 2026-05-19 11:00 A |  | 100% |  |  |  |  |  | start no earlier than 2026-05-19 08:00 | Дедов В | 2h | 2h |
| 1472 | 3.87 | проверить рабочий или нет циркуляционный насос для змеевика на жиротопке |  | 1h | 2026-05-19 08:00 A | 2026-05-19 10:00 A |  | 100% |  |  |  |  |  | start no earlier than 2026-05-19 08:00 | Дедов В | 1h | 1h |
| 1473 | 3.88 | проверка оборудования на жирах водой |  | 3h | 2026-05-19 09:00 A | 2026-05-19 12:00 A |  | 100% |  |  |  |  |  | start no earlier than 2026-05-20 09:00 | Тимофеев В | 3h | 3h |
| 1474 | 3.89 | покраска пол под лотком барабан-охладитель |  | 1h | 2026-05-15 09:00 A | 2026-05-15 10:00 A |  | 100% |  |  |  |  |  | start no earlier than 2026-05-15 09:00 | Бобренок В | 1h | 1h |

| ID | WBS | Task | Type | Duration | Start | Finish | Complete | Remaining | Total slack | Constraint | Resources | Work | Actual work |
| --- | --- | --- | --- | --- | --- | --- | --- | --- | --- | --- | --- | --- | --- |
| 1475 | 3.90 | **ремонт ворот рольставня** |  | 4.12d | 2026-05-14 09:00 A | 2026-05-20 10:00 A | 100% |  |  |  |  | 2h | 2h |
| 1476 | 3.90.1 | вызывать сервис |  | 1h | 2026-05-14 09:00 A | 2026-05-14 10:00 A | 100% |  |  | start no earlier than 2026-05-14 09:00 | Зорькин В | 1h | 1h |
| 1477 | 3.90.2 | контроль работ |  | 1h | 2026-05-20 09:00 A | 2026-05-20 10:00 A | 100% |  |  | start no earlier than 2026-05-20 09:00 | Зорькин В | 1h | 1h |
| 1478 | 3.91 | вырезать косая пластина в воронку пневмотранспорта на подачу жиров |  | 2h | 2026-05-14 09:00 A | 2026-05-14 11:00 A | 100% |  |  | start no earlier than 2026-05-14 09:00 | Макаревич А | 2h | 2h |
| 1479 | 3.92 | убрать бороду от вентиляторов |  | 4h | 2026-05-12 09:00 A | 2026-05-12 13:00 A | 100% |  |  | start no earlier than 2026-05-12 09:00 | Некрасов А; Труфанов А | 8h | 8h |
| 1480 | 3.93 | монтаж кабель управления заслонками вентиляторы окно |  | 4h | 2026-05-20 09:00 A | 2026-05-20 13:00 A | 100% |  |  | start no earlier than 2026-05-22 09:00 | Некрасов А; Бундин В | 8h | 8h |
| 1481 | 3.94 | **автоматика управления смесителями** |  | 80.38d | 2026-05-04 09:00 A | 2026-08-24 12:00 | 91% | 6.89d | 142.22d |  |  | 35h | 32h |
| 1482 | 3.94.1 | поменять местами переключатели управления смесителями левый что бы включал поперечный смеситель |  | 2h | 2026-07-12 09:00 A | 2026-07-13 11:00 A | 100% |  |  | start no earlier than 2026-07-12 09:00 | Дедов В | 2h | 2h |
| 1483 | 3.94.2 | сделать подключение красных смесителей по схеме Домоводова |  | 22h | 2026-05-18 09:00 A | 2026-05-20 16:00 A | 100% |  |  | start no earlier than 2026-05-19 09:00 | Дедов В | 22h | 22h |
| 1484 | 3.94.3 | доработка схемы управления смесителями по логике ТЗ, упорядочить монтаж, промаркировать соденения |  | 8h | 2026-05-04 09:00 A | 2026-05-04 18:00 A | 100% |  |  | start no earlier than 2026-05-04 09:00 | Дедов В | 8h | 8h |
| 1485 | 3.94.4 | уложить красиво все провода в шкафу управления смесителями |  | 3h | 2026-08-24 09:00 | 2026-08-24 12:00 |  |  | 142.22d | start no earlier than 2026-08-24 09:00 | Дедов В | 3h |  |
| 1486 | 3.95 | **установить воздуховод на 300мм на красные смесители** |  | 6.25d | 2026-05-08 08:00 A | 2026-05-18 11:00 A | 100% |  |  |  |  | 4h | 4h |
| 1487 | 3.95.1 | заказать другой диаметр | milestone | 0d | 2026-05-08 08:00 A | 2026-05-08 08:00 A | 100% |  |  | start no earlier than 2026-05-08 08:00 | Зорькин В |  |  |
| 1488 | 3.95.2 | установить ф300 | milestone | 0h | 2026-05-13 09:00 A | 2026-05-13 09:00 A | 100% |  |  | start no earlier than 2026-05-13 09:00 | Тимофеев В; Зорькин В |  |  |
| 1489 | 3.95.3 | красные смесители вернуть воздуховоды (доработать рукав пересыпки воронка-смеситель) |  | 2h | 2026-05-13 09:00 A | 2026-05-13 11:00 A | 100% |  |  | start no earlier than 2026-05-13 09:00 | Тимофеев В | 2h | 2h |
| 1490 | 3.95.4 | сборка рукав на второй смеситель. Сшить по образцу |  | 2h | 2026-05-18 09:00 A | 2026-05-18 11:00 A | 100% |  |  | start no earlier than 2026-05-18 09:00 | Тимофеев В | 2h | 2h |
| 1491 | 3.96 | проверить почему не запускается приточная вентиляция в вент. Камере 7,5кВт |  | 1h | 2026-04-29 08:00 A | 2026-04-29 10:00 A | 100% |  |  | start no earlier than 2026-04-29 08:00 | Дедов В | 1h | 1h |
| 1492 | 3.97 | прозвонить кнопку индикации водителя под сиденьем (позвони объясню) |  | 2h | 2026-04-15 09:00 A | 2026-04-15 11:00 A | 100% |  |  | start no earlier than 2026-04-15 08:00 | Бундин В | 2h | 2h |
| 1493 | 3.98 | проверить приход с Китая по шнекам и гильзам |  | 1h | 2026-04-09 09:00 A | 2026-04-09 10:00 A | 100% |  |  | start no earlier than 2026-04-09 08:00 | Шуранов Ю | 1h | 1h |
| 1494 | 3.99 | собрать и установить мойку (со старой прикрутить смеситель) мойка у Веры на складе на 2 верхнем ярусе стеллажей | manual | 2h | 2026-04-05 09:00 A | 2026-04-05 11:00 A | 100% |  |  | start no earlier than 2026-04-05 09:00 | Труфанов А | 2h | 2h |
| 1495 | 3.100 | вывоз 3 поддона с мусором |  | 30min | 2026-03-24 09:00 A | 2026-03-24 09:30 A | 100% |  |  | start no earlier than 2026-03-24 09:00 | Некрасов А; Труфанов А | 1h | 1h |
| 1496 | 3.101 | установить отбойники на стеллажи | manual | 8h | 2026-03-29 09:00 A | 2026-03-29 18:00 A | 100% |  |  | start no earlier than 2026-03-29 09:00 | Бундин В | 8h | 8h |
| 1497 | 3.102 | установить отбойники на стеллажи | manual | 6h | 2026-04-18 09:00 A | 2026-04-20 10:00 A | 100% |  |  | start no earlier than 2026-04-18 09:00 | Бобренок В | 6h | 6h |
| 1498 | 3.103 | уборка зона курилка / венткамера |  | 4h | 2026-03-17 09:00 A | 2026-03-17 13:00 A | 100% |  |  | start no earlier than 2026-03-17 09:00 | Тимофеев В; Некрасов А; Макаревич А; Труфанов А | 16h | 16h |

| ID | WBS | Task | Duration | Start | Finish | Predecessors | Complete | Remaining | Actual start | Total slack | Constraint | Resources | Work | Actual work |
| --- | --- | --- | --- | --- | --- | --- | --- | --- | --- | --- | --- | --- | --- | --- |
| 1499 | 3.104 | **сборка квадропак** | 13.25d | 2026-05-06 09:00 A | 2026-05-25 11:00 A |  | 100% |  |  |  |  |  | 14h | 14h |
| 1500 | 3.104.1 | подвести воздух к квадропаку | 4h | 2026-05-22 09:00 A | 2026-05-22 13:00 A |  | 100% |  |  |  | start no earlier than 2026-05-22 09:00 | Тимофеев В | 4h | 4h |
| 1501 | 3.104.2 | установить перед пневмораспределителями влагоотделитель | 2h | 2026-05-24 09:00 A | 2026-05-25 11:00 A |  | 100% |  |  |  | start no earlier than 2026-05-24 09:00 | Дедов В | 2h | 2h |
| 1502 | 3.104.3 | подключить квадропак к щитку кабель 5х2,5 | 4h | 2026-05-06 09:00 A | 2026-05-06 13:00 A |  | 100% |  |  |  | start no earlier than 2026-05-06 09:00 | Труфанов А; Тимофеев В | 8h | 8h |
| 1503 | 3.105 | крепление магистрали компрессора. Зона дрожировки | 1h | 2026-03-08 09:00 A | 2026-03-09 10:00 A |  | 100% |  |  |  | start no earlier than 2026-03-08 09:00 | Бундин В | 1h | 1h |
| 1504 | 3.106 | Собрать транспортер тип2 (уточнить у Шуранова)/ доделать | 3h | 2026-03-08 09:00 A | 2026-03-09 12:00 A |  | 100% |  |  |  | start no earlier than 2026-03-08 09:00 | Бобренок В | 3h | 3h |
| 1505 | 3.107 | **Покраска лестницы** | 43d | 2026-03-04 09:00 A | 2026-05-01 18:00 A |  | 100% |  |  |  |  |  | 116.33h | 116.33h |
| 1506 | 3.107.1 | Заявка на краску | 20min | 2026-03-04 09:00 A | 2026-03-04 09:20 A |  | 100% |  |  |  | start no earlier than 2026-03-04 09:00 | Зорькин В | 0.33h | 0.33h |
| 1507 | 3.107.2 | Доставка | 10d | 2026-03-04 09:20 A | 2026-03-18 09:20 A | 1506 | 100% |  |  |  | start no earlier than 2026-03-03 08:00 | Карабанов | 80h | 80h |
| 1508 | 3.107.3 | Работа по покраске | 6h | 2026-04-28 09:00 A | 2026-04-28 16:00 A | 1507 | 100% |  |  |  | start no earlier than 2026-04-28 09:00 | оперторы2; Олег | 12h | 12h |
| 1509 | 3.107.4 | покраска колонны в коридоре | 4h | 2026-04-28 09:00 A | 2026-04-28 13:00 A |  | 100% |  |  |  | start no earlier than 2026-04-28 08:00 | оперторы2; Олег | 8h | 8h |
| 1510 | 3.107.5 | покарска потолок в корридоре | 2d | 2026-04-30 09:00 A | 2026-05-01 18:00 A |  | 100% |  |  |  | start no earlier than 2026-04-30 09:00 | оператор2 | 16h | 16h |
| 1511 | 3.108 | **доработка лотка барабан-охладитель - снизить скорость падения, установить сетку** | 1.5d? | 2026-04-14 09:00 | 2026-04-15 13:00 |  | 88% | 0.17d? | 2026-05-13 09:00 |  |  |  | 46.75h | 42.75h |
| 1512 | 3.108.1 | сборка кронштейны + стека | 5h | 2026-05-13 09:00 A | 2026-05-13 15:00 A |  | 100% |  |  |  | start no earlier than 2026-05-13 09:00 | Труфанов А; Некрасов А | 10h | 10h |
| 1513 | 3.108.2 | сборка ручки, установка. Фотоотчет | 2h | 2026-05-15 09:00 A | 2026-05-15 11:00 A |  | 100% |  |  |  | start no earlier than 2026-05-15 09:00 | Некрасов А; Труфанов А | 4h | 4h |
| 1514 | 3.108.3 | сборка вращающаяся заслонка | 4h | 2026-05-15 11:00 A | 2026-05-15 16:00 A | 1513 | 100% |  |  |  | start no earlier than 2026-05-15 09:00 | Некрасов А; Труфанов А | 8h | 8h |
| 1515 | 3.108.4 | доработка пластины, что бы не клинила | 1h | 2026-05-21 09:00 A | 2026-05-21 10:00 A |  | 100% |  |  |  | start no earlier than 2026-05-22 09:00 | Некрасов А; Бундин В | 2h | 2h |
| 1516 | 3.108.5 | заказ на лазере пластину для регулировки шибера | 1d? | 2026-05-25 09:00 A | 2026-05-25 18:00 A |  | 100% |  |  |  | start no earlier than 2026-05-25 09:00 | Зорькин В | 8h | 8h |
| 1517 | 3.108.6 | чертеж пластина фиксации рычага | 2h | 2026-05-19 09:00 A | 2026-05-19 11:00 A | 1514 | 100% |  |  |  | start no earlier than 2026-05-19 09:00 | Зорькин В | 2h | 2h |
| 1518 | 3.108.7 | заявка на изготвление на лазер | 15min | 2026-05-20 11:00 A | 2026-05-20 11:15 A | 1517FS+1d | 100% |  |  |  | start no earlier than 2026-05-15 08:00 | Зорькин В | 0.25h | 0.25h |
| 1519 | 3.108.8 | контроль изг | 15min | 2026-06-01 09:00 A | 2026-06-01 09:15 A | 1518FS+5d | 100% |  |  |  | start no earlier than 2026-06-01 09:00 | Зорькин В | 0.25h | 0.25h |
| 1520 | 3.108.9 | доставка орг | 15min | 2026-06-05 09:00 A | 2026-06-05 09:15 A | 1519FS+1d | 100% |  |  |  | start no earlier than 2026-06-05 09:00 | Зорькин В | 0.25h | 0.25h |
| 1521 | 3.108.10 | сборка рычага | 4h | 2026-06-08 09:15 | 2026-06-08 14:15 | 1520FS+1d |  |  |  | 197.06d | start no earlier than 2026-06-06 09:00 | Бундин В | 4h |  |
| 1522 | 3.108.11 | сделать напраляшку на шибере регулируемую- сыпит в одну сторону | 1d? | 2026-06-17 09:00 A | 2026-06-17 18:00 A |  | 100% |  |  |  | start no earlier than 2026-06-23 09:00 | Тимофеев В | 8h | 8h |
| 1523 | 3.109 | сборка система отопления 2 этаж | 1d? | 2026-06-15 09:00 | 2026-06-15 18:00 |  |  |  |  | 191.59d | start no earlier than 2026-06-15 09:00 | Труфанов А; Некрасов А; Олег | 24h |  |

| ID | WBS | Task | Duration | Start | Finish | Predecessors | Complete | Remaining | Total slack | Constraint | Resources | Work | Actual work |
| --- | --- | --- | --- | --- | --- | --- | --- | --- | --- | --- | --- | --- | --- |
| 1524 | 3.110 | **заменить сопряжение смесителей на гибк вставку** | 29.25d | 2026-03-19 09:00 A | 2026-04-29 11:00 A |  | 100% |  |  |  |  | 122.5h | 122.5h |
| 1525 | 3.110.1 | заявка | 30min | 2026-03-19 09:00 A | 2026-03-19 09:30 A |  | 100% |  |  | start no earlier than 2026-03-19 09:00 | Зорькин В | 0.5h | 0.5h |
| 1526 | 3.110.2 | доставка | 15d | 2026-03-19 09:30 A | 2026-04-09 09:30 A | 1525 | 100% |  |  | start no earlier than 2026-02-27 08:00 | Карабанов | 120h | 120h |
| 1527 | 3.110.3 | замена | 2h | 2026-04-29 09:00 A | 2026-04-29 11:00 A | 1526 | 100% |  |  | start no earlier than 2026-04-29 09:00 | Тимофеев В | 2h | 2h |
| 1528 | 3.111 | **приточная вентиляция** | 41.25d | 2026-03-06 09:00 A | 2026-05-04 11:00 |  | 31% | 28.29d | 222.34d |  |  | 17.5h | 5.5h |
| 1529 | 3.111.1 | визит Евгения. Контроль монтажа | 30min | 2026-03-06 09:00 A | 2026-03-06 09:30 A |  | 100% |  |  | start no earlier than 2026-03-06 09:00 | Домоводов К | 0.5h | 0.5h |
| 1530 | 3.111.2 | подключить силовой кабель в ШУ (лежит в лотке) | 3h | 2026-03-13 09:00 A | 2026-03-13 12:00 A |  | 100% |  |  | start no earlier than 2026-03-13 09:00 | Подрядчик | 3h | 3h |
| 1531 | 3.111.3 | монтаж изоляционных прокладок вводный автомат между фазами | 2h | 2026-03-20 09:00 | 2026-03-20 11:00 |  |  |  | 253.34d | start no earlier than 2026-03-20 09:00 | Дедов В | 2h |  |
| 1532 | 3.111.4 | подключить нулевой провод шкаф управления | 2h | 2026-03-20 09:00 | 2026-03-20 11:00 |  |  |  | 253.34d | start no earlier than 2026-03-20 09:00 | Дедов В | 2h |  |
| 1533 | 3.111.5 | монтаж перемычек от автомата на ТВ реле . Звонить Дедову | 1d | 2026-03-20 09:00 | 2026-03-20 18:00 |  |  |  | 252.59d | start no earlier than 2026-03-20 09:00 | Дедов В | 8h |  |
| 1534 | 3.111.6 | замена схемы включения вентилятор вытяжка / приточка | 2h | 2026-05-04 09:00 A | 2026-05-04 11:00 A |  | 100% |  |  | start no earlier than 2026-05-04 09:00 | Дедов В | 2h | 2h |
| 1535 | 3.112 | установить гидроаккумулятор | 2h | 2026-03-03 09:00 A | 2026-03-03 11:00 A |  | 100% |  |  | start no earlier than 2026-03-03 09:00 | Тимофеев В | 2h | 2h |
| 1536 | 3.113 | тест герметичности. жиропровод нерж оборудовать греющим кабелем + утеплитель. | 2h | 2026-06-01 09:00 | 2026-06-01 11:00 |  |  |  | 202.34d | start no earlier than 2026-05-31 09:00 | Макаревич А | 2h |  |
| 1537 | 3.114 | **установить перила площадка загрузки навески** | 0.25d | 2026-05-27 09:00 A | 2026-05-27 11:00 A |  | 100% |  |  |  |  | 2h | 2h |
| 1538 | 3.114.1 | покрасить перила | 2h | 2026-05-27 09:00 A | 2026-05-27 11:00 A |  | 100% |  |  | start no earlier than 2026-05-27 09:00 | оператор2 | 2h | 2h |
| 1539 | 3.115 | дорабать качелю безопасности на площадке загрузки навески что бы не задевала за вентиляцию | 2h | 2026-05-12 09:00 A | 2026-05-12 11:00 A |  | 100% |  |  | start no earlier than 2026-05-12 09:00 | Некрасов А | 2h | 2h |
| 1540 | 3.116 | подготовить отражатели тепла на подшипники печи линия 4 | 8h | 2025-09-01 09:00 | 2025-09-01 18:00 |  |  |  | 396.59d | start no earlier than 2025-08-30 09:00 | Тимофеев В | 8h |  |
| 1541 | 3.117 | усилить раму прекондиционера | 1d? | 2026-04-28 08:00 A | 2026-04-28 18:00 A |  | 100% |  |  | start no earlier than 2026-04-28 08:00 | Тимофеев В | 8h | 8h |
| 1542 | 3.118 | переместить магнит загрузки сырья | 2h | 2026-05-07 09:00 A | 2026-05-07 11:00 A |  | 100% |  |  | start no earlier than 2026-05-07 09:00 | Тимофеев В | 2h | 2h |
| 1543 | 3.119 | труба выход пара греет шнек - переместить | 1d? | 2026-06-19 09:00 | 2026-06-19 18:00 |  |  |  | 187.59d | start no earlier than 2026-06-19 09:00 | Тимофеев В | 8h |  |
| 1544 | 3.120 | герметизация примыкание на выходе из печи | 2d | 2026-05-18 09:00 A | 2026-05-19 18:00 A |  | 100% |  |  | start no earlier than 2026-05-18 09:00 | Олег | 16h | 16h |
| 1545 | 3.121 | обшить стены курилки | 2d | 2026-04-30 09:00 A | 2026-05-01 18:00 A |  | 100% |  |  | start no earlier than 2026-04-30 09:00 | Олег; Некрасов А | 32h | 32h |
| 1546 | 3.122 | покраска рамы воздуховодов уличные | 4h | 2026-05-27 09:00 | 2026-05-27 13:00 |  |  |  | 205.09d | start no earlier than 2026-05-27 09:00 | оператор2 | 4h |  |
| 1547 | 3.123 | **Люки на колодцы** | 13.31d | 2026-05-26 09:00 A | 2026-06-12 11:30 |  | 98% | 0.32d | 193.28d |  |  | 163.5h | 161.5h |
| 1548 | 3.123.1 | Консультация с Олегом | 30min | 2026-05-26 09:00 A | 2026-05-26 09:30 A |  | 100% |  |  | start no earlier than 2026-05-26 08:00 | Зорькин В; Олег | 1h | 1h |
| 1549 | 3.123.2 | Заявка на закуп | 30min | 2026-05-29 09:00 A | 2026-05-29 09:30 A | 1548 | 100% |  |  | start no earlier than 2026-05-29 09:00 | Зорькин В | 0.5h | 0.5h |
| 1550 | 3.123.3 | Доставка, контроль | 10d | 2026-05-29 09:30 A | 2026-06-12 09:30 A | 1549 | 100% |  |  | start no earlier than 2026-05-26 09:00 | Зорькин В; Шуранов Ю | 160h | 160h |
| 1551 | 3.123.4 | установка люков на колодцы | 2h | 2026-06-12 09:30 | 2026-06-12 11:30 | 1550 |  |  | 193.28d | start no earlier than 2026-06-04 09:00 | Олег | 2h |  |
| 1552 | 3.124 | Выяснить количество теплопотерь с печи на входе | 1h | 2026-08-28 09:00 | 2026-08-28 10:00 |  |  |  | 138.47d | start no earlier than 2026-08-28 09:00 | Зорькин В; Бобренок В | 2h |  |
| 1553 | 3.125 | Переделка входа пневмотрассы с печи на жиры, сделать плавный переход из двух углов по 45 | 4h | 2026-07-24 09:00 | 2026-07-24 13:00 |  |  |  | 163.09d | start no earlier than 2026-07-24 09:00 | Бундин В | 4h |  |

| ID | WBS | Task | Type | Duration | Start | Finish | Predecessors | Complete | Remaining | Actual finish | Total slack | Constraint | Resources | Work | Actual work |
| --- | --- | --- | --- | --- | --- | --- | --- | --- | --- | --- | --- | --- | --- | --- | --- |
| 1554 | 3.126 | **Печь** |  | 0d | 2026-07-25 09:00 A | 2026-07-26 11:00 A |  | 100% |  |  |  |  |  | 6h | 6h |
| 1555 | 3.126.1 | Переделка входа пневмотрассы с печи на жиры, сделать плавный переход из двух углов по 45, закончить если Валентин не доделал или взять в работу если Валентин не начал. Уточнить у него как он хотел сделать. | manual | 4h | 2026-07-25 09:00 A | 2026-07-25 13:00 A |  | 100% |  |  |  | start no earlier than 2026-07-25 09:00 | Макаревич А | 4h | 4h |
| 1556 | 3.126.2 | 4 зона шкаф управления не набирает заданную температуру, выяснить причину/устранить | manual | 2h | 2026-07-26 09:00 A | 2026-07-26 11:00 A |  | 100% |  |  |  | start no earlier than 2026-07-26 09:00 | Бобренок В | 2h | 2h |
| 1557 | 3.127 | **розетки** |  | 0.25d | 2026-07-25 09:00 A | 2026-07-27 11:00 A |  | 100% |  |  |  |  |  | 6h | 6h |
| 1558 | 3.127.1 | Монтаж розетки для болера, где мойка экструдера, подключиться к резерву ШУ на экструдере | manual | 2h | 2026-07-25 09:00 A | 2026-07-25 11:00 A |  | 100% |  |  |  | start no earlier than 2026-07-25 09:00 | Бобренок В | 2h | 2h |
| 1559 | 3.127.2 | Монтаж розетки, где ворота выхода готовой продукции | manual | 2h | 2026-07-27 09:00 A | 2026-07-27 11:00 A |  | 100% |  |  |  |  | Некрасов А; Труфанов А | 4h | 4h |
| 1560 | 3.128 | **Дражжировка** |  | 0d | 2026-07-26 09:00 A | 2026-07-26 11:00 A |  | 100% |  |  |  |  |  | 2h | 2h |
| 1561 | 3.128.1 | Устранить течь за раковиной. Вода перекрывается на потолке возле главной вентилляции | manual | 2h | 2026-07-26 09:00 A | 2026-07-26 11:00 A |  | 100% |  |  |  | start no earlier than 2026-07-26 09:00 | Бобренок В | 2h | 2h |
| 1562 | 3.129 | обшить стены вент камеры |  | 2d | 2026-05-06 09:00 A | 2026-05-07 18:00 A |  | 100% |  |  |  | start no earlier than 2026-05-06 09:00 | Олег; Некрасов А | 32h | 32h |
| 1563 | 3.130 | убрать металл 100*100 в зону охладителя или корридор |  | 1h | 2026-03-02 09:00 A | 2026-03-02 10:00 A |  | 100% |  |  |  | start no earlier than 2026-03-02 09:00 | Некрасов А; Труфанов А | 2h | 2h |
| 1564 | 4 | **4 склад** |  | 109.75d | 2026-03-13 09:00 A | 2026-07-15 16:00 |  | 100% |  | 2026-07-29 11:00 |  |  |  | 93.25h | 93.25h |
| 1565 | 4.1 | реверс направления кнопок движения вперед-назад ричтрака |  | 2h | 2026-07-14 08:00 A | 2026-07-14 11:00 A |  | 100% |  |  |  | start no earlier than 2026-07-14 08:00 | Дедов В | 2h | 2h |
| 1566 | 4.2 | 2 ветки не работают светильники -разобраться |  | 1h | 2026-07-02 09:00 A | 2026-07-02 10:00 A |  | 100% |  |  |  | start no earlier than 2026-07-02 09:00 | Тимофеев В | 1h | 1h |
| 1567 | 4.3 | Выяснить почему перегорают светильники |  | 2h | 2026-07-29 08:00 A | 2026-07-29 11:00 A |  | 100% |  |  |  | start no earlier than 2026-07-29 08:00 | Дедов В | 2h | 2h |
| 1568 | 4.4 | замена светильников |  | 8h | 2026-04-17 09:00 A | 2026-04-17 18:00 A |  | 100% |  |  |  | start no earlier than 2026-04-17 08:00 | Некрасов А; Труфанов А | 16h | 16h |
| 1569 | 4.5 | сборка рохли 1шт |  | 1h | 2026-03-13 09:00 A | 2026-03-13 10:00 A |  | 100% |  |  |  | start no earlier than 2026-03-13 09:00 | Тимофеев В | 1h | 1h |
| 1570 | 4.6 | ремонт обрамление погрузочной рампы |  | 4h | 2026-05-28 09:00 A | 2026-05-28 13:00 A |  | 100% |  |  |  | start no earlier than 2026-05-28 09:00 | Олег | 4h | 4h |
| 1571 | 4.7 | замена неисправных светильников |  | 1d | 2026-03-14 09:00 A | 2026-03-16 18:00 A |  | 100% |  |  |  | start no earlier than 2026-03-14 09:00 | Некрасов А; Бобренок В | 15h | 15h |
| 1572 | 4.8 | **замена неисправных светильников** |  | 87.75d | 2026-03-16 09:00 A | 2026-07-15 16:00 A |  | 100% |  |  |  |  |  | 52.25h | 52.25h |
| 1573 | 4.8.1 | заявка светильники |  | 15min | 2026-03-16 09:00 A | 2026-03-16 09:15 A |  | 100% |  |  |  | start no earlier than 2026-03-16 09:00 | Шуранов Ю | 0.25h | 0.25h |
| 1574 | 4.8.2 | доставка |  | 5d | 2026-03-16 09:15 A | 2026-03-23 09:15 A | 1573 | 100% |  |  |  | start no earlier than 2026-03-12 08:00 | Карабанов | 40h | 40h |
| 1575 | 4.8.3 | замена |  | 6h | 2026-07-15 09:00 A | 2026-07-15 16:00 A | 1574 | 100% |  |  |  | start no earlier than 2026-07-15 09:00 | Некрасов А; Труфанов А | 12h | 12h |
| 1576 | 5 | **5 цех** |  | 891.12d? | 2023-05-29 09:00 A | 2026-10-27 10:00 |  | 60% | 355.24d? |  | 96.47d |  |  | 1764h | 1062.5h |
| 1577 | 5.1 | Сказать параметры, шильдик насосной станции передать зорькину |  | 15min | 2026-09-04 09:00 | 2026-09-04 09:15 |  |  |  |  | 133.56d | start no earlier than 2026-09-04 09:00 | Тимофеев В | 0.25h |  |
| 1578 | 5.2 | воставноить заземление на обоих ситах |  | 2h | 2026-09-04 09:00 | 2026-09-04 11:00 |  |  |  |  | 133.34d | start no earlier than 2026-09-04 09:00 | Бобренок В | 2h |  |
| 1579 | 5.3 | востановить контакт пульт тельфера у стены (переменный контакт при движении кабеля у пульта) |  | 1h | 2026-09-03 09:00 | 2026-09-03 10:00 |  |  |  |  | 134.47d | start no earlier than 2026-09-03 08:00 | Бобренок В | 1h |  |
| 1580 | 5.4 | подключить Олегу сварочный автомат |  | 1h | 2026-08-31 09:00 A | 2026-08-31 10:00 A |  | 100% |  |  |  | start no earlier than 2026-08-31 09:00 | Тимофеев В | 1h | 1h |

| ID | WBS | Task | Type | Duration | Start | Finish | Predecessors | Complete | Remaining | Total slack | Free slack | Constraint | Resources | Work | Actual work |
| --- | --- | --- | --- | --- | --- | --- | --- | --- | --- | --- | --- | --- | --- | --- | --- |
| 1581 | 5.5 | **подготовить сетку на мал дробилку 3 и 4мм** |  | 1.19d | 2026-08-24 09:00 | 2026-08-25 10:30 |  |  |  | 141.41d |  |  |  | 1.5h |  |
| 1582 | 5.5.1 | проверка отстатков сетки на складах |  | 30min | 2026-08-24 09:00 | 2026-08-24 09:30 |  |  |  | 141.41d | 0d | start no earlier than 2026-08-24 09:00 | Шуранов Ю | 0.5h |  |
| 1583 | 5.5.2 | вырезатиь сетку в размер |  | 1h | 2026-08-25 09:30 | 2026-08-25 10:30 | 1582FS+1d |  |  | 141.41d |  | start no earlier than 2026-08-20 09:00 | Тимофеев В | 1h |  |
| 1584 | 5.6 | ревизия шнека |  | 3h | 2026-08-17 09:00 A | 2026-08-17 12:00 A |  | 100% |  |  |  | start no earlier than 2026-08-17 09:00 | Бобренок В; Некрасов А | 6h | 6h |
| 1585 | 5.7 | **свет в туалет передать крепление светильника** |  | 1.12d | 2026-08-14 09:00 A | 2026-08-17 10:00 |  | 56% | 0.5d | 147.47d |  |  |  | 2.25h | 1.25h |
| 1586 | 5.7.1 | проверить наличие светильника с боковым монтажем |  | 15min | 2026-08-14 09:00 A | 2026-08-14 09:15 A |  | 100% |  |  |  | start no earlier than 2026-08-14 09:00 | Домоводов К | 0.25h | 0.25h |
| 1587 | 5.7.2 | замена светильника / или закрепить |  | 1h | 2026-08-17 09:00 | 2026-08-17 10:00 | 1586 |  |  | 147.47d |  | start no earlier than 2026-08-15 09:00 | Бундин В | 1h |  |
| 1588 | 5.7.3 | закрепить светильник в коридоре -вход в туалет |  | 1h | 2026-08-17 09:00 A | 2026-08-17 10:00 A |  | 100% |  |  |  | start no earlier than 2026-08-17 09:00 | Бундин В | 1h | 1h |
| 1589 | 5.8 | трещина вибросито №2 1см ремонт |  | 6h | 2026-08-27 09:00 A | 2026-08-27 16:00 A |  | 100% |  |  |  | start no earlier than 2026-08-27 09:00 | Макаревич А | 6h | 6h |
| 1590 | 5.9 | трещина вибросито №1 кольцо. ремонт |  | 4h | 2026-08-28 09:00 A | 2026-08-28 13:00 A |  | 100% |  |  |  | start no earlier than 2026-08-28 09:00 | Макаревич А | 4h | 4h |
| 1591 | 5.10 | **проект новая дробилка** |  | 32.03d | 2026-08-21 09:00 A | 2026-10-06 09:15 |  | 17% | 26.7d | 111.56d |  |  |  | 144.25h | 24h |
| 1592 | 5.10.1 | **кабель для доп мощности** |  | 32.03d | 2026-08-21 09:00 A | 2026-10-06 09:15 |  | 17% | 26.7d | 111.56d |  |  |  | 144.25h | 24h |
| 1593 | 5.10.1.1 | составить ТЗ на монтаж кабеля |  | 3d | 2026-08-21 09:00 A | 2026-08-25 18:00 A |  | 100% |  |  |  | start no earlier than 2026-08-21 09:00 | Домоводов К | 24h | 24h |
| 1594 | 5.10.1.2 | получить КП / счет договор | milestone | 0d | 2026-08-31 09:00 | 2026-08-31 09:00 | 1593FS+2d |  |  | 111.56d | 0d | start no earlier than 2026-08-31 09:00 | Домоводов К |  |  |
| 1595 | 5.10.1.3 | предоплата |  | 15min | 2026-09-01 09:00 | 2026-09-01 09:15 | 1594FS+1d |  |  | 111.56d | 0d | start no earlier than 2026-08-10 08:00 | Домоводов К | 0.25h |  |
| 1596 | 5.10.1.4 | монтаж |  | 15d | 2026-09-15 09:15 | 2026-10-06 09:15 | 1595FS+10d |  |  | 111.56d |  | start no earlier than 2026-08-10 08:00 | Подрядчик | 120h |  |
| 1597 | 5.11 | **монтаж вода в 5ц** |  | 22.38d? | 2026-08-10 08:00 A | 2026-09-09 12:00 |  | 43% | 12.67d? | 130.22d |  |  |  | 92.08h | 45.75h |
| 1598 | 5.11.1 | выяснить возможность обмена тройников 1+1/4-1/2 на 3/4-1/2 |  | 15min | 2026-09-01 09:00 | 2026-09-01 09:15 |  |  |  | 136.56d |  | start no earlier than 2026-09-01 09:00 | Зорькин В | 0.25h |  |
| 1599 | 5.11.2 | Прокнуть греющий кабель | manual | 3h | 2026-09-07 09:00 | 2026-09-07 12:00 | 1600 |  |  |  |  |  | Некрасов А; Макаревич А | 6h |  |
| 1600 | 5.11.3 | Подключение греющего кабеля |  | 3h | 2026-09-07 09:00 | 2026-09-07 12:00 |  |  |  | 131.84d | 0d | start no earlier than 2026-09-07 09:00 | Некрасов А | 3h |  |
| 1601 | 5.11.4 | **монтаж трассы по 3ц** |  | 4.5d | 2026-08-11 09:00 A | 2026-08-17 13:00 A |  | 100% |  |  |  |  |  | 16.5h | 16.5h |
| 1602 | 5.11.4.1 | заявка хомуты сантех - получить дату поставки |  | 15min | 2026-08-11 09:00 A | 2026-08-11 09:15 A |  | 100% |  |  |  | start no earlier than 2026-08-11 09:00 | Домоводов К | 0.25h | 0.25h |
| 1603 | 5.11.4.2 | контроль доставки |  | 15min | 2026-08-14 09:15 A | 2026-08-14 09:30 A | 1602FS+3d | 100% |  |  |  | start no earlier than 2026-08-10 08:00 | Зорькин В | 0.25h | 0.25h |
| 1604 | 5.11.4.3 | монтаж продложть |  | 4h | 2026-08-14 09:30 A | 2026-08-14 14:30 A | 1603 | 100% |  |  |  | start no earlier than 2026-08-10 08:00 | Некрасов А; Бундин В | 8h | 8h |
| 1605 | 5.11.4.4 | монтаж продложть |  | 4h | 2026-08-17 09:00 A | 2026-08-17 13:00 A | 1603 | 100% |  |  |  | start no earlier than 2026-08-17 09:00 | Некрасов А; Бобренок В | 8h | 8h |

| ID | WBS | Task | Type | Duration | Start | Finish | Predecessors | Complete | Remaining | Total slack | Free slack | Constraint | Resources | Work | Actual work |
| --- | --- | --- | --- | --- | --- | --- | --- | --- | --- | --- | --- | --- | --- | --- | --- |
| 1606 | 5.11.5 | **монтаж труба в земле между 3 и 4ц** |  | 22.38d? | 2026-08-10 08:00 A | 2026-09-09 12:00 |  | 29% | 15.83d? | 130.22d |  |  |  | 24.08h | 9h |
| 1607 | 5.11.5.1 | монтаж ф32 в ф40 |  | 4h | 2026-08-10 08:00 A | 2026-08-10 13:00 A |  | 100% |  |  |  | start no earlier than 2026-08-10 08:00 | Некрасов А; Макаревич А | 8h | 8h |
| 1608 | 5.11.5.2 | заявка греющий кабель внтуреннего монтажа + |  | 1h | 2026-08-11 09:00 A | 2026-08-11 10:00 A | 1607 | 100% |  |  |  | start no earlier than 2026-08-11 09:00 | Домоводов К | 1h | 1h |
| 1609 | 5.11.5.3 | заявка защита УЗО |  | 1h | 2026-08-24 09:00 | 2026-08-24 10:00 |  |  |  | 139.08d | 4.88d | start no earlier than 2026-08-24 09:00 | Шуранов Ю | 1h |  |
| 1610 | 5.11.5.4 | контоль доставка |  | 5min | 2026-08-31 09:00 | 2026-08-31 09:05 | 1608FS+5d, 1609 |  |  | 134.21d | 3.99d | start no earlier than 2026-08-31 09:00 | Зорькин В | 0.08h |  |
| 1611 | 5.11.5.5 | монтаж кабеля |  | 3h | 2026-09-07 09:00 | 2026-09-07 12:00 | 1610FS+1d |  |  | 130.22d | 0d | start no earlier than 2026-09-07 09:00 | Некрасов А; Макаревич А | 6h |  |
| 1612 | 5.11.5.6 | монтаж щиток кабеля с УЗО |  | 1d? | 2026-09-08 12:00 | 2026-09-09 12:00 | 1611FS+1d |  |  | 130.22d |  | start no earlier than 2026-09-04 09:00 | Некрасов А | 8h |  |
| 1613 | 5.11.6 | **монтаж трассы по воздуху м/д 4 и 5А** |  | 9.5d | 2026-08-11 09:00 A | 2026-08-24 13:00 |  | 24% | 7.24d | 142.09d |  |  |  | 9.25h | 1.25h |
| 1614 | 5.11.6.1 | подготовка материал |  | 1h | 2026-08-11 09:00 A | 2026-08-11 10:00 A |  | 100% |  |  |  | start no earlier than 2026-08-11 09:00 | Некрасов А; Макаревич А | 1h | 1h |
| 1615 | 5.11.6.2 | контроль поставки рым 10 |  | 15min | 2026-08-21 09:00 A | 2026-08-21 09:15 A |  | 100% |  |  |  | start no earlier than 2026-08-21 09:00 | Зорькин В | 0.25h | 0.25h |
| 1616 | 5.11.6.3 | монтаж |  | 4h | 2026-08-24 09:00 | 2026-08-24 13:00 | 1615 |  |  | 142.09d |  | start no earlier than 2026-08-24 09:00 | Некрасов А; Тимофеев В | 8h |  |
| 1617 | 5.11.7 | монтаж щиток греющего кабеля по воздуху |  | 4h | 2026-08-24 09:00 | 2026-08-24 13:00 |  |  |  | 142.09d |  | start no earlier than 2026-08-24 09:00 | Макаревич А | 4h |  |
| 1618 | 5.11.8 | монтаж трассы по 4ц |  | 6h | 2026-08-18 09:00 A | 2026-08-18 16:00 A | 1603 | 100% |  |  |  | start no earlier than 2026-08-18 09:00 | Некрасов А; Макаревич А | 11h | 11h |
| 1619 | 5.11.9 | монтаж трассы по 5ц |  | 4h | 2026-08-19 09:00 A | 2026-08-19 13:00 A | 1618 | 100% |  |  |  | start no earlier than 2026-08-19 09:00 | Некрасов А; Макаревич А | 8h | 8h |
| 1620 | 5.11.10 | монтаж трассы по 5ц |  | 6h | 2026-08-24 09:00 | 2026-08-24 16:00 | 1618 |  |  | 141.84d |  | start no earlier than 2026-08-24 09:00 | Некрасов А; Макаревич А | 10h |  |
| 1621 | 5.12 | **монтаж тепловые пушки подвесные 5 цех** |  | 21.38d | 2026-08-21 09:00 A | 2026-09-21 12:00 |  | 24% | 16.25d | 122.22d |  |  |  | 25h | 6h |
| 1622 | 5.12.1 | составить схему монтажа |  | 4h | 2026-08-26 09:00 A | 2026-08-26 13:00 A |  | 100% |  |  |  | start no earlier than 2026-08-26 09:00 | Зорькин В | 4h | 4h |
| 1623 | 5.12.2 | заявка на тепловые пушки вулкан |  | 2h | 2026-08-21 09:00 A | 2026-08-21 11:00 A |  | 100% |  |  |  | start no earlier than 2026-08-21 09:00 | Зорькин В | 2h | 2h |
| 1624 | 5.12.3 | контроль остатки нерж труба, фтинги |  | 2h | 2026-09-07 09:00 | 2026-09-07 11:00 | 1623 |  |  | 122.22d | 0d | start no earlier than 2026-09-07 09:00 | Зорькин В | 2h |  |
| 1625 | 5.12.4 | контроль доставки |  | 1h | 2026-09-16 11:00 | 2026-09-16 12:00 | 1624FS+7d |  |  | 122.22d | 0d | start no earlier than 2026-08-10 08:00 | Зорькин В | 1h |  |
| 1626 | 5.12.5 | монтаж |  | 2d | 2026-09-17 12:00 | 2026-09-21 12:00 | 1625FS+1d |  |  | 122.22d |  | start no earlier than 2026-08-10 08:00 | Некрасов А | 16h |  |
| 1627 | 5.13 | замена светильника перегоревшего у Большакова в кабинете |  | 2h | 2026-08-06 09:00 A | 2026-08-06 11:00 A |  | 100% |  |  |  | start no earlier than 2026-08-07 09:00 | Труфанов А | 2h | 2h |
| 1628 | 5.14 | устранить утечку воды в душе |  | 1h | 2026-08-06 09:00 A | 2026-08-06 10:00 A |  | 100% |  |  |  | start no earlier than 2026-08-06 08:00 | Бундин В | 1h | 1h |
| 1629 | 5.15 | **установить унитаз на 3 этаже** |  | 3.38d? | 2026-08-04 09:00 A | 2026-08-07 12:00 A |  | 100% |  |  |  |  | Бобренок В | 38h | 38h |
| 1630 | 5.15.1 | заказать гофру и гибкую вставку |  | 1d? | 2026-08-04 09:00 A | 2026-08-04 18:00 A |  | 100% |  |  |  | start no earlier than 2026-08-04 08:00 | Шуранов Ю | 8h | 8h |
| 1631 | 5.15.2 | установка унитаза (гофротруба и гибкая подводка и коронка у Большакова) коронку вернуть Большакову |  | 3h | 2026-08-07 09:00 A | 2026-08-07 12:00 A |  | 100% |  |  |  | start no earlier than 2026-08-07 09:00 | Труфанов А | 3h | 3h |
| 1632 | 5.16 | монтаж свет в туалете 3 этаж (оператора дадут в помощь) | manual | 6h | 2026-08-09 09:00 A | 2026-08-10 10:00 A |  | 100% |  |  |  | start no earlier than 2026-08-09 09:00 | Бобренок В | 6h | 6h |
| 1633 | 5.17 | прикрутить смотровые окна на дробилке, не хватает саморезов- просыпается сырье |  | 1h | 2026-08-02 09:00 A | 2026-08-03 10:00 A |  | 100% |  |  |  | start no earlier than 2026-08-02 09:00 | Макаревич А | 1h | 1h |
| 1634 | 5.18 | сборка ограничиетелей на сетку №2 для сито из лазера |  | 4h | 2026-07-17 09:00 A | 2026-07-17 13:00 A |  | 100% |  |  |  | start no earlier than 2026-07-17 09:00 | Макаревич А | 4h | 4h |
| 1635 | 5.19 | ремонт сетки, хомуты с 5ц |  | 2h | 2026-07-15 09:00 A | 2026-07-15 11:00 A |  | 100% |  |  |  | start no earlier than 2026-07-15 09:00 | Бундин В | 2h | 2h |
| 1636 | 5.20 | вырезать сетку 2мм на большую дробилку |  | 2h | 2026-07-15 09:00 A | 2026-07-15 11:00 A |  | 100% |  |  |  | start no earlier than 2026-07-15 09:00 | Бобренок В | 2h | 2h |
| 1637 | 5.21 | заменаить ножи на мал дробилке |  | 6h | 2026-07-06 08:00 A | 2026-07-06 16:00 A |  | 100% |  |  |  | start no earlier than 2026-07-06 08:00 | Дедов В | 6h | 6h |
| 1638 | 5.22 | заварить хомут от деко 5 ц. в слесарке |  | 2h | 2026-07-11 09:00 A | 2026-07-13 11:00 A |  | 100% |  |  |  | start no earlier than 2026-07-11 09:00 | Макаревич А | 2h | 2h |
| 1639 | 5.23 | Дефектовка кнопок растаривателя, ремонт, клинит кнопку |  | 30min | 2026-07-06 08:00 A | 2026-07-06 09:30 A |  | 100% |  |  |  | start no earlier than 2026-07-06 08:00 | Дедов В | 0.5h | 0.5h |
| 1640 | 5.24 | сито просечка с лазера - доплнить 4шт до 6-8 уголоков ограничителей. |  | 2h | 2026-06-26 08:00 A | 2026-06-26 11:00 A |  | 100% |  |  |  | start no earlier than 2026-06-26 08:00 | Макаревич А | 2h | 2h |
| 1641 | 5.25 | просечки нерж. наварить уголки, чтобы не падало внутрь |  | 2h | 2026-06-25 08:00 A | 2026-06-25 11:00 A |  | 100% |  |  |  | start no earlier than 2026-06-25 08:00 | Макаревич А | 2h | 2h |
| 1642 | 5.26 | на поворотную кнопку реверса шнека №1 установить бокс (взять на складе) |  | 1h | 2026-06-24 09:00 A | 2026-06-24 10:00 A |  | 100% |  |  |  | start no earlier than 2026-06-24 09:00 | Труфанов А | 1h | 1h |
| 1643 | 5.27 | развернуть ножи на большой дробилке, если не успеваем передаем по смене |  | 3h | 2026-06-23 08:00 A | 2026-06-23 12:00 A |  | 100% |  |  |  | start no earlier than 2026-06-23 08:00 | Труфанов А; Макаревич А | 6h | 6h |

| ID | WBS | Task | Duration | Start | Finish | Predecessors | Complete | Remaining | Actual finish | Total slack | Constraint | Resources | Work | Actual work |
| --- | --- | --- | --- | --- | --- | --- | --- | --- | --- | --- | --- | --- | --- | --- |
| 1644 | 5.28 | **протянуть все болтовые соединения: шиберы растаривателей, металлоконструкции под бункера и т.д. если нет болта - прикручиваем** | 3h? | 2026-06-23 09:00 A | 2026-06-23 12:00 |  | 100% |  | 2026-06-23 18:00 |  |  | Труфанов А | 11h | 11h |
| 1645 | 5.28.1 | заказать краску | 1d? | 2026-06-23 09:00 A | 2026-06-23 18:00 A |  | 100% |  |  |  | start no earlier than 2026-06-23 08:00 | Шуранов Ю | 8h | 8h |
| 1646 | 5.29 | проверить откуда гайку нашли на магните, растариватель-дробилка -шнеки -крепление магнитов | 1h | 2026-06-22 09:00 A | 2026-06-22 10:00 A |  | 100% |  |  |  | start no earlier than 2026-06-22 08:00 | Бундин В | 1h | 1h |
| 1647 | 5.30 | **закрепить штурвал на растаривателе 1** | 1d? | 2026-06-23 09:00 A | 2026-06-23 18:00 A |  | 100% |  |  |  |  | Бундин В | 16h | 16h |
| 1648 | 5.30.1 | заказываем растариватель | 1d? | 2026-06-23 09:00 A | 2026-06-23 18:00 A |  | 100% |  |  |  | start no earlier than 2026-06-23 09:00 | Шуранов Ю | 8h | 8h |
| 1649 | 5.31 | заварить просеиватель ближе к стеллажам и на правом (расскажу как) | 3h | 2026-06-11 09:00 A | 2026-06-11 12:00 A |  | 100% |  |  |  | start no earlier than 2026-06-11 09:00 | Бундин В | 3h | 3h |
| 1650 | 5.32 | ремонт просечку с вибросито, передать в 5ц | 2h | 2026-06-12 09:00 A | 2026-06-12 11:00 A |  | 100% |  |  |  | start no earlier than 2026-06-12 09:00 | Бундин В | 2h | 2h |
| 1651 | 5.33 | ремонт хомут с вибросито | 2h | 2026-06-05 09:00 A | 2026-06-05 11:00 A |  | 100% |  |  |  | start no earlier than 2026-06-05 08:00 | Бундин В | 2h | 2h |
| 1652 | 5.34 | заварить хомут от деко 5 ц. в слесарке | 2h | 2026-07-14 09:00 A | 2026-07-14 11:00 A |  | 100% |  |  |  | start no earlier than 2026-07-14 09:00 | Бундин В | 2h | 2h |
| 1653 | 5.35 | **востановить коробку тельфера** | 16.01d | 2026-06-04 09:00 A | 2026-06-26 09:05 |  | 59% | 6.56d |  | 183.58d |  |  | 5.08h | 3h |
| 1654 | 5.35.1 | найти производителя тельфера и выяснить марку коробку / найти в продаже подходящий артикул | 2h | 2026-06-04 09:00 A | 2026-06-04 11:00 A |  | 100% |  |  |  | start no earlier than 2026-06-04 09:00 | Шуранов Ю | 2h | 2h |
| 1655 | 5.35.2 | заявка | 1h | 2026-06-05 09:00 A | 2026-06-05 10:00 A |  | 100% |  |  |  | start no earlier than 2026-06-05 09:00 | Шуранов Ю | 1h | 1h |
| 1656 | 5.35.3 | доставка контроль | 5min | 2026-06-26 09:00 | 2026-06-26 09:05 |  |  |  |  | 183.58d | start no earlier than 2026-06-26 09:00 | Домоводов К | 0.08h |  |
| 1657 | 5.35.4 | замена | 2h | 2026-06-23 09:00 | 2026-06-23 11:00 |  |  |  |  | 186.34d | start no earlier than 2026-06-23 09:00 | Некрасов А | 2h |  |
| 1658 | 5.36 | замена пускатель тельфер 24дц / найти/изготовить + установить крышку контакторов / доработать крепеж кабеля к тросу | 1h | 2026-05-27 09:00 A | 2026-05-27 10:00 A |  | 100% |  |  |  | start no earlier than 2026-05-27 09:00 | Некрасов А; Бундин В | 2h | 2h |
| 1659 | 5.37 | проверка всех банок АКБ штабелера / замена неисправных | 2h | 2026-05-30 09:00 A | 2026-06-01 11:00 A |  | 100% |  |  |  | start no earlier than 2026-05-30 09:00 | Бобренок В | 2h | 2h |
| 1660 | 5.38 | посмотреть что с тельфером на дробилке | 1h | 2026-05-26 09:00 A | 2026-05-26 10:00 A |  | 100% |  |  |  | start no earlier than 2026-05-26 09:00 | Некрасов А | 1h | 1h |
| 1661 | 5.39 | приварить магниты на сито | 0.5h | 2026-05-26 09:00 A | 2026-05-26 09:30 A |  | 100% |  |  |  | start no earlier than 2026-05-26 09:00 | Некрасов А | 0.5h | 0.5h |
| 1662 | 5.40 | заварить растариватель №2 | 4h | 2026-05-25 08:00 A | 2026-05-25 13:00 A |  | 100% |  |  |  | start no earlier than 2026-05-25 08:00 | Тимофеев В; Некрасов А | 7h | 7h |
| 1663 | 5.41 | уложить красиво кабель в гофре зона дробилки | 1h | 2026-05-19 09:00 A | 2026-05-19 10:00 A |  | 100% |  |  |  | start no earlier than 2026-05-19 09:00 | Бундин В; Некрасов А | 2h | 2h |
| 1664 | 5.42 | заварить 2 просечки от сито и отправить все на 5 цех | 1h | 2026-05-19 09:00 A | 2026-05-19 10:00 A |  | 100% |  |  |  | start no earlier than 2026-05-19 09:00 | Бундин В | 1h | 1h |
| 1665 | 5.43 | сделать дублирующий пост (вкл. И выкл. Смесителя) на мезонине дробилки | 4h | 2026-05-18 08:00 A | 2026-05-18 13:00 A |  | 100% |  |  |  | start no earlier than 2026-05-18 08:00 | Дедов В | 4h | 4h |
| 1666 | 5.44 | прошприцевать сам двигатель дробилки | 1h | 2026-05-19 09:00 A | 2026-05-19 10:00 A |  | 100% |  |  |  | start no earlier than 2026-05-19 09:00 | Некрасов А; Бундин В | 2h | 2h |
| 1667 | 5.45 | **сборка схемы блокировки дробилки при открытом люке** | 7.25d? | 2026-05-17 09:00 A | 2026-05-27 11:00 A |  | 100% |  |  |  |  |  | 17h | 17h |
| 1668 | 5.45.1 | монтаж кабель | 4h | 2026-05-17 09:00 A | 2026-05-18 13:00 A |  | 100% |  |  |  | start no earlier than 2026-05-17 09:00 | Макаревич А | 4h | 4h |
| 1669 | 5.45.2 | сборка схема | 2h | 2026-05-27 09:00 A | 2026-05-27 11:00 A | 1668 | 100% |  |  |  | start no earlier than 2026-05-27 09:00 | Дедов В | 2h | 2h |
| 1670 | 5.45.3 | заказать концевики | 1d? | 2026-05-25 09:00 A | 2026-05-25 18:00 A |  | 100% |  |  |  | start no earlier than 2026-05-25 08:00 | Шуранов Ю | 8h | 8h |
| 1671 | 5.45.4 | доделать схему блокировки- концевики LA167-Z8/122 на складе | 3h | 2026-05-26 09:00 A | 2026-05-26 12:00 A |  | 100% |  |  |  | start no earlier than 2026-05-26 09:00 | Дедов В | 3h | 3h |
| 1672 | 5.46 | проверка центровки мотора после замены подшипнка + замена подшипник задний | 4h | 2026-05-12 08:00 A | 2026-05-12 13:00 A |  | 100% |  |  |  | start no earlier than 2026-05-12 08:00 | Тимофеев В; Бобренок В | 8h | 8h |
| 1673 | 5.47 | заварить сито | 2h | 2026-05-08 08:00 A | 2026-05-08 11:00 A |  | 100% |  |  |  | start no earlier than 2026-05-08 08:00 | Макаревич А | 2h | 2h |
| 1674 | 5.48 | закрепить штурвал, чтобы не болтался на растаривателе 1 | 1h | 2026-05-08 08:00 A | 2026-05-08 10:00 A |  | 100% |  |  |  | start no earlier than 2026-05-08 08:00 | Макаревич А | 1h | 1h |
| 1675 | 5.49 | посмотреть компрессор (если проблема в предохранителе- то взять у меня на столе)пароль8989 | 1h | 2026-05-08 08:00 A | 2026-05-08 10:00 A |  | 100% |  |  |  | start no earlier than 2026-05-08 08:00 | Дедов В | 1h | 1h |
| 1676 | 5.50 | проверить на 2х котлах давление в системе отопления- где нужно долить воды. И слить воду система отопления 5а цех | 2h | 2026-05-06 08:00 A | 2026-05-06 11:00 A |  | 100% |  |  |  | start no earlier than 2026-05-06 08:00 | Бобренок В | 2h | 2h |

| ID | WBS | Task | Type | Duration | Start | Finish | Predecessors | Complete | Actual start | Actual finish | Total slack | Constraint | Resources | Work | Actual work |
| --- | --- | --- | --- | --- | --- | --- | --- | --- | --- | --- | --- | --- | --- | --- | --- |
| 1677 | 5.51 | **ремонт сито (попробовать заклеить эпоксидкой) / ремонт у производсителя** |  | 13d | 2026-05-13 09:00 A | 2026-05-29 18:00 A |  | 100% |  |  |  |  |  | 0.75h | 0.75h |
| 1678 | 5.51.1 | отправить сито на ремонт производителю |  | 30min | 2026-05-13 09:00 A | 2026-05-13 09:30 A |  | 100% |  |  |  | start no earlier than 2026-05-13 09:00 | Шуранов Ю | 0.5h | 0.5h |
| 1679 | 5.51.2 | контроль доставки |  | 15min | 2026-05-29 17:45 A | 2026-05-29 18:00 A | 1678SF+15d | 100% |  |  |  | start no earlier than 2026-05-12 08:00 | Шуранов Ю | 0.25h | 0.25h |
| 1680 | 5.52 | зачистить приемный бункер после дробилке болгаркой |  | 1h | 2026-04-30 08:00 A | 2026-04-30 10:00 A |  | 100% |  |  |  | start no earlier than 2026-04-30 08:00 | Дедов В | 1h | 1h |
| 1681 | 5.53 | **ремонт стиральной машинки / шум подшипника** |  | 1d? | 2026-04-27 09:00 | 2026-04-27 18:00 |  |  |  |  | 226.59d |  |  | 8h |  |
| 1682 | 5.53.1 | договор |  | 1d? | 2026-04-27 09:00 | 2026-04-27 18:00 |  |  |  |  | 226.59d | start no earlier than 2026-04-27 08:00 | Шуранов Ю | 8h |  |
| 1683 | 5.54 | **ремонт утечки с системы отопления** |  | 1.12d | 2026-05-04 09:00 | 2026-05-05 10:00 |  | 100% | 2026-05-07 09:00 | 2026-05-08 10:00 |  |  |  | 10h | 10h |
| 1684 | 5.54.1 | слив воды |  | 4h | 2026-05-07 09:00 A | 2026-05-07 13:00 A |  | 100% |  |  |  | start no earlier than 2026-05-07 09:00 | Макаревич А | 4h | 4h |
| 1685 | 5.54.2 | ремонт утечки |  | 2h | 2026-05-07 13:00 A | 2026-05-07 16:00 A | 1684 | 100% |  |  |  | start no earlier than 2026-04-27 08:00 | Макаревич А | 2h | 2h |
| 1686 | 5.54.3 | заправить воду / опресовать |  | 4h | 2026-05-07 15:00 A | 2026-05-08 10:00 A | 1685 | 100% |  |  |  | start no earlier than 2026-04-27 08:00 | Макаревич А | 4h | 4h |
| 1687 | 5.55 | долить в систему отопления воды цех 5а, электрокотел не включаем. Работаем на газ котле |  | 1h | 2026-04-24 09:00 A | 2026-04-24 10:00 A |  | 100% |  |  |  | start no earlier than 2026-04-24 08:00 | Бундин В | 1h | 1h |
| 1688 | 5.56 | вывезти шнек на синий склад |  | 1h | 2026-04-23 09:00 A | 2026-04-23 10:00 A |  | 100% |  |  |  | start no earlier than 2026-04-24 09:00 | Бобренок В; Тимофеев В | 2h | 2h |
| 1689 | 5.57 | взять на зажима для троса на складе и натянуть трос на воротах 5а |  | 2h | 2026-04-25 09:00 A | 2026-04-27 11:00 A |  | 100% |  |  |  | start no earlier than 2026-04-25 09:00 | Макаревич А | 2h | 2h |
| 1690 | 5.58 | убавить температуры на газ котлах |  | 1h | 2026-04-24 09:00 A | 2026-04-24 10:00 A |  | 100% |  |  |  | start no earlier than 2026-04-24 09:00 | Шуранов Ю | 1h | 1h |
| 1691 | 5.59 | заварить сито и хомуты |  | 1h | 2026-04-24 09:00 A | 2026-04-24 10:00 A |  | 100% |  |  |  | start no earlier than 2026-04-24 09:00 | Тимофеев В | 1h | 1h |
| 1692 | 5.60 | проверка вибросит детальный осмотр с полной разборкой / ремонт трещин |  | 4h | 2026-04-21 09:00 A | 2026-04-21 13:00 A |  | 100% |  |  |  | start no earlier than 2026-04-21 09:00 | Бундин В | 4h | 4h |
| 1693 | 5.61 | протяжка анкеров стеллажей, болтается |  | 2h | 2026-04-20 09:00 A | 2026-04-20 11:00 A |  | 100% |  |  |  | start no earlier than 2026-04-20 09:00 | Макаревич А | 2h | 2h |
| 1694 | 5.62 | замена потускневших ламп в инсекютере. Мастеру сообщить кол-во. б/у складывать в коробку |  | 2h | 2026-05-06 09:00 A | 2026-05-06 11:00 A |  | 100% |  |  |  | start no earlier than 2026-05-06 09:00 | Бобренок В | 2h | 2h |
| 1695 | 5.63 | переворачиваем молотки дробилка |  | 4h | 2026-04-15 09:00 A | 2026-04-15 13:00 A |  | 100% |  |  |  | start no earlier than 2026-04-17 08:00 | Макаревич А; Тимофеев В | 8h | 8h |
| 1696 | 5.64 | завершить работы по примыканию к кровли 5А (излишки изоспан) |  | 1d? | 2026-06-19 09:00 | 2026-06-19 18:00 |  |  |  |  | 187.59d | start no earlier than 2026-06-19 09:00 | Олег | 8h |  |
| 1697 | 5.65 | монтаж тамбур для завоза навесок |  | 10d | 2026-04-16 09:00 | 2026-04-29 18:00 |  |  |  |  | 224.59d | start no earlier than 2026-04-16 08:00 | Некрасов А; Олег | 160h |  |
| 1698 | 5.66 | вырезать верхушку еврокуба возле мусорки, будет туда засыпать отсев для дворника | manual | 1h | 2026-04-18 09:00 A | 2026-04-18 10:00 A |  | 100% |  |  |  | start no earlier than 2026-04-18 09:00 | Макаревич А | 1h | 1h |
| 1699 | 5.67 | заварить хомуты и сетки от сито |  | 1h | 2026-04-14 09:00 A | 2026-04-14 10:00 A |  | 100% |  |  |  | start no earlier than 2026-04-14 08:00 | Труфанов А | 1h | 1h |
| 1700 | 5.68 | проверить дист. Воду на штабелере, если нужно долить (фото модели акб) |  | 1h | 2026-04-13 09:00 A | 2026-04-13 10:00 A |  | 100% |  |  |  | start no earlier than 2026-04-13 08:00 | Бундин В | 1h | 1h |
| 1701 | 5.69 | установка шнека отремонтированного обратно на дробилку |  | 6h | 2026-04-21 09:00 A | 2026-04-21 16:00 A |  | 100% |  |  |  | start no earlier than 2026-04-21 09:00 | Некрасов А; Труфанов А | 12h | 12h |
| 1702 | 5.70 | установка бойлера отремонтированного в туалет, а с туалета на 2 этаж, мастер выделит человека в помощь |  | 4h | 2026-04-13 09:00 A | 2026-04-13 13:00 A |  | 100% |  |  |  | start no earlier than 2026-04-13 09:00 | Труфанов А | 4h | 4h |
| 1703 | 5.71 | замена паука на расстаривателе- высокие бэги не могут поднять до конца |  | 1h | 2026-04-10 08:00 A | 2026-04-10 10:00 A |  | 100% |  |  |  | start no earlier than 2026-04-10 08:00 | Тимофеев В | 1h | 1h |

| ID | WBS | Task | Type | Duration | Start | Finish | Predecessors | Complete | Actual start | Actual finish | Constraint | Resources | Work | Actual work |
| --- | --- | --- | --- | --- | --- | --- | --- | --- | --- | --- | --- | --- | --- | --- |
| 1704 | 5.72 | **получить насос Wilo, установить на 1 газовый котел** |  | 0.12d | 2026-04-10 09:00 A | 2026-04-10 10:00 A |  | 100% |  |  |  | Бундин В | 2h | 2h |
| 1705 | 5.72.1 | проверить направление подачи воды, посмотреть по аналогии 2 котла |  | 1h | 2026-04-10 09:00 A | 2026-04-10 10:00 A |  | 100% |  |  | start no earlier than 2026-04-10 09:00 | Тимофеев В | 1h | 1h |
| 1706 | 5.73 | ремот сеток с сито |  | 2h | 2026-04-06 09:00 A | 2026-04-06 11:00 A |  | 100% |  |  | start no earlier than 2026-04-06 08:00 | Труфанов А | 2h | 2h |
| 1707 | 5.74 | на выходах из сито №1 и №2 установить сетки с бортиками |  | 2h | 2026-04-06 09:00 A | 2026-04-06 11:00 A |  | 100% |  |  | start no earlier than 2026-04-06 08:00 | Труфанов А | 2h | 2h |
| 1708 | 5.75 | сыпит сырье с дробилки (вход) |  | 2h | 2026-06-15 09:00 A | 2026-06-15 11:00 A |  | 100% |  |  | start no earlier than 2026-06-13 09:00 | Некрасов А; Труфанов А | 4h | 4h |
| 1709 | 5.76 | востановить ручной штурвал заслонки на растаривателе дробилки |  | 1h | 2026-04-02 08:00 A | 2026-04-02 10:00 A |  | 100% |  |  | start no earlier than 2026-04-02 08:00 | Бобренок В | 1h | 1h |
| 1710 | 5.77 | изготовить штурвал заслонки на растариватель вибросита у стены |  | 2h | 2026-04-13 09:00 A | 2026-04-13 11:00 A |  | 100% |  |  | start no earlier than 2026-04-13 09:00 | Труфанов А | 2h | 2h |
| 1711 | 5.78 | монтаж отбойников | manual | 6h | 2026-04-18 09:00 A | 2026-04-20 10:00 A |  | 100% |  |  | start no earlier than 2026-04-18 09:00 | Бобренок В | 6h | 6h |
| 1712 | 5.79 | **ремонт шкаф управления шнеком 1 растариватель (замена щитка взять на складе)** |  | 13.5d? | 2026-04-21 09:00 | 2026-05-07 13:00 |  | 100% | 2026-04-17 09:00 | 2026-04-29 09:30 |  |  | 91.75h | 91.75h |
| 1713 | 5.79.1 | вывод кнопки управления частотником на ШУ (если нужно замена частотника) с мастером согласовать остановку |  | 5h | 2026-04-20 09:00 A | 2026-04-20 15:00 A |  | 100% |  |  | start no earlier than 2026-04-20 09:00 | Дедов В | 5h | 5h |
| 1714 | 5.79.2 | установить кнопочный пост |  | 2h | 2026-04-21 09:00 A | 2026-04-21 11:00 A |  | 100% |  |  | start no earlier than 2026-04-21 09:00 | Дедов В | 2h | 2h |
| 1715 | 5.79.3 | заявка кнопка SB7 |  | 15min | 2026-04-21 09:00 A | 2026-04-21 09:15 A |  | 100% |  |  | start no earlier than 2026-04-21 09:00 | Зорькин В | 0.25h | 0.25h |
| 1716 | 5.79.4 | доставка |  | 5d | 2026-04-21 09:15 A | 2026-04-28 09:15 A | 1715 | 100% |  |  | start no earlier than 2026-04-20 08:00 | Карабанов | 40h | 40h |
| 1717 | 5.79.5 | замена |  | 1h | 2026-04-27 09:15 A | 2026-04-27 10:15 A | 1716 | 100% |  |  | start no earlier than 2026-04-20 08:00 | Дедов В | 1h | 1h |
| 1718 | 5.79.6 | ремонт корпус |  | 1h | 2026-04-17 09:00 A | 2026-04-17 10:00 A | 1713 | 100% |  |  | start no earlier than 2026-04-09 09:00 | Труфанов А | 1h | 1h |
| 1719 | 5.79.7 | **замена корпус** |  | 6.06d | 2026-04-21 09:00 A | 2026-04-29 09:30 A |  | 100% |  |  |  |  | 42.5h | 42.5h |
| 1720 | 5.79.7.1 | заявка |  | 30min | 2026-04-21 09:00 A | 2026-04-21 09:30 A |  | 100% |  |  | start no earlier than 2026-03-31 08:00 | Зорькин В | 0.5h | 0.5h |
| 1721 | 5.79.7.2 | доставка |  | 5d | 2026-04-21 09:30 A | 2026-04-29 09:30 A | 1720 | 100% |  |  | start no earlier than 2026-03-31 08:00 | Карабанов | 40h | 40h |
| 1722 | 5.79.7.3 | замена |  | 2h | 2026-04-28 09:30 A | 2026-04-28 11:30 A | 1721 | 100% |  |  | start no earlier than 2026-04-14 09:00 | Тимофеев В | 2h | 2h |
| 1723 | 5.80 | получить фланец на складе NMRV040 и установить мотор-редуктор на расстаривателе №1 |  | 2h | 2026-04-28 09:00 A | 2026-04-28 11:00 A |  | 100% |  |  | start no earlier than 2026-04-28 09:00 | Бундин В | 2h | 2h |
| 1724 | 5.81 | убрать красный скотч везде в дробилке, сделать крепление фильтра с малой дробилки на ленточный хомут |  | 3h | 2026-03-27 09:00 A | 2026-03-27 12:00 A |  | 100% |  |  | start no earlier than 2026-03-27 08:00 | Труфанов А | 3h | 3h |
| 1725 | 5.82 | ремонт вибросито |  | 4h | 2026-03-27 08:00 A | 2026-03-27 13:00 A |  | 100% |  |  | start no earlier than 2026-03-27 08:00 | Тимофеев В; Некрасов А | 7h | 7h |
| 1726 | 5.83 | заварить сито возле слесарки (2 шт) и деки 2 шт |  | 3h | 2026-03-26 09:00 A | 2026-03-26 12:00 A |  | 100% |  |  | start no earlier than 2026-03-26 08:00 | Труфанов А | 3h | 3h |
| 1727 | 5.84 | сделать отбойник на входную дверь |  | 1h | 2026-03-28 09:00 A | 2026-03-30 10:00 A |  | 100% |  |  | start no earlier than 2026-03-28 09:00 | Бундин В | 1h | 1h |
| 1728 | 5.85 | сделать трап в курилку |  | 3h | 2026-04-01 09:00 A | 2026-04-01 12:00 A |  | 100% |  |  | start no earlier than 2026-04-01 09:00 | Бундин В | 3h | 3h |
| 1729 | 5.86 | заварить бункер дробилки |  | 2h | 2026-03-24 09:00 A | 2026-03-24 11:00 A |  | 100% |  |  | start no earlier than 2026-03-24 09:00 | Некрасов А; Труфанов А | 4h | 4h |
| 1730 | 5.87 | перенос металл с торца стеллажа напротив ВРУ / на син склад |  | 1h | 2026-03-25 09:00 A | 2026-03-25 10:00 A |  | 100% |  |  | start no earlier than 2026-03-25 09:00 | Бобренок В | 1h | 1h |
| 1731 | 5.88 | пульт управления шибером растариватель правый демонтаж красный скотч / закрепить |  | 1h | 2026-03-22 09:00 A | 2026-03-23 10:00 A |  | 100% |  |  | start no earlier than 2026-03-22 09:00 | Бобренок В | 1h | 1h |
| 1732 | 5.89 | установить корпус на переключатель реверса шнек растаривателя правый / продуть от пыли контакты |  | 30min | 2026-03-22 09:00 A | 2026-03-23 09:30 A |  | 100% |  |  | start no earlier than 2026-03-22 09:00 | Бобренок В | 0.5h | 0.5h |
| 1733 | 5.90 | демонтаж розетки без крышки 2 этаж щиток в фае |  | 30min | 2026-03-25 09:00 A | 2026-03-25 09:30 A |  | 100% |  |  | start no earlier than 2026-03-25 09:00 | Бобренок В | 0.5h | 0.5h |
| 1734 | 5.91 | подлючить розетку для зарядки нового АКБ для штабелера Ц.5А |  | 2h | 2026-03-21 09:00 A | 2026-03-23 11:00 A |  | 100% |  |  | start no earlier than 2026-03-21 09:00 | Дедов В | 2h | 2h |

| ID | WBS | Task | Type | Duration | Start | Finish | Predecessors | Complete | Total slack | Free slack | Constraint | Resources | Work | Actual work |
| --- | --- | --- | --- | --- | --- | --- | --- | --- | --- | --- | --- | --- | --- | --- |
| 1735 | 5.92 | **ремонт шнек с дробилки** |  | 11.75d | 2026-03-17 09:00 A | 2026-04-01 16:00 A |  | 100% |  |  |  |  | 7h | 7h |
| 1736 | 5.92.1 | орг пескоструйка корпус шнека - отправить |  | 1h | 2026-03-17 09:00 A | 2026-03-17 10:00 A |  | 100% |  |  | start no earlier than 2026-03-17 08:00 | Шуранов Ю | 1h | 1h |
| 1737 | 5.92.2 | сборка шнека с ремонта |  | 6h | 2026-04-01 09:00 A | 2026-04-01 16:00 A | 1736 | 100% |  |  | start no earlier than 2026-04-01 09:00 | Некрасов А | 6h | 6h |
| 1738 | 5.93 | установить уплотнения на гофра без красн скотча |  | 4h | 2026-03-20 09:00 A | 2026-03-20 13:00 A |  | 100% |  |  | start no earlier than 2026-03-20 09:00 | Некрасов А; Труфанов А | 8h | 8h |
| 1739 | 5.94 | добавить воду в 4 газ. Котел проверить реальное давление в системе |  | 2h | 2026-03-19 08:00 A | 2026-03-19 11:00 A |  | 100% |  |  | start no earlier than 2026-03-19 08:00 | Бундин В | 2h | 2h |
| 1740 | 5.95 | сменить палярность вращения дробилки / сточило ножи |  | 1h | 2026-03-16 09:00 A | 2026-03-16 10:00 A |  | 100% |  |  | start no earlier than 2026-03-16 09:00 | Труфанов А; Некрасов А | 2h | 2h |
| 1741 | 5.96 | **устанвить ИБП на клапан газ** |  | 0.03d | 2026-03-16 09:00 A | 2026-03-16 09:15 A |  | 100% |  |  |  |  | 0.25h | 0.25h |
| 1742 | 5.96.1 | координация сроков выполнения с газовщиком |  | 15min | 2026-03-16 09:00 A | 2026-03-16 09:15 A |  | 100% |  |  | start no earlier than 2026-03-16 09:00 | Шуранов Ю | 0.25h | 0.25h |
| 1743 | 5.97 | **установить вентилятор с клапаном и фильтром** |  | 11.03d? | 2026-03-18 09:00 | 2026-04-02 09:15 |  |  | 244.56d |  |  |  | 88.25h |  |
| 1744 | 5.97.1 | получить сммету / счет |  | 15min | 2026-03-18 09:00 | 2026-03-18 09:15 |  |  | 244.56d | 0d | start no earlier than 2026-03-18 09:00 | Домоводов К | 0.25h |  |
| 1745 | 5.97.2 | изготовление поставка |  | 10d | 2026-03-18 09:15 | 2026-04-01 09:15 | 1744 |  | 244.56d | 0d | start no earlier than 2026-03-17 08:00 | оплот | 80h |  |
| 1746 | 5.97.3 | монтаж |  | 1d? | 2026-04-01 09:15 | 2026-04-02 09:15 | 1745 |  | 244.56d |  | start no earlier than 2026-03-17 08:00 | оплот | 8h |  |
| 1747 | 5.98 | закрыть отвертстие от демонтированной аспирации фильтротканью. Временно, до изг фильтра |  | 1h | 2026-03-13 08:00 A | 2026-03-13 10:00 A |  | 100% |  |  | start no earlier than 2026-03-13 08:00 | Дедов В | 1h | 1h |
| 1748 | 5.99 | **на отверстие от демонтированной оспирации установить фильтр** |  | 7.01d | 2026-03-20 09:00 A | 2026-03-31 09:05 A |  | 100% |  |  |  |  | 2.08h | 2.08h |
| 1749 | 5.99.1 | получить фильтры |  | 5min | 2026-03-31 09:00 A | 2026-03-31 09:05 A |  | 100% |  |  | start no earlier than 2026-03-31 09:00 | Шуранов Ю | 0.08h | 0.08h |
| 1750 | 5.99.2 | монтаж |  | 1h | 2026-03-20 09:00 A | 2026-03-20 10:00 A | 1749FS+1d | 100% |  |  | start no earlier than 2026-03-20 09:00 | Некрасов А; Труфанов А | 2h | 2h |
| 1751 | 5.100 | **устранить ржавчину шнека после дробилки** |  | 1d? | 2026-03-16 09:00 A | 2026-03-16 18:00 A |  | 100% |  |  |  |  | 16h | 16h |
| 1752 | 5.100.1 | полная разборка / зачистка / сборка |  | 1d? | 2026-03-16 09:00 A | 2026-03-16 18:00 A |  | 100% |  |  | start no earlier than 2026-03-16 09:00 | Труфанов А; Некрасов А | 16h | 16h |
| 1753 | 5.100.2 | согласовать чем можно покрыть шнек внутри | milestone | 0d | 2026-03-16 09:00 A | 2026-03-16 09:00 A |  | 100% |  |  | start no earlier than 2026-03-16 09:00 | Домоводов К |  |  |
| 1754 | 5.101 | заменаить гидро АКБ на насосной станции / замена мебраны и золотника |  | 2h | 2026-03-15 09:00 A | 2026-03-16 11:00 A |  | 100% |  |  | start no earlier than 2026-03-15 09:00 | Бундин В | 2h | 2h |
| 1755 | 5.102 | устарнить выдавливание материала с шнека №1 узел дробилки |  | 4h | 2026-03-13 09:00 A | 2026-03-13 13:00 A |  | 100% |  |  | start no earlier than 2026-03-13 09:00 | Тимофеев В; Бундин В | 8h | 8h |
| 1756 | 5.103 | проверить обр клапан бойлер в гардеробе. Стреляет |  | 30min | 2026-03-13 09:00 A | 2026-03-13 09:30 A |  | 100% |  |  | start no earlier than 2026-03-13 09:00 | Бундин В | 0.5h | 0.5h |
| 1757 | 5.104 | долить дистилят в АКБ штабелер свинцовый |  | 1h | 2026-03-11 09:00 A | 2026-03-11 10:00 A |  | 100% |  |  | start no earlier than 2026-03-11 09:00 | Макаревич А | 1h | 1h |
| 1758 | 5.105 | **замена бойлер туалет** |  | 16.25d | 2026-03-23 09:00 A | 2026-04-14 11:00 A |  | 100% |  |  |  |  | 82.25h | 82.25h |
| 1759 | 5.105.1 | заявка бойлер |  | 15min | 2026-03-23 09:00 A | 2026-03-23 09:15 A |  | 100% |  |  | start no earlier than 2026-03-23 09:00 | Шуранов Ю | 0.25h | 0.25h |
| 1760 | 5.105.2 | доставка |  | 10d | 2026-03-30 09:00 A | 2026-04-10 18:00 A | 1759 | 100% |  |  | start no earlier than 2026-03-29 09:00 | Карабанов | 80h | 80h |
| 1761 | 5.105.3 | монтаж |  | 2h | 2026-04-14 09:00 A | 2026-04-14 11:00 A | 1760 | 100% |  |  | start no earlier than 2026-03-12 08:00 | Тимофеев В | 2h | 2h |
| 1762 | 5.106 | ремонт хомут с вибросито |  | 1h | 2026-03-10 09:00 A | 2026-03-10 10:00 A |  | 100% |  |  | start no earlier than 2026-03-10 09:00 | Макаревич А | 1h | 1h |
| 1763 | 5.107 | Заварить деку на сито |  | 2h | 2026-03-06 09:00 A | 2026-03-06 11:00 A |  | 100% |  |  | start no earlier than 2026-03-06 09:00 | Тимофеев В | 2h | 2h |
| 1764 | 5.108 | Замена двойной розетки (созвон с Шурановым) или спросить у мастера |  | 1h | 2026-03-05 08:00 A | 2026-03-05 10:00 A |  | 100% |  |  | start no earlier than 2026-03-05 08:00 | Дедов В | 1h | 1h |
| 1765 | 5.109 | ошибка Е10 стиральная машинка |  | 1h | 2026-03-04 09:00 A | 2026-03-04 10:00 A |  | 100% |  |  | start no earlier than 2026-03-04 09:00 | Дедов В | 1h | 1h |
| 1766 | 5.110 | ремонт сито, сварка шов |  | 2h | 2026-03-03 09:00 A | 2026-03-03 11:00 A |  | 100% |  |  | start no earlier than 2026-03-03 09:00 | Макаревич А | 2h | 2h |
| 1767 | 5.111 | ремонт растариватель №1 + установить косынки |  | 2h | 2026-03-03 09:00 A | 2026-03-03 11:00 A |  | 100% |  |  | start no earlier than 2026-03-03 09:00 | Некрасов А; Труфанов А | 4h | 4h |

| ID | WBS | Task | Duration | Start | Finish | Predecessors | Complete | Remaining | Actual start | Total slack | Free slack | Constraint | Resources | Work | Actual work |
| --- | --- | --- | --- | --- | --- | --- | --- | --- | --- | --- | --- | --- | --- | --- | --- |
| 1768 | 5.112 | **ремонт растаривателя №3 - клинит заслонку** | 97.81d | 2026-04-20 09:00 A | 2026-09-02 16:30 |  | 85% | 14.46d |  | 134.78d |  |  |  | 16.92h | 14.42h |
| 1769 | 5.112.1 | установка ручной штурвал управления шибером | 2h | 2026-04-20 09:00 A | 2026-04-20 11:00 A |  | 100% |  |  |  |  | start no earlier than 2026-04-20 09:00 | Бундин В | 2h | 2h |
| 1770 | 5.112.2 | контроль поставка Зип - оплачивали или нет? | 10min | 2026-08-12 09:00 A | 2026-08-12 09:10 A |  | 100% |  |  |  |  | start no earlier than 2026-08-12 09:00 | Зорькин В | 0.17h | 0.17h |
| 1771 | 5.112.3 | получить счет | 15min | 2026-08-13 09:00 A | 2026-08-13 09:15 A |  | 100% |  |  |  |  | start no earlier than 2026-08-13 09:00 | Домоводов К | 0.25h | 0.25h |
| 1772 | 5.112.4 | контроль поставки | 15min | 2026-08-31 09:15 | 2026-08-31 09:30 | 1771FS+12d |  |  |  | 136.5d | 0d | start no earlier than 2026-08-31 09:00 | Зорькин В | 0.25h |  |
| 1773 | 5.112.5 | приемка | 15min | 2026-09-01 09:30 | 2026-09-01 09:45 | 1772FS+1d |  |  |  | 136.5d |  | start no earlier than 2026-08-31 09:00 | Зорькин В | 0.25h |  |
| 1774 | 5.112.6 | замена | 4h | 2026-09-02 09:30 A | 2026-09-02 14:30 A | 1773FS+1d | 100% |  |  |  |  | start no earlier than 2026-08-12 09:00 | Тимофеев В | 4h | 4h |
| 1775 | 5.112.7 | Ремонт паука с растаривателя, оценить состояние. | 2h | 2026-09-02 09:00 A | 2026-09-02 11:00 A |  | 100% |  |  |  |  | start no earlier than 2026-09-02 09:00 | Тимофеев В | 2h | 2h |
| 1776 | 5.112.8 | установить фланец на редуктор NMRV050 | 2h | 2026-05-18 09:00 A | 2026-05-18 11:00 A |  | 100% |  |  |  |  | start no earlier than 2026-05-20 09:00 | Бобренок В | 2h | 2h |
| 1777 | 5.112.9 | настройка тепловое реле, настройка концевиков | 2h | 2026-09-02 14:30 | 2026-09-02 16:30 | 1774, 1776 |  |  |  | 134.78d |  | start no earlier than 2026-05-08 09:00 | Дедов В | 2h |  |
| 1778 | 5.112.10 | доработка пластины, которая клинит | 4h | 2026-05-07 09:00 A | 2026-05-07 13:00 A |  | 100% |  |  |  |  | start no earlier than 2026-05-07 09:00 | Тимофеев В | 4h | 4h |
| 1779 | 5.113 | **установить курилку на раму. Изготовить лавочку** | 19.25d? | 2026-02-28 09:00 A | 2026-03-27 11:00 A |  | 100% |  |  |  |  |  |  | 27h | 27h |
| 1780 | 5.113.1 | сделать удлинители для синей платформы, на которые встанет курилка | 1d? | 2026-02-28 09:00 A | 2026-03-02 18:00 A |  | 100% |  |  |  |  | start no earlier than 2026-02-28 09:00 | Макаревич А | 8h | 8h |
| 1781 | 5.113.2 | закрыть отверстие в полу жзелезом | 1h | 2026-03-13 09:00 A | 2026-03-13 10:00 A |  | 100% |  |  |  |  | start no earlier than 2026-03-13 09:00 | Некрасов А; Труфанов А | 2h | 2h |
| 1782 | 5.113.3 | монтаж фанера на лавочку | 2h | 2026-03-27 09:00 A | 2026-03-27 11:00 A | 1781 | 100% |  |  |  |  | start no earlier than 2026-03-27 09:00 |  |  |  |
| 1783 | 5.113.4 | поворот курилки к стене, от ветра | 1h | 2026-03-20 09:00 A | 2026-03-20 10:00 A |  | 100% |  |  |  |  | start no earlier than 2026-03-20 09:00 | Некрасов А | 1h | 1h |
| 1784 | 5.113.5 | изготовить трап входной | 4h | 2026-03-20 10:00 A | 2026-03-20 15:00 A | 1783 | 100% |  |  |  |  | start no earlier than 2026-03-12 08:00 | Некрасов А | 4h | 4h |
| 1785 | 5.113.6 | изготовить лавку по периметру курилки. На железо будет потом доска или пенка. Металл с остатков 3ц или с синего склада | 1d? | 2026-03-01 09:00 A | 2026-03-02 18:00 A |  | 100% |  |  |  |  | start no earlier than 2026-03-01 09:00 | Макаревич А | 8h | 8h |
| 1786 | 5.113.7 | приготовить ручки за которые будет толпа поднимать руками курилку | 2h | 2026-03-09 09:00 A | 2026-03-09 11:00 A |  | 100% |  |  |  |  | start no earlier than 2026-03-09 09:00 | Некрасов А; Труфанов А | 4h | 4h |
| 1787 | 5.114 | ТО штабелеров - обрезать нитки. Дефектовка подшипников, указать в отчете состояние | 2h | 2026-03-01 09:00 A | 2026-03-02 11:00 A |  | 100% |  |  |  |  | start no earlier than 2026-03-01 09:00 | Макаревич А | 2h | 2h |
| 1788 | 5.115 | **штабелер - замена ролик мачты. Подшипник котка** | 0.01d | 2026-03-03 09:00 A | 2026-03-03 09:05 A |  | 100% |  |  |  |  |  |  | 0.17h | 0.17h |
| 1789 | 5.115.1 | контроль | 5min | 2026-03-03 09:00 A | 2026-03-03 09:05 A |  | 100% |  |  |  |  | start no earlier than 2026-03-03 09:00 | Зорькин В; Тракресурс | 0.17h | 0.17h |
| 1790 | 5.116 | **установить стеллажи для архив образцов** | 25.06d | 2026-03-03 09:00 | 2026-04-07 09:30 A |  | 100% |  | 2026-03-05 09:00 |  |  |  |  | 227.25h | 227.25h |
| 1791 | 5.116.1 | монтаж освещение | 4h | 2026-03-06 09:00 A | 2026-03-06 13:00 A |  | 100% |  |  |  |  | start no earlier than 2026-03-06 09:00 | Некрасов А; Труфанов А | 8h | 8h |

| ID | WBS | Task | Duration | Start | Finish | Predecessors | Complete | Actual start | Actual finish | Constraint | Resources | Work | Actual work |
| --- | --- | --- | --- | --- | --- | --- | --- | --- | --- | --- | --- | --- | --- |
| 1792 | 5.116.2 | **покрасить стеллажи** | 12.02d | 2026-03-06 14:00 A | 2026-03-24 14:10 A | 1791 | 100% |  |  |  |  | 92.17h | 92.17h |
| 1793 | 5.116.2.1 | Заказать краску не пахнущую для радиаторов | 10min | 2026-03-06 14:00 A | 2026-03-06 14:10 A |  | 100% |  |  | start no earlier than 2026-03-03 09:00 | Зорькин В | 0.17h | 0.17h |
| 1794 | 5.116.2.2 | Доставка | 10d | 2026-03-06 14:10 A | 2026-03-24 14:10 A | 1793 | 100% |  |  | start no earlier than 2026-03-03 09:00 | Карабанов | 80h | 80h |
| 1795 | 5.116.2.3 | покраска | 4h | 2026-03-06 14:00 A | 2026-03-06 18:00 A |  | 100% |  |  | start no earlier than 2026-03-06 09:00 | Некрасов А; Труфанов А | 8h | 8h |
| 1796 | 5.116.2.4 | покраска | 4h | 2026-03-06 14:00 A | 2026-03-06 18:00 A |  | 100% |  |  | start no earlier than 2026-03-06 09:00 | Бундин В | 4h | 4h |
| 1797 | 5.116.3 | занести стеллажи в кабинеты с работниками 5ц | 4h | 2026-03-09 09:00 A | 2026-03-09 13:00 A | 1799 | 100% |  |  | start no earlier than 2026-03-09 09:00 | Бобренок В | 4h | 4h |
| 1798 | 5.116.4 | сборка стеллажей | 4h | 2026-03-13 09:00 A | 2026-03-13 13:00 A |  | 100% |  |  | start no earlier than 2026-03-13 09:00 | Труфанов А; Некрасов А | 8h | 8h |
| 1799 | 5.116.5 | монтаж доп полок с уголка | 4h | 2026-03-08 09:00 A | 2026-03-09 13:00 A | 1800 | 100% |  |  | start no earlier than 2026-03-08 09:00 | Бобренок В | 4h | 4h |
| 1800 | 5.116.6 | напилить фанеру на стеллажи | 8h | 2026-03-15 09:00 A | 2026-03-16 18:00 A |  | 100% |  |  | start no earlier than 2026-03-15 09:00 | Бундин В | 8h | 8h |
| 1801 | 5.116.7 | напилить фанеру на стеллажи | 4h | 2026-03-16 09:00 A | 2026-03-16 13:00 A |  | 100% |  |  | start no earlier than 2026-03-16 09:00 | Макаревич А; Тимофеев В | 8h | 8h |
| 1802 | 5.116.8 | **монтаж двери** | 8.06d? | 2026-03-03 09:00 | 2026-03-11 09:30 |  | 100% | 2026-03-05 09:00 | 2026-04-07 09:30 |  |  | 95.08h | 95.08h |
| 1803 | 5.116.8.1 | заявка фурнитуры | 30min | 2026-03-05 09:00 A | 2026-03-05 09:30 A |  | 100% |  |  | start no earlier than 2026-03-05 09:00 | Зорькин В | 0.5h | 0.5h |
| 1804 | 5.116.8.2 | получить коробку на дверь / контроолль поставки | 5min | 2026-03-18 09:00 A | 2026-03-18 09:05 A |  | 100% |  |  | start no earlier than 2026-03-18 09:00 | Зорькин В | 0.08h | 0.08h |
| 1805 | 5.116.8.3 | монтаж 2 двери | 4h | 2026-03-20 09:00 A | 2026-03-20 13:00 A |  | 100% |  |  | start no earlier than 2026-03-20 09:00 | Тимофеев В; Бундин В | 8h | 8h |
| 1806 | 5.116.8.4 | монтаж замка и ручек | 2h | 2026-03-24 09:00 A | 2026-03-24 11:00 A |  | 100% |  |  | start no earlier than 2026-03-24 09:00 | Тимофеев В | 2h | 2h |
| 1807 | 5.116.8.5 | **монтаж наличноков** | 10.06d | 2026-03-24 09:00 A | 2026-04-07 09:30 A |  | 100% |  |  |  |  | 84.5h | 84.5h |
| 1808 | 5.116.8.5.1 | заявка на наличинки | 30min | 2026-03-24 09:00 A | 2026-03-24 09:30 A |  | 100% |  |  | start no earlier than 2026-03-24 09:00 | Зорькин В | 0.5h | 0.5h |
| 1809 | 5.116.8.5.2 | доставка | 10d | 2026-03-24 09:30 A | 2026-04-07 09:30 A | 1808 | 100% |  |  | start no earlier than 2026-03-20 08:00 | Карабанов | 80h | 80h |
| 1810 | 5.116.8.5.3 | монтаж | 4h | 2026-04-04 09:30 A | 2026-04-06 13:00 A | 1809 | 100% |  |  | start no earlier than 2026-03-20 08:00 | Тимофеев В | 4h | 4h |
| 1811 | 5.117 | **монтаж розеток для весов** | 83d | 2026-03-02 09:00 A | 2026-06-24 18:00 A |  | 100% |  |  |  |  | 98.5h | 98.5h |
| 1812 | 5.117.1 | составить план монтажа, расчет материалов | 30min | 2026-03-02 09:00 A | 2026-03-02 09:30 A |  | 100% |  |  | start no earlier than 2026-03-02 09:00 | Некрасов А; Зорькин В; Труфанов А | 1.5h | 1.5h |
| 1813 | 5.117.2 | заявка трос/ талреп | 30min | 2026-03-02 09:30 A | 2026-03-02 10:00 A | 1812 | 100% |  |  | start no earlier than 2026-02-27 08:00 | Зорькин В | 0.5h | 0.5h |
| 1814 | 5.117.3 | доставка | 10d | 2026-03-02 10:00 A | 2026-03-16 10:00 A | 1813 | 100% |  |  | start no earlier than 2026-02-27 08:00 | Карабанов | 80h | 80h |
| 1815 | 5.117.4 | комплектация | 30min | 2026-06-01 09:00 A | 2026-06-01 09:30 A |  | 100% |  |  | start no earlier than 2026-06-01 09:00 | Зорькин В | 0.5h | 0.5h |
| 1816 | 5.117.5 | монтаж | 8h | 2026-06-24 09:00 A | 2026-06-24 18:00 A | 1814 | 100% |  |  | start no earlier than 2026-06-24 09:00 | Тимофеев В; Макаревич А | 16h | 16h |

| ID | WBS | Task | Duration | Start | Finish | Predecessors | Complete | Remaining | Actual start | Total slack | Free slack | Constraint | Resources | Work | Actual work |
| --- | --- | --- | --- | --- | --- | --- | --- | --- | --- | --- | --- | --- | --- | --- | --- |
| 1817 | 5.118 | **установить кнопочный пост вентилятора в окно в доступную зону** | 5.06d | 2026-03-03 09:00 A | 2026-03-10 09:30 |  | 1% | 5.01d |  | 261.53d |  |  |  | 44.5h | 0.5h |
| 1818 | 5.118.1 | заявка частотник 0,5-0,75квт | 30min | 2026-03-03 09:00 A | 2026-03-03 09:30 A |  | 100% |  |  |  |  | start no earlier than 2026-03-03 09:00 | Зорькин В | 0.5h | 0.5h |
| 1819 | 5.118.2 | доставка | 5d | 2026-03-03 09:30 | 2026-03-10 09:30 | 1818 |  |  |  | 261.53d |  | start no earlier than 2026-02-27 08:00 | Карабанов | 40h |  |
| 1820 | 5.118.3 | монтаж | 4h | 2026-03-03 09:00 | 2026-03-03 13:00 |  |  |  |  | 266.09d |  | start no earlier than 2026-03-03 09:00 | Дедов В | 4h |  |
| 1821 | 5.119 | замена местами бойлер с раздевали и кухня | 2h | 2026-02-27 09:00 A | 2026-02-27 11:00 A |  | 100% |  |  |  |  | start no earlier than 2026-02-27 08:00 | Бундин В; Труфанов А | 4h | 4h |
| 1822 | 5.120 | **установить калорифер на 4 котел** | 11.12d? | 2026-10-12 09:00 | 2026-10-27 10:00 |  |  |  |  | 96.47d |  |  |  | 97h |  |
| 1823 | 5.120.1 | заявка | 1h | 2026-10-12 09:00 | 2026-10-12 10:00 |  |  |  |  | 96.47d | 0d | start no earlier than 2026-10-12 09:00 | Зорькин В | 1h |  |
| 1824 | 5.120.2 | доставка | 10d | 2026-10-12 10:00 | 2026-10-26 10:00 | 1823 |  |  |  | 96.47d | 0d | start no earlier than 2026-02-27 08:00 | Карабанов | 80h |  |
| 1825 | 5.120.3 | монтаж | 1d? | 2026-10-26 10:00 | 2026-10-27 10:00 | 1824 |  |  |  | 96.47d |  | start no earlier than 2026-02-27 08:00 | Некрасов А; Труфанов А | 16h |  |
| 1826 | 5.121 | **изготовить бункер нерж** | 74d | 2026-06-06 09:00 | 2026-09-16 18:00 |  | 84% | 12.14d | 2026-03-16 09:00 |  |  |  |  | 97.5h | 81.5h |
| 1827 | 5.121.1 | составить чертеж | 1h | 2026-03-16 09:00 A | 2026-03-16 10:00 A |  | 100% |  |  |  |  | start no earlier than 2026-03-16 09:00 | Зорькин В | 1h | 1h |
| 1828 | 5.121.2 | заявка на нерж | 30min | 2026-03-16 10:00 A | 2026-03-16 10:30 A | 1827 | 100% |  |  |  |  | start no earlier than 2026-02-27 08:00 | Зорькин В | 0.5h | 0.5h |
| 1829 | 5.121.3 | доставка | 10d | 2026-04-23 09:00 A | 2026-05-06 18:00 A | 1828 | 100% |  |  |  |  | start no earlier than 2026-04-23 09:00 | Карабанов | 80h | 80h |
| 1830 | 5.121.4 | сборка | 2d | 2026-06-08 09:00 | 2026-06-09 18:00 | 1829 |  |  |  | 195.59d |  | start no earlier than 2026-06-06 09:00 | Некрасов А | 16h |  |
| 1831 | 5.122 | аудит по взрывоопасности 5ц | 1d? | 2025-09-03 09:00 | 2025-09-03 18:00 |  |  |  |  | 394.59d |  | start no earlier than 2025-09-03 09:00 |  |  |  |
| 1832 | 5.123 | **расширить прорем для проезда погрузчика** | 3d? | 2024-05-27 09:00 | 2024-05-29 18:00 |  |  |  |  | 724.59d |  |  |  | 24h |  |
| 1833 | 5.123.1 | перенос канализ трубы | 1d? | 2024-05-27 09:00 | 2024-05-27 18:00 |  |  |  |  | 724.59d | 0d | start no earlier than 2024-05-27 09:00 | Некрасов А | 8h |  |
| 1834 | 5.123.2 | монтаж закладных в прорем +400мм | 1d? | 2024-05-28 09:00 | 2024-05-28 18:00 | 1833 |  |  |  | 724.59d | 0d | start no earlier than 2024-05-17 09:00 | Некрасов А | 8h |  |
| 1835 | 5.123.3 | демонтаж /расширение | 1d? | 2024-05-29 09:00 | 2024-05-29 18:00 | 1834 |  |  |  | 724.59d |  | start no earlier than 2024-05-17 09:00 | Некрасов А | 8h |  |
| 1836 | 5.124 | подключить концевые выключатели шибера растаривателя | 2h | 2023-06-21 09:00 | 2023-06-21 11:00 |  |  |  |  | 970.34d |  | start no earlier than 2023-06-21 09:00 | Дедов В | 2h |  |
| 1837 | 5.125 | **установить сирену при включении тельфера** | 119d? | 2023-05-29 09:00 A | 2023-11-09 18:00 |  |  | 118.79d? |  | 868.59d |  |  |  | 48.08h | 0.08h |
| 1838 | 5.125.1 | заявка на сирену и кабель | 5min | 2023-05-29 09:00 A | 2023-05-29 09:05 A |  | 100% |  |  |  |  | start no earlier than 2023-05-29 09:00 | Лобанов И | 0.08h | 0.08h |
| 1839 | 5.125.2 | доставка | 5d | 2023-05-29 09:05 | 2023-06-05 09:05 | 1838 |  |  |  | 981.58d | 112.99d | start no earlier than 2023-05-22 09:00 | Малинина М | 40h |  |
| 1840 | 5.125.3 | монтаж | 1d? | 2023-11-09 09:00 | 2023-11-09 18:00 | 1839 |  |  |  | 868.59d |  | start no earlier than 2023-11-09 09:00 | Дедов В | 8h |  |
| 1841 | 5.126 | держак мешка для сбора отработанного корма лопатой, что бы второй не держал мешок | 1d? | 2026-05-04 09:00 | 2026-05-04 18:00 |  |  |  |  | 221.59d |  | start no earlier than 2026-05-04 09:00 | Тимофеев В | 8h |  |

| ID | WBS | Task | Duration | Start | Finish | Predecessors | Complete | Remaining | Total slack | Constraint | Resources | Work | Actual work |
| --- | --- | --- | --- | --- | --- | --- | --- | --- | --- | --- | --- | --- | --- |
| 1842 | 5.127 | **Замена насосной станции** | 9.25d | 2026-09-01 09:00 A | 2026-09-14 11:00 |  | 46% | 4.98d | 127.34d |  |  | 4.33h | 2h |
| 1843 | 5.127.1 | Замена насоса | 2h | 2026-09-01 09:00 A | 2026-09-01 11:00 A |  | 100% |  |  | start no earlier than 2026-09-01 09:00 | Бундин В | 2h | 2h |
| 1844 | 5.127.2 | Заявка на станцию | 15min | 2026-09-02 09:00 | 2026-09-02 09:15 |  |  |  | 135.56d | start no earlier than 2026-09-02 08:00 | Зорькин В | 0.25h |  |
| 1845 | 5.127.3 | контроль доставки | 5min | 2026-09-11 09:00 | 2026-09-11 09:05 |  |  |  | 128.58d | start no earlier than 2026-09-11 09:00 | Зорькин В | 0.08h |  |
| 1846 | 5.127.4 | установка новой насосной станции | 2h | 2026-09-14 09:00 | 2026-09-14 11:00 |  |  |  | 127.34d | start no earlier than 2026-09-14 09:00 | Некрасов А | 2h |  |
| 1847 | 5.128 | Попытаться заварить деки и хомуты той проволокой по нерже, что есть у нас | 3h | 2026-07-28 08:00 A | 2026-07-28 12:00 A |  | 100% |  |  | start no earlier than 2026-07-28 08:00 | Макаревич А | 3h | 3h |
| 1848 | 5.129 | **5 цех** | 0.25d | 2026-04-07 09:00 A | 2026-04-07 11:00 A |  | 100% |  |  |  |  | 3.5h | 3.5h |
| 1849 | 5.129.1 | Установка сеток на сито | 1h | 2026-04-07 09:00 A | 2026-04-07 10:00 A |  | 100% |  |  | start no earlier than 2026-04-07 08:00 | Бундин В | 1h | 1h |
| 1850 | 5.129.2 | **2 цех** | 0.25d | 2026-04-07 09:00 A | 2026-04-07 11:00 A |  | 100% |  |  |  |  | 2.5h | 2.5h |
| 1851 | 5.129.2.1 | Взять шланг с мойки зона экструдера, установить на складе навесок цех 2, для набора воды в кубы | 30min | 2026-04-07 09:00 A | 2026-04-07 09:30 A |  | 100% |  |  | start no earlier than 2026-04-07 08:00 | Бундин В | 0.5h | 0.5h |
| 1852 | 5.129.2.2 | Посмотреть подачу воды на поломоечной машинке | 2h | 2026-04-07 09:00 A | 2026-04-07 11:00 A |  | 100% |  |  | start no earlier than 2026-04-07 08:00 | Бундин В | 2h | 2h |
| 1853 | 6 | **модернизация** | 975.5d? | 2023-06-07 09:00 A | 2027-03-03 13:00 |  | 48% | 506.25d? | 5.09d |  |  | 3394.67h | 2640.67h |
| 1854 | 6.1 | доработка нерж труб для парогенератора (антиэлектрод) | 1h | 2026-07-06 09:00 | 2026-07-06 10:00 |  |  |  | 177.47d | start no earlier than 2026-07-06 09:00 | Тимофеев В | 1h |  |
| 1855 | 6.2 | **Дражжировка 2 линия 1 цех** | 0.25d | 2026-07-29 08:00 A | 2026-07-29 11:00 A |  | 100% |  |  |  |  | 2h | 2h |
| 1856 | 6.2.1 | установка трубки с отверстиями, эксперимент | 2h | 2026-07-29 08:00 A | 2026-07-29 11:00 A |  | 100% |  |  | start no earlier than 2026-07-29 08:00 | Тимофеев В | 2h | 2h |
| 1857 | 6.3 | **поточные весы на входе в барабан жира** | 0.12d | 2026-06-15 09:00 A | 2026-06-15 10:00 A |  | 100% |  |  |  |  | 1h | 1h |
| 1858 | 6.3.1 | запрос КП у НОТИС - весы с дозатором / бункеры | 1h | 2026-06-15 09:00 A | 2026-06-15 10:00 A |  | 100% |  |  | start no earlier than 2026-06-15 09:00 | Зорькин В | 1h | 1h |
| 1859 | 6.4 | **устройство загрузки в смесители** | 0.12d | 2026-03-31 09:00 | 2026-03-31 10:00 |  |  |  | 246.47d |  |  | 1h |  |
| 1860 | 6.4.1 | подбор оборудования, запрос КП | 1h | 2026-03-31 09:00 | 2026-03-31 10:00 |  |  |  | 246.47d | start no earlier than 2026-03-31 08:00 | Зорькин В | 1h |  |
| 1861 | 6.5 | **определить параметры сушки гранулы лаб испытанием** | 6d | 2024-09-09 09:00 A | 2024-09-16 18:00 A |  | 100% |  |  |  |  | 16h | 16h |
| 1862 | 6.5.1 | изучить метод материал, физ законы процесса сушки. | 4h | 2024-09-09 09:00 A | 2024-09-09 13:00 A |  | 100% |  |  | start no earlier than 2024-09-09 09:00 | Зорькин В | 4h | 4h |
| 1863 | 6.5.2 | Определить набор средств измерения и оборыдования для лаб работы. | 4h | 2024-09-09 14:00 A | 2024-09-09 18:00 A | 1862 | 100% |  |  | start no earlier than 2024-09-09 09:00 | Зорькин В | 4h | 4h |
| 1864 | 6.5.3 | разрабоать пошаговый план лаб работы сушки 1кг продукта в термошкафу | 4h | 2024-09-16 09:00 A | 2024-09-16 13:00 A | 1863 | 100% |  |  | start no earlier than 2024-09-16 09:00 | Зорькин В | 4h | 4h |
| 1865 | 6.5.4 | определить зависимость времени сушки от температуры и влажности среды. | 4h | 2024-09-16 14:00 A | 2024-09-16 18:00 A | 1864 | 100% |  |  | start no earlier than 2024-09-06 08:00 | Зорькин В | 4h | 4h |

| ID | WBS | Task | Type | Duration | Start | Finish | Predecessors | Complete | Remaining | Total slack | Constraint | Resources | Work | Actual work |
| --- | --- | --- | --- | --- | --- | --- | --- | --- | --- | --- | --- | --- | --- | --- |
| 1866 | 6.6 | **станция фильтрации гидролизат с еврокуба в промежут емкость. Фильтр + насос** |  | 27.25d | 2026-03-13 09:00 A | 2026-04-21 11:00 A |  | 100% |  |  |  |  | 8h | 8h |
| 1867 | 6.6.1 | составить схему размещения насос / фильтр |  | 1h | 2026-03-13 09:00 A | 2026-03-13 10:00 A |  | 100% |  |  | start no earlier than 2026-03-13 09:00 | Зорькин В | 1h | 1h |
| 1868 | 6.6.2 | заявка фильтр 5" коллона + фитинги РР |  | 1h | 2026-03-13 10:00 A | 2026-03-13 11:00 A | 1867 | 100% |  |  | start no earlier than 2026-03-12 08:00 | Зорькин В | 1h | 1h |
| 1869 | 6.6.3 | доставка |  | 10d | 2026-03-13 11:00 A | 2026-03-27 11:00 A | 1868 | 100% |  |  | start no earlier than 2026-03-12 08:00 |  |  |  |
| 1870 | 6.6.4 | сборка насосная станция с фильром в 1ц |  | 4h | 2026-04-20 09:00 A | 2026-04-20 13:00 A | 1869 | 100% |  |  | start no earlier than 2026-04-20 09:00 | Тимофеев В | 4h | 4h |
| 1871 | 6.6.5 | оформление протокол испытаний |  | 2h | 2026-04-21 09:00 A | 2026-04-21 11:00 A |  | 100% |  |  | start no earlier than 2026-04-21 09:00 | Зорькин В | 2h | 2h |
| 1872 | 6.7 | **тест форсунки на гидролизат фильтрованный гидролизат** |  | 95.25d | 2026-04-21 11:00 A | 2026-09-01 13:00 | 1866 | 72% | 26.28d | 136.09d |  |  | 19h | 15h |
| 1873 | 6.7.1 | подготовить переходник |  | 2h | 2026-04-21 11:00 A | 2026-04-21 13:00 A |  | 100% |  |  | start no earlier than 2026-03-12 08:00 | Тимофеев В | 2h | 2h |
| 1874 | 6.7.2 | тестирование разных форсунок |  | 2h | 2026-04-21 13:00 A | 2026-04-21 16:00 A | 1873 | 100% |  |  | start no earlier than 2026-03-12 08:00 | Тимофеев В; Зорькин В | 4h | 4h |
| 1875 | 6.7.3 | контроль наличия фитингов для подключения насосной фильтровальной станции к еврокубу |  | 30min | 2026-04-24 08:00 A | 2026-04-24 09:30 A |  | 100% |  |  | start no earlier than 2026-04-24 08:00 | Зорькин В; Тимофеев В | 1h | 1h |
| 1876 | 6.7.4 | тест - наполнить канистру с куба гидролизатом через станцию+фильтр |  | 2h | 2026-04-27 09:00 A | 2026-04-27 11:00 A |  | 100% |  |  | start no earlier than 2026-04-27 09:00 | Зорькин В; Тимофеев В | 3h | 3h |
| 1877 | 6.7.5 | фильтрованный гдз распылить форсунками штатным насосом - забивакет |  | 4h | 2026-05-13 09:00 A | 2026-05-13 13:00 A | 1876 | 100% |  |  | start no earlier than 2026-05-13 09:00 | Зорькин В; Тимофеев В | 5h | 5h |
| 1878 | 6.7.6 | проект распыление моторчиком |  | 4h | 2026-09-01 09:00 | 2026-09-01 13:00 |  |  |  | 136.09d | start no earlier than 2026-09-01 09:00 | Домоводов К | 4h |  |
| 1879 | 6.8 | **станция фильтраци куринный жир с еврокуба в промежут емкость. Насос + фильтр** |  | 36.75d? | 2026-03-05 09:00 A | 2026-04-24 16:00 A |  | 100% |  |  |  |  | 46h | 46h |
| 1880 | 6.8.1 | подбор производительный насос и фильтр для жира. Закачка с еврокуба, перекачка через фильтр |  | 1d? | 2026-03-05 09:00 A | 2026-03-05 18:00 A |  | 100% |  |  | start no earlier than 2026-03-05 09:00 | Домоводов К; Зорькин В | 16h | 16h |
| 1881 | 6.8.2 | заявка материалы |  | 1d? | 2026-03-06 09:00 A | 2026-03-06 18:00 A | 1880 | 100% |  |  | start no earlier than 2026-02-27 08:00 | Зорькин В | 8h | 8h |
| 1882 | 6.8.3 | тест насосной станцией с фильтром |  | 1d? | 2026-04-20 09:00 A | 2026-04-20 18:00 A |  | 100% |  |  | start no earlier than 2026-04-20 09:00 | Зорькин В; Тимофеев В | 16h | 16h |
| 1883 | 6.8.4 | сборка второй станции для жира на БГ11А |  | 6h | 2026-04-24 08:00 A | 2026-04-24 16:00 A |  | 100% |  |  | start no earlier than 2026-04-24 08:00 | Тимофеев В | 6h | 6h |
| 1884 | 6.9 | **мешалка гидролизата** |  | 131.12d | 2026-03-03 09:00 A | 2026-09-02 10:00 A |  | 100% |  |  |  |  | 37.08h | 37.08h |
| 1885 | 6.9.1 | определить диаметр вала / где инструкция? Выяснить |  | 20min | 2026-08-28 09:00 A | 2026-08-28 09:20 A |  | 100% |  |  | start no earlier than 2026-08-28 09:00 | Зорькин В | 0.33h | 0.33h |
| 1886 | 6.9.2 | согласовать договор /оплата счет |  | 1h | 2026-03-03 09:00 A | 2026-03-03 10:00 A |  | 100% |  |  | start no earlier than 2026-03-03 09:00 | Домоводов К | 1h | 1h |
| 1887 | 6.9.3 | доставка | milestone | 0d | 2026-08-10 08:00 A | 2026-08-10 08:00 A |  | 100% |  |  | start no earlier than 2026-08-10 08:00 |  |  |  |
| 1888 | 6.9.4 | планирование технологии работы / какие нужны доработки |  | 15min | 2026-08-12 09:00 A | 2026-08-12 09:15 A |  | 100% |  |  | start no earlier than 2026-08-12 09:00 | Домоводов К | 0.25h | 0.25h |
| 1889 | 6.9.5 | сборка и тест с операторами в 1ц. Можно приварить кронштейны под штабелер |  | 4h | 2026-08-12 09:00 A | 2026-08-12 13:00 A |  | 100% |  |  | start no earlier than 2026-08-12 09:00 | Макаревич А | 4h | 4h |
| 1890 | 6.9.6 | составить чертеж кронштейна |  | 1h | 2026-08-17 09:00 A | 2026-08-17 10:00 A |  | 100% |  |  | start no earlier than 2026-08-17 09:00 | Шуранов Ю | 1h | 1h |
| 1891 | 6.9.7 | заявка на лебедка |  | 15min | 2026-08-17 10:00 A | 2026-08-17 10:15 A | 1890 | 100% |  |  | start no earlier than 2026-08-14 09:00 | Шуранов Ю | 0.25h | 0.25h |
| 1892 | 6.9.8 | конроль доставки |  | 15min | 2026-08-22 10:15 A | 2026-08-24 09:15 A | 1891FS+5d | 100% |  |  | start no earlier than 2026-08-14 09:00 | Шуранов Ю | 0.25h | 0.25h |
| 1893 | 6.9.9 | монтаж лебедка |  | 6h | 2026-08-31 09:00 A | 2026-08-31 16:00 A | 1892FS+1d | 100% |  |  | start no earlier than 2026-08-31 09:00 | Некрасов А; Труфанов А | 12h | 12h |
| 1894 | 6.9.10 | монтаж кронштейн под лебедку |  | 6h | 2026-08-31 16:00 A | 2026-09-01 13:00 A | 1893 | 100% |  |  | start no earlier than 2026-08-31 09:00 | Некрасов А; Труфанов А | 12h | 12h |
| 1895 | 6.9.11 | Установить 3-х фазную вилку для мешалки рядом с частотником |  | 2h | 2026-08-31 08:00 A | 2026-08-31 11:00 A |  | 100% |  |  | start no earlier than 2026-08-31 08:00 | Дедов В | 2h | 2h |
| 1896 | 6.9.12 | Установить розетку для электротали, проложить кабель к розетке возле мухобойки |  | 3h | 2026-08-31 08:00 A | 2026-08-31 12:00 A |  | 100% |  |  | start no earlier than 2026-08-31 08:00 | Дедов В | 3h | 3h |
| 1897 | 6.9.13 | Подключить таль к розетке, проложить гофру |  | 1h | 2026-09-02 09:00 A | 2026-09-02 10:00 A |  | 100% |  |  | start no earlier than 2026-09-02 09:00 | Бундин В | 1h | 1h |

| ID | WBS | Task | Duration | Start | Finish | Predecessors | Complete | Remaining | Actual finish | Total slack | Constraint | Resources | Work | Actual work |
| --- | --- | --- | --- | --- | --- | --- | --- | --- | --- | --- | --- | --- | --- | --- |
| 1898 | 6.10 | **качественное нанесение жира тесты** | 262.5d | 2026-03-02 09:00 A | 2027-03-03 13:00 A |  | 100% |  |  |  |  |  | 2102h | 2102h |
| 1899 | 6.10.1 | **испытания форсунка 2х фазная 1ц** | 2.25d | 2026-03-02 09:00 A | 2026-03-04 11:00 A |  | 100% |  |  |  |  |  | 5.5h | 5.5h |
| 1900 | 6.10.1.1 | подготовить кронштейн крепления форсунки к конвейеру | 2h | 2026-03-02 09:00 A | 2026-03-02 11:00 A |  | 100% |  |  |  | start no earlier than 2026-03-02 09:00 | Тимофеев В | 2h | 2h |
| 1901 | 6.10.1.2 | подготовить пневморедуктор, временно с НОТИС 3ц | 1h | 2026-03-02 11:00 A | 2026-03-02 12:00 A | 1900 | 100% |  |  |  | start no earlier than 2026-02-27 08:00 | Тимофеев В | 1h | 1h |
| 1902 | 6.10.1.3 | подготовить фильтр 1шт | 30min | 2026-03-02 12:00 A | 2026-03-02 12:30 A | 1901 | 100% |  |  |  | start no earlier than 2026-02-27 08:00 | Тимофеев В | 0.5h | 0.5h |
| 1903 | 6.10.1.4 | Тест форсунки на жирах, скооперироваться с технологами | 2h | 2026-03-04 09:00 A | 2026-03-04 11:00 A |  | 100% |  |  |  | start no earlier than 2026-03-04 09:00 | Тимофеев В | 2h | 2h |
| 1904 | 6.10.2 | **монтаж форсунки в линию** | 61.5d? | 2026-03-11 09:00 A | 2026-06-04 13:00 |  | 100% |  | 2027-03-03 13:00 |  |  | Тимофеев В | 2096.5h | 2096.5h |
| 1905 | 6.10.2.1 | **тест однофазная форсунка** | 30.25d? | 2026-03-11 09:00 A | 2026-04-22 11:00 A |  | 100% |  |  |  |  |  | 52.5h | 52.5h |
| 1906 | 6.10.2.1.1 | заявка пневморедуктор, фитинги насос - кран - 3х ходовой | 30min | 2026-03-11 09:00 A | 2026-03-11 09:30 A |  | 100% |  |  |  | start no earlier than 2026-03-11 09:00 | Зорькин В | 0.5h | 0.5h |
| 1907 | 6.10.2.1.2 | проект рама для монтаж фильтров, редуктор, кронштейн форсунки | 1d? | 2026-03-11 09:30 A | 2026-03-12 09:30 A | 1906 | 100% |  |  |  | start no earlier than 2026-02-27 08:00 | Домоводов К | 8h | 8h |
| 1908 | 6.10.2.1.3 | доставка | 5d | 2026-03-30 09:00 A | 2026-04-03 18:00 A |  | 100% |  |  |  | start no earlier than 2026-03-30 09:00 | Карабанов | 40h | 40h |
| 1909 | 6.10.2.1.4 | сборка рама, покраска | 2h | 2026-04-22 09:00 A | 2026-04-22 11:00 A | 1907 | 100% |  |  |  | start no earlier than 2026-04-22 09:00 | Тимофеев В | 2h | 2h |
| 1910 | 6.10.2.1.5 | монтаж 0,3 форсунки | 2h | 2026-04-22 09:00 A | 2026-04-22 11:00 A | 1908 | 100% |  |  |  | start no earlier than 2026-04-22 09:00 | Тимофеев В | 2h | 2h |
| 1911 | 6.11 | **тест однофазная форсунка** | 0.02d | 2026-03-16 09:00 A | 2026-03-16 09:10 A |  | 100% |  |  |  |  |  | 0.17h | 0.17h |
| 1912 | 6.11.1 | получить счет | 10min | 2026-03-16 09:00 A | 2026-03-16 09:10 A |  | 100% |  |  |  | start no earlier than 2026-03-16 09:00 | Домоводов К | 0.17h | 0.17h |
| 1913 | 6.12 | **установить фильтры жир на 1 и 2 линию** | 71.25d | 2026-03-17 09:00 A | 2026-06-24 11:00 |  | 83% | 11.88d |  | 185.34d |  |  | 14h | 12h |
| 1914 | 6.12.1 | сборка система фильтров 2 фильтра на 2 линии подготовиь + рама | 4h | 2026-03-17 09:00 A | 2026-03-17 13:00 A |  | 100% |  |  |  | start no earlier than 2026-03-17 09:00 | Тимофеев В | 4h | 4h |
| 1915 | 6.12.2 | монтаж стационарно рама под фильтры | 4h | 2026-04-22 09:00 A | 2026-04-22 13:00 A | 1914 | 100% |  |  |  | start no earlier than 2026-04-22 09:00 | Тимофеев В | 4h | 4h |
| 1916 | 6.12.3 | калибровка PID регулятора подачи жира | 2h | 2026-05-13 09:00 A | 2026-05-13 11:00 A |  | 100% |  |  |  | start no earlier than 2026-05-13 09:00 | Зорькин В; Домоводов К | 4h | 4h |
| 1917 | 6.12.4 | подготовка для установить на 1 линию | 2h | 2026-06-24 09:00 | 2026-06-24 11:00 |  |  |  |  | 185.34d | start no earlier than 2026-06-24 09:00 | Тимофеев В | 2h |  |
| 1918 | 6.13 | **ТЕКО 0,4 или 1,5 поставить пленку с БЕСТРОМА 620мм** | 6.09d | 2026-03-13 09:00 A | 2026-03-23 09:45 A |  | 100% |  |  |  |  |  | 0.75h | 0.75h |
| 1919 | 6.13.1 | запрос возможности в ТЕКО | 30min | 2026-03-13 09:00 A | 2026-03-13 09:30 A |  | 100% |  |  |  | start no earlier than 2026-03-13 09:00 | Зорькин В | 0.5h | 0.5h |
| 1920 | 6.13.2 | контроль ответ | 15min | 2026-03-23 09:30 A | 2026-03-23 09:45 A | 1919FS+10d | 100% |  |  |  | start no earlier than 2026-03-12 08:00 | Зорькин В | 0.25h | 0.25h |
| 1921 | 6.14 | **фильера с вставками для 2ц** | 0.02d | 2025-02-21 09:00 A | 2025-02-21 09:10 A |  | 100% |  |  |  |  |  | 0.17h | 0.17h |
| 1922 | 6.14.1 | контроль изготовления | 10min | 2025-02-21 09:00 A | 2025-02-21 09:10 A |  | 100% |  |  |  | start no earlier than 2025-02-21 09:00 | Шуранов Ю | 0.17h | 0.17h |

| ID | WBS | Task | Duration | Start | Finish | Predecessors | Complete | Total slack | Free slack | Constraint | Resources | Work | Actual work |
| --- | --- | --- | --- | --- | --- | --- | --- | --- | --- | --- | --- | --- | --- |
| 1923 | 6.15 | **ручка для экструдера крутиьт мотор на 1 и 2 линию** | 138d? | 2024-08-09 09:00 | 2025-02-18 18:00 |  |  | 535.59d |  |  |  | 9h |  |
| 1924 | 6.15.1 | изготовление | 1d? | 2025-02-18 09:00 | 2025-02-18 18:00 |  |  | 535.59d |  | start no earlier than 2025-02-18 09:00 | Черепанов И | 8h |  |
| 1925 | 6.15.2 | составить чертежи / разместить изготовление | 1h | 2024-08-09 09:00 | 2024-08-09 10:00 |  |  | 673.47d |  | start no earlier than 2024-08-09 09:00 | Шуранов Ю | 1h |  |
| 1926 | 6.16 | **охлаждение шкафов управления печью 1 2 3 линия** | 5d? | 2024-04-18 09:00 | 2024-04-24 18:00 |  |  | 749.59d |  |  |  | 40h |  |
| 1927 | 6.16.1 | выбор и заявка кондиционеры для щитов управления | 1d? | 2024-04-18 09:00 | 2024-04-18 18:00 |  |  | 749.59d | 0d | start no earlier than 2024-04-18 09:00 | Домоводов К | 8h |  |
| 1928 | 6.16.2 | оплата / доставка | 1d? | 2024-04-19 09:00 | 2024-04-19 18:00 | 1927 |  | 749.59d | 0d | start no earlier than 2024-04-04 09:00 | Мультан | 8h |  |
| 1929 | 6.16.3 | монтаж | 3d | 2024-04-22 09:00 | 2024-04-24 18:00 | 1928 |  | 749.59d |  | start no earlier than 2024-04-11 09:00 | Некрасов А | 24h |  |
| 1930 | 6.17 | **подача гидролизат в смеситель насосом** | 25d? | 2024-03-25 09:00 | 2024-04-26 18:00 |  |  | 747.59d |  |  |  | 200h |  |
| 1931 | 6.17.1 | выбор насоса / заявка на насос | 1d? | 2024-03-25 09:00 | 2024-03-25 18:00 |  |  | 747.59d | 0d | start no earlier than 2024-03-25 09:00 | Домоводов К | 8h |  |
| 1932 | 6.17.2 | проректирование автоматика, монтажная часть / заявка | 1d? | 2024-03-26 09:00 | 2024-03-26 18:00 | 1931 |  | 747.59d | 0d | start no earlier than 2024-03-22 09:00 | Домоводов К | 8h |  |
| 1933 | 6.17.3 | поставка оборудования | 20d | 2024-03-27 09:00 | 2024-04-23 18:00 | 1932 |  | 747.59d | 0d | start no earlier than 2024-03-22 09:00 | Мультан | 160h |  |
| 1934 | 6.17.4 | монтаж электрика | 1d? | 2024-04-24 09:00 | 2024-04-24 18:00 | 1933 |  | 747.59d | 0d | start no earlier than 2024-03-22 09:00 | Некрасов А | 8h |  |
| 1935 | 6.17.5 | монтаж трубопровод | 1d? | 2024-04-25 09:00 | 2024-04-25 18:00 | 1934 |  | 747.59d | 0d | start no earlier than 2024-03-22 09:00 | Некрасов А | 8h |  |
| 1936 | 6.17.6 | монтаж автоматика | 1d? | 2024-04-26 09:00 | 2024-04-26 18:00 | 1935 |  | 747.59d |  | start no earlier than 2024-03-22 09:00 | Некрасов А | 8h |  |
| 1937 | 6.18 | **установить форсунки на подачу жир и гидролизат** | 106.38d | 2024-03-26 09:00 A | 2024-08-21 12:00 A |  | 100% |  |  |  |  | 187h | 187h |
| 1938 | 6.18.1 | выбор тип форсунок, заявка | 1d | 2024-03-26 09:00 A | 2024-03-26 18:00 A |  | 100% |  |  | start no earlier than 2024-03-26 09:00 | Домоводов К | 8h | 8h |
| 1939 | 6.18.2 | проректирование / заявка на пневматику и электрику для управления форсунками | 1d | 2024-03-27 09:00 A | 2024-03-27 18:00 A | 1938 | 100% |  |  | start no earlier than 2024-03-22 09:00 | Домоводов К | 8h | 8h |
| 1940 | 6.18.3 | тех решение / чертеж крепления форсунок | 1d | 2024-03-28 09:00 A | 2024-03-28 18:00 A | 1939 | 100% |  |  | start no earlier than 2024-03-22 09:00 | Домоводов К | 8h | 8h |
| 1941 | 6.18.4 | доставка | 20d | 2024-03-29 09:00 A | 2024-04-25 18:00 A | 1938, 1940 | 100% |  |  | start no earlier than 2024-03-22 09:00 | Мультан | 160h | 160h |
| 1942 | 6.18.5 | монтаж механника | 2h | 2024-08-21 09:00 A | 2024-08-21 11:00 A | 1941 | 100% |  |  | start no earlier than 2024-08-21 09:00 | Тимофеев В | 2h | 2h |
| 1943 | 6.18.6 | монтаж пневматика | 1h | 2024-08-21 11:00 A | 2024-08-21 12:00 A | 1942 | 100% |  |  | start no earlier than 2024-03-22 09:00 | Тимофеев В | 1h | 1h |
| 1944 | 6.19 | **модернизация откидной воронка загрузки в барабан дрожировки** | 10.62d | 2024-05-14 09:00 A | 2024-05-28 15:00 A |  | 100% |  |  |  |  | 89h | 89h |
| 1945 | 6.19.1 | составить эскиз / заказ шарниры (при остановке экструдера) | 1h | 2024-05-14 09:00 A | 2024-05-14 10:00 A |  | 100% |  |  | start no earlier than 2024-05-14 09:00 | Шуранов Ю | 1h | 1h |
| 1946 | 6.19.2 | доставка | 10d | 2024-05-14 10:00 A | 2024-05-28 10:00 A | 1945 | 100% |  |  | start no earlier than 2024-03-14 09:00 | Мультан | 80h | 80h |
| 1947 | 6.19.3 | монгтаж | 4h | 2024-05-28 10:00 A | 2024-05-28 15:00 A | 1946 | 100% |  |  | start no earlier than 2024-05-14 09:00 | Макаревич А; Некрасов А | 8h | 8h |
| 1948 | 6.20 | модернизация ножевого узла | 1d? | 2023-12-28 09:00 | 2023-12-28 18:00 |  |  | 833.59d |  | start no earlier than 2023-12-28 09:00 |  |  |  |

| ID | WBS | Task | Duration | Start | Finish | Predecessors | Complete | Remaining | Total slack | Free slack | Constraint | Resources | Work | Actual work |
| --- | --- | --- | --- | --- | --- | --- | --- | --- | --- | --- | --- | --- | --- | --- |
| 1949 | 6.21 | **модернизация дозации воды в прекондиционер** | 0.62d | 2023-12-25 09:00 A | 2023-12-25 15:00 A |  | 100% |  |  |  |  |  | 5h | 5h |
| 1950 | 6.21.1 | установить балансировочный кран 2 линия | 1h | 2023-12-25 09:00 A | 2023-12-25 10:00 A |  | 100% |  |  |  | start no earlier than 2023-12-25 09:00 | Дедов В | 1h | 1h |
| 1951 | 6.21.2 | установить расходомер 2 линия | 2h | 2023-12-25 10:00 A | 2023-12-25 12:00 A | 1950 | 100% |  |  |  | start no earlier than 2023-12-20 09:00 | Дедов В | 2h | 2h |
| 1952 | 6.21.3 | установить расходомер 2 линия | 2h | 2023-12-25 12:00 A | 2023-12-25 15:00 A | 1951 | 100% |  |  |  | start no earlier than 2023-12-20 09:00 | Дедов В | 2h | 2h |
| 1953 | 6.22 | **заменить шланг на высоктемпературный на жир** | 1.62d? | 2024-05-14 09:00 A | 2024-05-15 15:00 A |  | 100% |  |  |  |  |  | 13h | 13h |
| 1954 | 6.22.1 | заявка / подбор | 1h | 2024-05-14 09:00 A | 2024-05-14 10:00 A |  | 100% |  |  |  | start no earlier than 2024-05-14 09:00 | Шуранов Ю | 1h | 1h |
| 1955 | 6.22.2 | доставка | 1d? | 2024-05-14 10:00 A | 2024-05-15 10:00 A | 1954 | 100% |  |  |  | start no earlier than 2023-12-13 08:00 | Малинина М | 8h | 8h |
| 1956 | 6.22.3 | замена | 4h | 2024-05-15 10:00 A | 2024-05-15 15:00 A | 1955 | 100% |  |  |  | start no earlier than 2024-01-15 09:00 | Тимофеев В | 4h | 4h |
| 1957 | 6.23 | **тепловая защита электромоторов мехнизмов** | 108.75d | 2023-12-28 09:00 A | 2024-05-28 16:00 |  | 2% | 106.58d | 725.84d |  |  |  | 100h | 2h |
| 1958 | 6.23.1 | **составить список эл моторов (нужен ток ) без теплового реле - от вибросита - до упаковки вся технология** | 75.25d | 2024-01-30 09:00 A | 2024-05-14 11:00 |  | 17% | 62.71d | 736.34d |  |  |  | 12h | 2h |
| 1959 | 6.23.1.1 | 5 цех | 2h | 2024-01-30 09:00 A | 2024-01-30 11:00 A |  | 100% |  |  |  | start no earlier than 2024-01-30 09:00 | Дедов В | 2h | 2h |
| 1960 | 6.23.1.2 | 1 цех | 4h | 2024-01-30 09:00 | 2024-01-30 13:00 |  |  |  | 811.09d |  | start no earlier than 2024-01-30 09:00 | Дедов В | 4h |  |
| 1961 | 6.23.1.3 | 2 цех | 4h | 2024-01-30 09:00 | 2024-01-30 13:00 |  |  |  | 811.09d |  | start no earlier than 2024-01-30 09:00 | Дедов В | 4h |  |
| 1962 | 6.23.1.4 | заполнитьт таблицу для заявки место-двиг-ток | 2h | 2024-05-14 09:00 | 2024-05-14 11:00 |  |  |  | 736.34d |  | start no earlier than 2024-05-14 09:00 | Шуранов Ю | 2h |  |
| 1963 | 6.23.2 | переписать список мотор-редукторов | 2h | 2023-12-28 09:00 | 2023-12-28 11:00 |  |  |  | 822.59d | 96.75d | start no earlier than 2023-12-28 09:00 | Дедов В | 2h |  |
| 1964 | 6.23.3 | заявка тепл реле | 2h | 2024-05-14 09:00 | 2024-05-14 11:00 | 1963FS+1d |  |  | 725.84d | 0d | start no earlier than 2024-05-14 09:00 | Шуранов Ю | 2h |  |
| 1965 | 6.23.4 | дост авка | 10d | 2024-05-14 11:00 | 2024-05-28 11:00 | 1964 |  |  | 725.84d | 0d | start no earlier than 2023-12-13 08:00 | Малинина М | 80h |  |
| 1966 | 6.23.5 | монтаж конвейер 2ц | 2h | 2024-05-28 11:00 | 2024-05-28 13:00 | 1964, 1965 |  |  | 725.84d | 0d | start no earlier than 2024-01-19 09:00 | Дедов В | 2h |  |
| 1967 | 6.23.6 | монтаж составить список | 2h | 2024-05-28 14:00 | 2024-05-28 16:00 | 1966 |  |  | 725.84d |  | start no earlier than 2023-12-13 08:00 | Домоводов К | 2h |  |
| 1968 | 6.24 | **устройство контроля уровня сырья в большом бункере** | 14.03d | 2023-08-16 09:00 A | 2023-09-05 09:15 |  |  | 14d | 916.56d |  |  |  | 192.25h | 0.25h |
| 1969 | 6.24.1 | заявка на датчик | 15min | 2023-08-16 09:00 A | 2023-08-16 09:15 A |  | 100% |  |  |  | start no earlier than 2023-08-14 09:00 | Лобанов И | 0.25h | 0.25h |
| 1970 | 6.24.2 | доставка | 10d | 2023-08-16 09:15 | 2023-08-30 09:15 | 1969 |  |  | 916.56d | 0d | start no earlier than 2023-03-10 09:00 | Малинина М; Домоводов К | 160h |  |
| 1971 | 6.24.3 | выполнение монажных работ | 4d | 2023-08-30 09:15 | 2023-09-05 09:15 | 1970 |  |  | 916.56d |  | start no earlier than 2023-03-10 09:00 | Подрядчик | 32h |  |
| 1972 | 6.25 | **конвейер с охладителя регулировка ленты - модернизация** | 6.25d | 2024-05-14 09:00 A | 2024-05-22 11:00 A |  | 100% |  |  |  |  |  | 50h | 50h |
| 1973 | 6.25.1 | выбор и заявка натяжные буксы | 2h | 2024-05-14 09:00 A | 2024-05-14 11:00 A |  | 100% |  |  |  | start no earlier than 2024-05-14 09:00 | Шуранов Ю | 2h | 2h |
| 1974 | 6.25.2 | доставка | 5d | 2024-05-14 11:00 A | 2024-05-21 11:00 A | 1973 | 100% |  |  |  | start no earlier than 2023-10-30 09:00 | Малинина М | 40h | 40h |
| 1975 | 6.25.3 | монтаж | 1d | 2024-05-21 11:00 A | 2024-05-22 11:00 A | 1974 | 100% |  |  |  | start no earlier than 2023-12-01 09:00 | Тимофеев В | 8h | 8h |

| ID | WBS | Task | Duration | Start | Finish | Predecessors | Complete | Remaining | Actual start | Total slack | Free slack | Constraint | Resources | Work | Actual work |
| --- | --- | --- | --- | --- | --- | --- | --- | --- | --- | --- | --- | --- | --- | --- | --- |
| 1976 | 6.26 | **прекондиционер забивается отслоением слипшегося сырья** | 204d | 2023-08-03 09:00 | 2024-05-14 18:00 |  |  |  |  | 0d |  |  |  | 24h |  |
| 1977 | 6.26.1 | **решение тех совет** | 1d? | 2023-08-03 09:00 | 2023-08-03 18:00 |  |  |  |  |  |  |  |  | 24h |  |
| 1978 | 6.26.1.1 | вар1 - доп лопатки на выходе | 1d? | 2024-05-14 09:00 | 2024-05-14 18:00 |  |  |  |  | 735.59d |  | start no earlier than 2024-05-14 09:00 | Шуранов Ю | 8h |  |
| 1979 | 6.26.1.2 | вар 2 - вертикальные ворошители | 1d? | 2024-05-14 09:00 | 2024-05-14 18:00 |  |  |  |  | 735.59d |  | start no earlier than 2024-05-14 09:00 | Шуранов Ю | 8h |  |
| 1980 | 6.26.1.3 | вар 3 - подача пара | 1d? | 2024-05-14 09:00 | 2024-05-14 18:00 |  |  |  |  | 735.59d |  | start no earlier than 2024-05-14 09:00 | Шуранов Ю | 8h |  |
| 1981 | 6.27 | **фильтры на баки жиров перед насосами** | 439.12d | 2023-07-20 09:00 A | 2025-03-26 10:00 A |  | 100% |  |  |  |  |  |  | 4.75h | 4.75h |
| 1982 | 6.27.1 | утвердить тех решение | 1h | 2023-07-20 09:00 A | 2023-07-20 10:00 A |  | 100% |  |  |  |  | start no earlier than 2023-07-20 09:00 | Лобанов И; Домоводов К; Сапелин С | 3h | 3h |
| 1983 | 6.27.2 | купить сетку в корпусе | 30min | 2024-05-14 09:00 A | 2024-05-14 09:30 A |  | 100% |  |  |  |  | start no earlier than 2024-05-14 09:00 | Шуранов Ю | 0.5h | 0.5h |
| 1984 | 6.27.3 | купить 1/2 муфта для установки фитингов | 15min | 2025-03-26 09:00 A | 2025-03-26 09:15 A |  | 100% |  |  |  |  | start no earlier than 2025-03-26 08:00 | Шуранов Ю | 0.25h | 0.25h |
| 1985 | 6.27.4 | проверка фитингов | 1h | 2025-03-26 09:00 A | 2025-03-26 10:00 A |  | 100% |  |  |  |  | start no earlier than 2025-03-26 08:00 | Зорькин В | 1h | 1h |
| 1986 | 6.28 | **защита редутора шнеков при отказе маслянного насоса** | 20.12d? | 2023-08-02 09:00 | 2023-08-30 10:00 |  | 33% | 13.52d? | 2023-07-28 09:00 |  |  |  |  | 126.5h | 41.5h |
| 1987 | 6.28.1 | поиск фитинг для замера реле давления | 30min | 2023-07-28 09:00 A | 2023-07-28 09:30 A |  | 100% |  |  |  |  | start no earlier than 2023-07-28 09:00 | Тимофеев В | 0.5h | 0.5h |
| 1988 | 6.28.2 | заявка на фитинг | 1h | 2023-07-31 09:00 A | 2023-07-31 10:00 A | 1987 | 100% |  |  |  |  | start no earlier than 2023-07-31 09:00 | Лобанов И | 1h | 1h |
| 1989 | 6.28.3 | доставка | 5d | 2023-07-31 10:00 A | 2023-08-07 10:00 A | 1988 | 100% |  |  |  |  | start no earlier than 2023-07-31 09:00 | Малинина М | 40h | 40h |
| 1990 | 6.28.4 | заявка реле потока 1/2 или 3/4 | 1h | 2026-03-19 09:00 | 2026-03-19 10:00 |  |  |  |  | 243.97d | 0d | start no earlier than 2026-03-19 09:00 | Шуранов Ю | 1h |  |
| 1991 | 6.28.5 | доставка | 10d | 2026-03-19 10:00 | 2026-04-02 10:00 | 1990 |  |  |  | 243.97d | 1.88d | start no earlier than 2026-03-12 08:00 | Карабанов | 80h |  |
| 1992 | 6.28.6 | монтаж гидравлика | 2h | 2026-04-06 09:00 | 2026-04-06 11:00 | 1991 |  |  |  | 242.09d | 0d | start no earlier than 2026-04-06 09:00 | Тимофеев В | 2h |  |
| 1993 | 6.28.7 | монтаж электрика схема защиты + привязка к частотному приводу | 2h | 2026-04-06 11:00 | 2026-04-06 13:00 | 1992 |  |  |  | 242.09d |  | start no earlier than 2023-07-20 09:00 | Тимофеев В | 2h |  |
| 1994 | 6.29 | **подача сырья в упаковщки 1 цех** | 199.5d? | 2023-06-07 09:00 A | 2024-03-12 13:00 |  | 12% | 175.32d? |  | 781.09d |  |  |  | 37h | 8h |
| 1995 | 6.29.1 | испытание пневмотранспорта напорная магистраль | 4h | 2024-03-12 09:00 A | 2024-03-12 13:00 A |  | 100% |  |  |  |  | start no earlier than 2024-03-12 09:00 | Бобренок В; Некрасов А | 8h | 8h |
| 1996 | 6.29.2 | технологическая схема подачи продукта в упаковщики | 1d? | 2023-06-19 09:00 | 2023-06-19 18:00 |  |  |  |  | 971.59d |  | start no earlier than 2023-06-19 09:00 | Технолог | 8h |  |
| 1997 | 6.29.3 | поиск / запрорс цен на диверторы | 2h | 2023-06-07 09:00 | 2023-06-07 11:00 |  |  |  |  | 977.97d | 0d | start no earlier than 2023-06-07 09:00 | Домоводов К | 2h |  |
| 1998 | 6.29.4 | поиск / запрос цены на эжекторный приемник | 2h | 2023-06-07 11:00 | 2023-06-07 13:00 | 1997 |  |  |  | 977.97d | 0d | start no earlier than 2023-05-10 08:00 | Домоводов К | 2h |  |
| 1999 | 6.29.5 | расчет трассы | 2d | 2023-06-07 14:00 | 2023-06-09 13:00 | 1998 |  |  |  | 977.97d | 0d | start no earlier than 2023-05-10 08:00 | Домоводов К | 16h |  |
| 2000 | 6.29.6 | подбор приобритение вентилятора | 1h | 2023-06-09 14:00 | 2023-06-09 15:00 | 1999 |  |  |  | 977.97d |  | start no earlier than 2023-04-27 09:00 | Домоводов К | 1h |  |

| ID | WBS | Task | Type | Duration | Start | Finish | Predecessors | Complete | Remaining | Total slack | Free slack | Constraint | Resources | Work | Actual work |
| --- | --- | --- | --- | --- | --- | --- | --- | --- | --- | --- | --- | --- | --- | --- | --- |
| 2001 | 6.30 | **защита тэн печи при отключении вентиляторов** |  | 160.25d? | 2023-06-09 09:00 | 2024-01-19 11:00 |  |  |  | 818.34d |  |  |  | 66h |  |
| 2002 | 6.30.1 | устиановить защиту на пускателе 380 1 линия |  | 2h | 2024-01-19 09:00 | 2024-01-19 11:00 |  |  |  | 818.34d |  | start no earlier than 2024-01-19 09:00 | Тимофеев В | 2h |  |
| 2003 | 6.30.2 | составить схему защиты |  | 1d? | 2023-06-09 09:00 | 2023-06-09 18:00 |  |  |  | 970.59d | 0d | start no earlier than 2023-06-09 09:00 | Домоводов К | 8h |  |
| 2004 | 6.30.3 | заявка |  | 1d? | 2023-06-12 09:00 | 2023-06-12 18:00 | 2003 |  |  | 970.59d | 0d | start no earlier than 2023-04-25 09:00 | Домоводов К | 8h |  |
| 2005 | 6.30.4 | оплата поставка |  | 5d | 2023-06-13 09:00 | 2023-06-19 18:00 | 2004 |  |  | 970.59d | 5d | start no earlier than 2023-05-02 09:00 | Малинина М | 40h |  |
| 2006 | 6.30.5 | сборка и монтаж |  | 1d? | 2023-06-27 09:00 | 2023-06-27 18:00 | 2005 |  |  | 965.59d |  | start no earlier than 2023-06-27 09:00 | Бобренок В | 8h |  |
| 2007 | 6.31 | Настройка даты на пробнике, нужно приподнять на 3-5 мм (ждем решение технологов, информация поменялась, читать письмо от 01.09.2026) |  | 3h | 2026-09-11 09:00 | 2026-09-11 12:00 |  |  |  | 128.22d |  | start no earlier than 2026-09-11 09:00 | Тимофеев В | 3h |  |
| 2008 | 7 | **техника** |  | 625.28d? | 2024-05-14 09:00 A | 2026-10-06 11:15 |  | 98% | 14.61d? | 111.31d |  |  |  | 52.5h | 51.25h |
| 2009 | 7.1 | не заводится TRF, сломана шпилька колесо. Контроль приезда приемка работ |  | 1h | 2026-08-17 09:00 A | 2026-08-17 10:00 A |  | 100% |  |  |  | start no earlier than 2026-08-17 09:00 | Шуранов Ю | 1h | 1h |
| 2010 | 7.2 | **капремонт погрузчика коматсу короткий** |  | 38.28d | 2026-08-13 09:00 A | 2026-10-06 11:15 |  | 91% | 3.48d | 111.31d |  |  |  | 2.75h | 2.5h |
| 2011 | 7.2.1 | заявка получить цену в тракресурс |  | 15min | 2026-08-13 09:00 A | 2026-08-13 09:15 A |  | 100% |  |  |  | start no earlier than 2026-08-13 09:00 | Домоводов К | 0.25h | 0.25h |
| 2012 | 7.2.2 | заявка получить цену в форклифт |  | 15min | 2026-08-13 09:15 A | 2026-08-13 09:30 A | 2011 | 100% |  |  |  | start no earlier than 2026-08-13 09:00 | Домоводов К | 0.25h | 0.25h |
| 2013 | 7.2.3 | получить КП 2 | milestone | 0d | 2026-08-17 09:00 A | 2026-08-17 09:00 A |  | 100% |  |  |  | start no earlier than 2026-08-17 09:00 | Домоводов К |  |  |
| 2014 | 7.2.4 | решение о дате | milestone | 0d | 2026-09-07 09:00 | 2026-09-07 09:00 | 2012FS+1d |  |  | 132.59d |  | start no earlier than 2026-09-07 09:00 | Домоводов К |  |  |
| 2015 | 7.2.5 | орг отправить погрузчик в ремонт / составить акт |  | 2h | 2026-09-08 09:00 A | 2026-09-08 11:00 A | 2012, 2014FS+1d | 100% |  |  |  | start no earlier than 2026-08-26 09:00 | Шуранов Ю | 2h | 2h |
| 2016 | 7.2.6 | контроль сроков ремонта |  | 15min | 2026-10-06 11:00 | 2026-10-06 11:15 | 2015FS+20d |  |  | 111.31d |  | start no earlier than 2026-08-12 09:00 | Зорькин В | 0.25h |  |
| 2017 | 7.3 | заказать по комплекту воздушных фильтров для погрузчиков |  | 1h | 2026-08-18 09:00 A | 2026-08-18 10:00 A |  | 100% |  |  |  | start no earlier than 2026-08-18 09:00 | Шуранов Ю | 1h | 1h |
| 2018 | 7.4 | провкрить моточасы для проведения ТО |  | 1h | 2026-08-18 09:00 A | 2026-08-18 10:00 A |  | 100% |  |  |  | start no earlier than 2026-08-18 09:00 | Шуранов Ю | 1h | 1h |
| 2019 | 7.5 | не заводиться trf погрузчик, посмотреть подачу топлива |  | 1h | 2026-05-25 08:00 A | 2026-05-25 10:00 A |  | 100% |  |  |  | start no earlier than 2026-05-25 08:00 | Тимофеев В; Шуранов Ю | 2h | 2h |
| 2020 | 7.6 | ТО карбюратора ТРФ организовать |  | 1h | 2026-05-27 09:00 A | 2026-05-27 10:00 A |  | 100% |  |  |  | start no earlier than 2026-05-27 09:00 | Шуранов Ю | 1h | 1h |
| 2021 | 7.7 | ренгулировка ремня погрузчик желтый №209490 контроль |  | 1h | 2026-05-14 09:00 A | 2026-05-14 10:00 A |  | 100% |  |  |  | start no earlier than 2026-05-14 09:00 | Шуранов Ю | 1h | 1h |
| 2022 | 7.8 | ремонт генераторов -найти фирму |  | 1d? | 2026-05-07 09:00 A | 2026-05-07 18:00 A |  | 100% |  |  |  | start no earlier than 2026-05-07 09:00 | Шуранов Ю | 8h | 8h |
| 2023 | 7.9 | греется мотор сменный погрузчик (вероятно помпа). Орг визит |  | 15min | 2026-04-27 09:00 A | 2026-04-27 09:15 A |  | 100% |  |  |  | start no earlier than 2026-04-27 08:00 | Шуранов Ю | 0.25h | 0.25h |
| 2024 | 7.10 | установить вентиляторы на погрузчики |  | 2h | 2026-04-27 08:00 A | 2026-04-27 11:00 A |  | 100% |  |  |  | start no earlier than 2026-04-27 08:00 | Тимофеев В | 2h | 2h |
| 2025 | 7.11 | заменить шланги гидравлики погрузчик ТРФ |  | 1d? | 2026-04-21 09:00 A | 2026-04-21 18:00 A |  | 100% |  |  |  | start no earlier than 2026-04-21 09:00 |  |  |  |
| 2026 | 7.12 | пригласить тракресурс |  | 1h | 2026-04-21 09:00 A | 2026-04-21 10:00 A |  | 100% |  |  |  | start no earlier than 2026-04-21 09:00 | Шуранов Ю | 1h | 1h |
| 2027 | 7.13 | проварить ковш трактора в слесарке |  | 4h | 2026-03-24 08:00 A | 2026-03-24 13:00 A |  | 100% |  |  |  | start no earlier than 2026-03-24 08:00 | Бобренок В | 4h | 4h |
| 2028 | 7.14 | контроль доставки / приемка погрузчи коматсу |  | 1h | 2026-03-13 09:00 A | 2026-03-13 10:00 A |  | 100% |  |  |  | start no earlier than 2026-03-13 09:00 | Шуранов Ю | 1h | 1h |
| 2029 | 7.15 | ремонт штабелер 5 цех ролик и опрное колесо. Контроль |  | 30min | 2026-03-13 09:00 A | 2026-03-13 09:30 A |  | 100% |  |  |  | start no earlier than 2026-03-13 09:00 | Шуранов Ю | 0.5h | 0.5h |
| 2030 | 7.16 | ремонт ковш трактор |  | 6h | 2026-03-03 09:00 A | 2026-03-03 16:00 A |  | 100% |  |  |  | start no earlier than 2026-03-03 08:00 | Некрасов А; Труфанов А | 12h | 12h |

| ID | WBS | Task | Type | Duration | Start | Finish | Predecessors | Complete | Remaining | Total slack | Constraint | Resources | Work | Actual work |
| --- | --- | --- | --- | --- | --- | --- | --- | --- | --- | --- | --- | --- | --- | --- |
| 2031 | 7.17 | **ремонт цепи желтый вилочный + ручник** |  | 0.16d | 2025-07-28 09:00 A | 2025-07-28 10:15 A |  | 100% |  |  |  |  | 1.25h | 1.25h |
| 2032 | 7.17.1 | контроль даты визита |  | 15min | 2025-07-28 09:00 A | 2025-07-28 09:15 A |  | 100% |  |  | start no earlier than 2025-07-28 09:00 | Шуранов Ю | 0.25h | 0.25h |
| 2033 | 7.17.2 | ремонт контроль \принять работы |  | 1h | 2025-07-28 09:15 A | 2025-07-28 10:15 A | 2032 | 100% |  |  | start no earlier than 2025-07-23 09:00 | Шуранов Ю | 1h | 1h |
| 2034 | 7.18 | реморнт педаль газ на 3d принтере |  | 1h | 2025-07-23 09:00 A | 2025-07-23 10:00 A |  | 100% |  |  | start no earlier than 2025-07-23 09:00 | Шуранов Ю | 1h | 1h |
| 2035 | 7.19 | реморнт педаль газ на 3d принтере |  | 1h | 2026-09-01 09:00 | 2026-09-01 10:00 |  |  |  | 136.47d | start no earlier than 2026-09-01 09:00 | Домоводов К | 1h |  |
| 2036 | 7.20 | ТО штабелеры кайтымовская орг |  | 1h | 2025-07-23 09:00 A | 2025-07-23 10:00 A |  | 100% |  |  | start no earlier than 2025-07-23 09:00 | Шуранов Ю | 1h | 1h |
| 2037 | 7.21 | заявка доводчик двери желт коматсу |  | 15min | 2024-05-14 09:00 A | 2024-05-14 09:15 A |  | 100% |  |  | start no earlier than 2024-05-14 09:00 | Шуранов Ю | 0.25h | 0.25h |
| 2038 | 7.22 | **ошибка 02а22 штабелер PS16N 414** |  | 0.12d | 2024-05-14 09:00 A | 2024-05-14 10:00 A |  | 100% |  |  |  |  | 1h | 1h |
| 2039 | 7.22.1 | составить рекламацию / вызов специалистов |  | 1h | 2024-05-14 09:00 A | 2024-05-14 10:00 A |  | 100% |  |  | start no earlier than 2024-05-14 09:00 | Шуранов Ю | 1h | 1h |
| 2040 | 7.23 | **неисправна кнопка стоп штабелер 5 цех** |  | 0.19d | 2024-05-14 09:00 A | 2024-05-14 10:30 A |  | 100% |  |  |  |  | 1.5h | 1.5h |
| 2041 | 7.23.1 | орг работы по замене калеса штабелера |  | 1h | 2024-05-14 09:00 A | 2024-05-14 10:00 A |  | 100% |  |  | start no earlier than 2024-05-14 09:00 | Шуранов Ю | 1h | 1h |
| 2042 | 7.23.2 | орг забор штабелера на ремонт гидроциондра. Договор с сервисной компанией о дате, обменть штабелер с 2 цеха |  | 30min | 2024-05-14 10:00 A | 2024-05-14 10:30 A | 2041 | 100% |  |  | start no earlier than 2024-05-14 09:00 | Шуранов Ю | 0.5h | 0.5h |
| 2043 | 7.24 | **ремонт стеклоочиститель вилочного** |  | 0.5d | 2024-05-14 09:00 A | 2024-05-14 13:00 A |  | 100% |  |  |  |  | 5h | 5h |
| 2044 | 7.24.1 | осмотр механизма чтто сломалось |  | 4h | 2024-05-14 09:00 A | 2024-05-14 13:00 A |  | 100% |  |  | start no earlier than 2024-05-14 09:00 | Шуранов Ю | 4h | 4h |
| 2045 | 7.24.2 | заявка на покупку стеклоочист |  | 1h | 2024-05-14 09:00 A | 2024-05-14 10:00 A |  | 100% |  |  | start no earlier than 2024-05-14 09:00 | Шуранов Ю | 1h | 1h |
| 2046 | 7.25 | купить ремень на генератор |  | 2h | 2024-05-14 09:00 A | 2024-05-14 11:00 A |  | 100% |  |  | start no earlier than 2024-05-14 09:00 | Шуранов Ю | 2h | 2h |
| 2047 | 8 | **Лаборатория** |  | 0.06d | 2026-04-20 09:00 A | 2026-04-20 09:30 A |  | 100% |  |  |  |  | 1h | 1h |
| 2048 | 8.1 | Отнести старый бульбулятор в архив |  | 30min | 2026-04-20 09:00 A | 2026-04-20 09:30 A |  | 100% |  |  | start no earlier than 2026-04-20 09:00 | Тимофеев В | 0.5h | 0.5h |
| 2049 | 8.2 | Отнести короб от нового бульбулятора тоже в архив |  | 30min | 2026-04-20 09:00 A | 2026-04-20 09:30 A |  | 100% |  |  | start no earlier than 2026-04-20 09:00 | Тимофеев В | 0.5h | 0.5h |
| 2050 | 9 | **слесарное помещение** |  | 57d? | 2026-06-11 09:00 A | 2026-08-30 10:00 |  | 96% | 2.28d? | 137.59d |  |  | 13.5h | 12h |
| 2051 | 9.1 | отвезти паллет возле слесарки в синий | manual | 1h | 2026-08-30 09:00 A | 2026-08-30 10:00 A |  | 100% |  |  | start no earlier than 2026-08-30 09:00 | Бундин В | 1h | 1h |
| 2052 | 9.2 | заварить хомут от деко 5 ц. |  | 2h | 2026-07-02 09:00 A | 2026-07-02 11:00 A |  | 100% |  |  | start no earlier than 2026-07-02 09:00 | Тимофеев В | 2h | 2h |
| 2053 | 9.3 | доставить временно наш компрессор на 3 склад для обдува погрузчиков | manual | 1h | 2026-06-29 09:00 A | 2026-06-29 10:00 A |  | 100% |  |  | start no earlier than 2026-06-29 09:00 | Тимофеев В | 1h | 1h |
| 2054 | 9.4 | ремонт 2-х ручных запайщиков- запчасти на складе (нагревательные блоки, тены) | manual | 2h | 2026-06-27 09:00 A | 2026-06-27 11:00 A |  | 100% |  |  | start no earlier than 2026-06-27 09:00 | Дедов В | 2h | 2h |
| 2055 | 9.5 | оставляем порядок после своей смены в слесарке |  | 0.5h | 2026-06-12 09:00 | 2026-06-12 09:30 |  |  |  | 193.53d | start no earlier than 2026-06-12 09:00 | Дедов В; Бобренок В; Бундин В | 1.5h |  |
| 2056 | 9.6 | Проверка напольных весов, почему не работают, возможно отошел контакт |  | 2h | 2026-07-24 09:00 A | 2026-07-24 11:00 A |  | 100% |  |  | start no earlier than 2026-07-24 09:00 | Бундин В | 2h | 2h |
| 2057 | 9.7 | уборка |  | 0.25d? | 2026-06-11 09:00 A | 2026-06-11 11:00 A |  | 100% |  |  |  | Труфанов А | 2h | 2h |
| 2058 | 9.8 | проверить весы настольные (показывают вес больше, если получится калибровать) |  | 2h | 2026-06-11 09:00 A | 2026-06-11 11:00 A |  | 100% |  |  | start no earlier than 2026-06-11 09:00 | Дедов В | 2h | 2h |

| ID | WBS | Task | Type | Duration | Start | Finish | Predecessors | Complete | Remaining | Actual start | Actual finish | Total slack | Constraint | Resources | Work | Actual work |
| --- | --- | --- | --- | --- | --- | --- | --- | --- | --- | --- | --- | --- | --- | --- | --- | --- |
| 2059 | 10 | **ЗИП ремонт** |  | 628.11d? | 2024-05-09 09:00 A | 2026-10-06 09:55 |  | 54% | 291.69d? |  |  | 111.48d |  |  | 825.42h | 392.58h |
| 2060 | 10.1 | ремонт оборотные сетки-поддоны от печи от 2ц |  | 2h | 2026-09-03 09:00 | 2026-09-03 11:00 |  |  |  |  |  | 134.34d | start no earlier than 2026-09-03 08:00 | Бобренок В | 2h |  |
| 2061 | 10.2 | подготовить электродную группу для 2 цеха |  | 3h | 2026-08-25 09:00 A | 2026-08-25 12:00 A |  | 100% |  |  |  |  | start no earlier than 2026-08-25 08:00 | Бундин В | 3h | 3h |
| 2062 | 10.3 | пепенос трубы нерж с 3ц на синий склад |  | 1h | 2026-08-24 09:00 | 2026-08-24 10:00 |  |  |  |  |  | 142.47d | start no earlier than 2026-08-24 09:00 | Некрасов А; Тимофеев В | 2h |  |
| 2063 | 10.4 | ремонт электрод парогенертора для 2ц |  | 4h | 2026-08-18 09:00 A | 2026-08-18 13:00 A |  | 100% |  |  |  |  | start no earlier than 2026-08-18 09:00 | Бобренок В | 4h | 4h |
| 2064 | 10.5 | перевоз батареи свинец от погрузчика на синий склад |  | 30min | 2026-08-12 09:00 A | 2026-08-12 09:30 A |  | 100% |  |  |  |  | start no earlier than 2026-08-12 09:00 | Макаревич А | 0.5h | 0.5h |
| 2065 | 10.6 | **заточка ножей** |  | 6.03d | 2026-08-13 09:00 A | 2026-08-21 09:15 A |  | 100% |  |  |  |  |  |  | 0.5h | 0.5h |
| 2066 | 10.6.1 | разместить ЛТ70 курьеру, отметиь журнал |  | 15min | 2026-08-13 09:00 A | 2026-08-13 09:15 A |  | 100% |  |  |  |  | start no earlier than 2026-08-13 09:00 | Зорькин В | 0.25h | 0.25h |
| 2067 | 10.6.2 | контроль, орг забрать |  | 15min | 2026-08-21 09:00 A | 2026-08-21 09:15 A |  | 100% |  |  |  |  | start no earlier than 2026-08-21 09:00 | Шуранов Ю | 0.25h | 0.25h |
| 2068 | 10.7 | **ножевой узел для 1ц** |  | 0.03d | 2026-08-13 09:00 A | 2026-08-13 09:15 A |  | 100% |  |  |  |  |  |  | 0.25h | 0.25h |
| 2069 | 10.7.1 | контроль поставки |  | 15min | 2026-08-13 09:00 A | 2026-08-13 09:15 A |  | 100% |  |  |  |  | start no earlier than 2026-08-13 09:00 | Домоводов К | 0.25h | 0.25h |
| 2070 | 10.8 | подготовить электроды для парогенератора цех 1 |  | 4h | 2026-08-05 08:00 A | 2026-08-05 13:00 A |  | 100% |  |  |  |  | start no earlier than 2026-08-05 08:00 | Макаревич А | 4h | 4h |
| 2071 | 10.9 | восстановить голову насоса гидрализата (в слесарке) подписать | manual | 2h | 2026-08-01 09:00 A | 2026-08-01 11:00 A |  | 100% |  |  |  |  | start no earlier than 2026-08-01 09:00 | Бундин В | 2h | 2h |
| 2072 | 10.10 | **восстановить сетку спечи (она в слесарке)** |  | 1d? | 2026-08-14 09:00 | 2026-08-14 18:00 |  | 100% |  | 2026-08-03 09:00 | 2026-08-03 18:00 |  |  |  | 8h | 8h |
| 2073 | 10.10.1 | заказать сверла по нерж. М5 и М6 |  | 1d? | 2026-08-03 09:00 A | 2026-08-03 18:00 A |  | 100% |  |  |  |  | start no earlier than 2026-08-03 08:00 | Шуранов Ю | 8h | 8h |
| 2074 | 10.11 | подготовить антиэлектроды по аналогии с нашими (все на складе) | manual | 5h | 2026-08-01 09:00 A | 2026-08-01 15:00 A |  | 100% |  |  |  |  | start no earlier than 2026-08-01 09:00 | Бундин В | 5h | 5h |
| 2075 | 10.12 | подготовить электродную группу для парогенератора |  | 3h | 2026-06-12 09:00 A | 2026-06-12 12:00 A |  | 100% |  |  |  |  | start no earlier than 2026-06-12 09:00 | Бундин В | 3h | 3h |
| 2076 | 10.13 | собрать 2 стула для ИТР |  | 2h | 2026-06-07 09:00 A | 2026-06-08 11:00 A |  | 100% |  |  |  |  | start no earlier than 2026-06-07 09:00 | Бобренок В | 2h | 2h |
| 2077 | 10.14 | **покрасить швейлеры возле слесарки(грунтовка, затем серый цвет)** |  | 0.25d | 2026-06-12 09:00 A | 2026-06-12 11:00 A |  | 100% |  |  |  |  |  | Бобренок В | 4h | 4h |
| 2078 | 10.14.1 | болгаркой убрать сварочные сопли и покрасить |  | 2h | 2026-06-12 09:00 A | 2026-06-12 11:00 A |  | 100% |  |  |  |  | start no earlier than 2026-06-12 09:00 | Бундин В | 2h | 2h |
| 2079 | 10.15 | подготовить фильтры для кондиционеров, замена фильтр ткани. Находятся в слесарке | manual | 2h | 2026-06-14 09:00 A | 2026-06-14 11:00 A |  | 100% |  |  |  |  | start no earlier than 2026-06-14 09:00 | Бундин В | 2h | 2h |
| 2080 | 10.16 | **заявка на фильеры от 02.06 1ц и 2ц** |  | 7.19d | 2026-06-02 09:00 A | 2026-06-11 10:30 A |  | 100% |  |  |  |  |  |  | 4.5h | 4.5h |
| 2081 | 10.16.1 | подготовить чертежи по ТЗ |  | 2h | 2026-06-02 09:00 A | 2026-06-02 11:00 A |  | 100% |  |  |  |  | start no earlier than 2026-06-02 09:00 | Домоводов К | 2h | 2h |
| 2082 | 10.16.2 | **партия 1** |  | 6.19d | 2026-06-03 09:00 A | 2026-06-11 10:30 A |  | 100% |  |  |  |  |  |  | 1.5h | 1.5h |
| 2083 | 10.16.2.1 | разместить токарю заварка фильер + шлифвка |  | 30min | 2026-06-03 09:00 A | 2026-06-03 09:30 A |  | 100% |  |  |  |  | start no earlier than 2026-06-03 08:00 | Шуранов Ю | 0.5h | 0.5h |
| 2084 | 10.16.2.2 | забрать заваренные / разместить на изготовление дюз |  | 30min | 2026-06-07 09:30 A | 2026-06-08 09:30 A | 2083FS+4d | 100% |  |  |  |  | start no earlier than 2026-06-03 08:00 | Шуранов Ю | 0.5h | 0.5h |
| 2085 | 10.16.2.3 | забрать готовые |  | 30min | 2026-06-11 10:00 A | 2026-06-11 10:30 A | 2084FS+4d | 100% |  |  |  |  | start no earlier than 2026-06-03 08:00 | Шуранов Ю | 0.5h | 0.5h |

| ID | WBS | Task | Duration | Start | Finish | Predecessors | Complete | Total slack | Free slack | Constraint | Resources | Work | Actual work |
| --- | --- | --- | --- | --- | --- | --- | --- | --- | --- | --- | --- | --- | --- |
| 2086 | 10.16.3 | **партия 2** | 3.12d | 2026-06-04 09:00 A | 2026-06-09 10:00 A |  | 100% |  |  |  |  | 1h | 1h |
| 2087 | 10.16.3.1 | разместить готовые балванки на прожиг отверстий | 30min | 2026-06-04 09:00 A | 2026-06-04 09:30 A |  | 100% |  |  | start no earlier than 2026-06-04 09:00 | Шуранов Ю | 0.5h | 0.5h |
| 2088 | 10.16.3.2 | забрать готовые | 30min | 2026-06-09 09:30 A | 2026-06-09 10:00 A | 2087FS+5d | 100% |  |  | start no earlier than 2026-06-03 08:00 | Шуранов Ю | 0.5h | 0.5h |
| 2089 | 10.17 | **зип тенов на печь 70 и 85 + шестерни питатель 70** | 30.06d | 2026-05-28 09:00 A | 2026-07-09 09:30 A |  | 100% |  |  |  |  | 0.75h | 0.75h |
| 2090 | 10.17.1 | запрос Настя, получить счет | 15min | 2026-05-28 09:00 A | 2026-05-28 09:15 A |  | 100% |  |  | start no earlier than 2026-05-28 09:00 | Домоводов К | 0.25h | 0.25h |
| 2091 | 10.17.2 | оплата | 15min | 2026-06-04 09:00 A | 2026-06-04 09:15 A | 2090FS+2d | 100% |  |  | start no earlier than 2026-06-04 09:00 | Домоводов К | 0.25h | 0.25h |
| 2092 | 10.17.3 | контроль поставки | 15min | 2026-07-09 09:15 A | 2026-07-09 09:30 A | 2091FS+30d | 100% |  |  | start no earlier than 2026-05-27 08:00 | Зорькин В | 0.25h | 0.25h |
| 2093 | 10.18 | подготовка к инвентаризации | 3h | 2026-05-26 09:00 A | 2026-05-26 12:00 A |  | 100% |  |  | start no earlier than 2026-05-26 09:00 | Бундин В | 3h | 3h |
| 2094 | 10.19 | посчитать и записать какие и какое количество автоматов и контакторов есть в слесарке | 1h | 2026-05-23 09:00 A | 2026-05-25 10:00 A |  | 100% |  |  | start no earlier than 2026-05-23 09:00 | Макаревич А | 1h | 1h |
| 2095 | 10.20 | передать весы (малые в 1 цех, большие в 5 цех) со слесарки | 1h | 2026-05-22 09:00 A | 2026-05-22 10:00 A |  | 100% |  |  | start no earlier than 2026-05-22 09:00 | Макаревич А | 1h | 1h |
| 2096 | 10.21 | проверить работает или нет двигатель с накопительного стола цех 1- Валентин покажет. | 1h | 2026-05-19 08:00 A | 2026-05-19 10:00 A |  | 100% |  |  | start no earlier than 2026-05-19 08:00 | Дедов В | 1h | 1h |
| 2097 | 10.22 | наточить ножи для ц.2 | 1h | 2026-05-19 09:00 A | 2026-05-19 10:00 A |  | 100% |  |  | start no earlier than 2026-05-19 09:00 | Тимофеев В | 1h | 1h |
| 2098 | 10.23 | подготовка к инвентаризации (посчитать какие и метраж кабеля в слесарке и желтом нашей половине) | 2h | 2026-05-24 09:00 A | 2026-05-25 11:00 A |  | 100% |  |  | start no earlier than 2026-05-24 09:00 | Дедов В | 2h | 2h |
| 2099 | 10.24 | подготовить рабочее место в слесарке для работы на кровле Олега | 1h | 2026-05-15 09:00 A | 2026-05-15 10:00 A |  | 100% |  |  | start no earlier than 2026-05-15 09:00 | Некрасов А; Труфанов А; Тимофеев В; Макаревич А | 4h | 4h |
| 2100 | 10.25 | **ремонт инсекютер с 1ц в слесарке. Повесить в цехе, зафиксировать в журнал мастера** | 0.12d | 2026-05-19 09:00 A | 2026-05-19 10:00 A |  | 100% |  |  |  |  | 1h | 1h |
| 2101 | 10.25.1 | взять светильник "антимуха" у Луговских и повесить на входе в корридор между раздевалками | 1h | 2026-05-19 09:00 A | 2026-05-19 10:00 A |  | 100% |  |  | start no earlier than 2026-05-19 09:00 | Дедов В | 1h | 1h |
| 2102 | 10.26 | **орг ремонт мотор с вращаюбщего барабана 1ц** | 0.16d | 2026-09-01 09:00 | 2026-09-01 10:15 |  |  | 136.44d |  |  |  | 1.25h |  |
| 2103 | 10.26.1 | подписать шильдик. На веревочке картонка / пластик | 15min | 2026-09-01 09:00 | 2026-09-01 09:15 |  |  | 136.44d | 0d | start no earlier than 2026-09-01 09:00 | Шуранов Ю | 0.25h |  |
| 2104 | 10.26.2 | орг ремонт | 1h | 2026-09-01 09:15 | 2026-09-01 10:15 | 2103 |  | 136.44d |  | start no earlier than 2026-09-01 09:00 | Шуранов Ю | 1h |  |
| 2105 | 10.27 | получить на складе резинки на двери прекондиционеров и выдать цех 1 и 2 | 1h | 2026-05-11 09:00 A | 2026-05-11 10:00 A |  | 100% |  |  | start no earlier than 2026-05-11 09:00 |  |  |  |
| 2106 | 10.28 | подготовить электродную группу для 1 цеха | 3h | 2026-05-11 09:00 A | 2026-05-11 12:00 A |  | 100% |  |  | start no earlier than 2026-05-11 09:00 | Бундин В | 3h | 3h |
| 2107 | 10.29 | на емкость нерж сделать сгон и поплавок | 4h | 2026-05-09 09:00 A | 2026-05-11 13:00 A |  | 100% |  |  | start no earlier than 2026-05-09 09:00 | Макаревич А | 4h | 4h |
| 2108 | 10.30 | отвезти термоодеяло с слесарки в синий склад | 1h | 2026-05-11 09:00 A | 2026-05-11 10:00 A |  | 100% |  |  | start no earlier than 2026-05-11 09:00 | Бундин В | 1h | 1h |
| 2109 | 10.31 | приехали дроселя для светильников, восстановить не рабочие | 4h | 2026-05-12 09:00 A | 2026-05-12 13:00 A |  | 100% |  |  | start no earlier than 2026-05-12 09:00 | Бундин В | 4h | 4h |

| ID | WBS | Task | Type | Duration | Start | Finish | Predecessors | Complete | Total slack | Free slack | Constraint | Resources | Work | Actual work |
| --- | --- | --- | --- | --- | --- | --- | --- | --- | --- | --- | --- | --- | --- | --- |
| 2110 | 10.32 | **орг ремонт мотор с конв №2 1 линия 1ц** |  | 0.25d | 2026-09-01 09:00 | 2026-09-01 11:00 |  |  | 136.34d |  |  |  | 2h |  |
| 2111 | 10.32.1 | подписать шильдик |  | 60min | 2026-09-01 09:00 | 2026-09-01 10:00 |  |  | 136.34d | 0d | start no earlier than 2026-09-01 09:00 | Шуранов Ю | 1h |  |
| 2112 | 10.32.2 | орг ремонт |  | 1h | 2026-09-01 10:00 | 2026-09-01 11:00 | 2111 |  | 136.34d |  | start no earlier than 2026-05-14 09:00 | Шуранов Ю | 1h |  |
| 2113 | 10.33 | сборка редуктор с шлюз питателя (фото в чате 14.05) |  | 3h | 2026-08-31 09:00 A | 2026-08-31 12:00 A |  | 100% |  |  | start no earlier than 2026-09-02 09:00 | Тимофеев В | 3h | 3h |
| 2114 | 10.34 | **собрать мотор-редуктор прекондиционера в слесарке (сальники на складе в лотках снизу подписаны)** |  | 0.12d | 2026-06-15 09:00 A | 2026-06-15 10:00 A |  | 100% |  |  |  | Бундин В | 3h | 3h |
| 2115 | 10.34.1 | транспортировка в синий склад |  | 1h | 2026-06-15 09:00 A | 2026-06-15 10:00 A |  | 100% |  |  | start no earlier than 2026-06-15 09:00 | Тимофеев В; Некрасов А | 2h | 2h |
| 2116 | 10.35 | **вскрыть листогиб** |  | 4.5d | 2026-05-09 09:00 A | 2026-05-15 13:00 A |  | 100% |  |  |  |  | 11.17h | 11.17h |
| 2117 | 10.35.1 | проверить работу листогиба (попробовать загнуть нерж) |  | 1h | 2026-05-09 09:00 A | 2026-05-11 10:00 A |  | 100% |  |  | start no earlier than 2026-05-09 09:00 | Макаревич А | 1h | 1h |
| 2118 | 10.35.2 | как удлинить ручки, предложение |  | 5min | 2026-05-13 09:00 A | 2026-05-13 09:05 A |  | 100% |  |  | start no earlier than 2026-05-13 09:00 | Труфанов А | 0.08h | 0.08h |
| 2119 | 10.35.3 | куда крепить стационарно. Синий склад /контейнер. Предложения. |  | 5min | 2026-05-13 09:00 A | 2026-05-13 09:05 A |  | 100% |  |  | start no earlier than 2026-05-13 09:00 | Труфанов А | 0.08h | 0.08h |
| 2120 | 10.35.4 | изготовить раму для крепления к полу |  | 4h | 2026-05-15 09:00 A | 2026-05-15 13:00 A |  | 100% |  |  | start no earlier than 2026-05-15 09:00 | Тимофеев В; Макаревич А | 8h | 8h |
| 2121 | 10.35.5 | усилить ручки |  | 1h | 2026-05-15 09:00 A | 2026-05-15 10:00 A |  | 100% |  |  | start no earlier than 2026-05-15 09:00 | Тимофеев В; Макаревич А | 2h | 2h |
| 2122 | 10.36 | вывезти питатель на синий склад |  | 1h | 2026-05-05 09:00 A | 2026-05-05 10:00 A |  | 100% |  |  | start no earlier than 2026-05-05 09:00 | Тимофеев В | 1h | 1h |
| 2123 | 10.37 | транспортировка гильз и шнеков на синий склад (уложить по приходам из китая) |  | 3h | 2026-05-05 09:00 A | 2026-05-05 12:00 A |  | 100% |  |  | start no earlier than 2026-05-05 09:00 | Тимофеев В; Бобренок В; Шуранов Ю | 9h | 9h |
| 2124 | 10.38 | найти на синем складе комплектующие для инвентаризации с Алексеем |  | 3h | 2026-05-05 09:00 A | 2026-05-05 12:00 A |  | 100% |  |  | start no earlier than 2026-05-05 08:00 | Шуранов Ю | 3h | 3h |
| 2125 | 10.39 | посчитать все валы от транспортеров, занести в таблицу учета |  | 4h | 2026-05-11 09:00 A | 2026-05-11 13:00 A |  | 100% |  |  | start no earlier than 2026-05-09 09:00 | Шуранов Ю | 4h | 4h |
| 2126 | 10.40 | посчитать сколько валов для транспортеров Теко в слесарке |  | 1h | 2026-04-30 09:00 A | 2026-04-30 10:00 A |  | 100% |  |  | start no earlier than 2026-04-30 09:00 | Шуранов Ю | 1h | 1h |
| 2127 | 10.41 | уборка остатки металл в контейнер |  | 1h | 2026-04-29 09:00 A | 2026-04-29 10:00 A |  | 100% |  |  | start no earlier than 2026-04-29 09:00 | Некрасов А; Тимофеев В; Труфанов А; Бундин В | 4h | 4h |
| 2128 | 10.42 | **ЗИП на ПГ антиэлектрод** |  | 33d? | 2026-05-13 09:00 A | 2026-06-26 18:00 A |  | 100% |  |  |  |  | 9.5h | 9.5h |
| 2129 | 10.42.1 | поиск в продаже труба нерж ф205 (проверить у Тимофеева диамтр) |  | 1h | 2026-05-13 09:00 A | 2026-05-13 10:00 A |  | 100% |  |  | start no earlier than 2026-05-13 09:00 | Зорькин В | 1h | 1h |
| 2130 | 10.42.2 | заявка |  | 15min | 2026-05-13 10:00 A | 2026-05-13 10:15 A | 2129 | 100% |  |  | start no earlier than 2026-04-24 08:00 | Зорькин В | 0.25h | 0.25h |
| 2131 | 10.42.3 | контроль доставки. Карабанов размещает у свои |  | 15min | 2026-05-19 09:00 A | 2026-05-19 09:15 A | 2130FS+5d | 100% |  |  | start no earlier than 2026-05-19 09:00 | Зорькин В | 0.25h | 0.25h |
| 2132 | 10.42.4 | монтаж |  | 1d? | 2026-06-26 09:00 A | 2026-06-26 18:00 A | 2131FS+2d | 100% |  |  | start no earlier than 2026-06-26 09:00 | Тимофеев В | 8h | 8h |
| 2133 | 10.43 | **ремонт шуруповерт макита** |  | 40d | 2026-04-19 09:00 A | 2026-06-14 11:00 A |  | 100% |  |  |  |  | 5h | 5h |
| 2134 | 10.43.1 | разобрать шуруповерт макита, выяснить с редуктором проблема или нет | manual | 2h | 2026-04-19 09:00 A | 2026-04-19 11:00 A |  | 100% |  |  | start no earlier than 2026-04-19 09:00 | Дедов В | 2h | 2h |
| 2135 | 10.43.2 | отправить фидео запрос о ремонте в сервисн центр |  | 1h | 2026-04-20 09:00 A | 2026-04-20 10:00 A |  | 100% |  |  | start no earlier than 2026-04-20 08:00 | Зорькин В | 1h | 1h |
| 2136 | 10.43.3 | конртроль / решение о списании | milestone | 0d | 2026-04-27 09:00 A | 2026-04-27 09:00 A |  | 100% |  |  | start no earlier than 2026-04-27 09:00 | Зорькин В |  |  |
| 2137 | 10.43.4 | попробовать собрать шуроповерт, находится в слесарке | manual | 2h | 2026-06-14 09:00 A | 2026-06-14 11:00 A |  | 100% |  |  | start no earlier than 2026-06-14 09:00 | Бундин В | 2h | 2h |
| 2138 | 10.44 | взять винты пота м6х25 и перекрутить на сетке для печи | manual | 1h | 2026-04-20 09:00 A | 2026-04-20 10:00 A |  | 100% |  |  | start no earlier than 2026-04-20 09:00 | Тимофеев В | 1h | 1h |

| ID | WBS | Task | Type | Duration | Start | Finish | Predecessors | Complete | Remaining | Total slack | Constraint | Resources | Work | Actual work |
| --- | --- | --- | --- | --- | --- | --- | --- | --- | --- | --- | --- | --- | --- | --- |
| 2139 | 10.45 | **шестерня питателя LT85** |  | 7.01d | 2026-04-08 09:00 A | 2026-04-17 09:05 |  | 94% | 0.44d | 233.58d |  |  | 1.33h | 1.25h |
| 2140 | 10.45.1 | **1. заказ с китая** |  | 7.01d | 2026-04-08 09:00 A | 2026-04-17 09:05 |  | 75% | 1.75d | 233.58d |  |  | 0.33h | 0.25h |
| 2141 | 10.45.1.1 | запрос / контроль |  | 15min | 2026-04-08 09:00 A | 2026-04-08 09:15 A |  | 100% |  |  | start no earlier than 2026-04-08 09:00 | Шуранов Ю | 0.25h | 0.25h |
| 2142 | 10.45.1.2 | контроль |  | 5min | 2026-04-17 09:00 | 2026-04-17 09:05 |  |  |  | 233.58d | start no earlier than 2026-04-17 09:00 | Шуранов Ю | 0.08h |  |
| 2143 | 10.45.2 | **2. изготовление по образцу** |  | 5.03d | 2026-04-08 09:00 A | 2026-04-15 09:15 A |  | 100% |  |  |  |  | 1h | 1h |
| 2144 | 10.45.2.1 | выяснить возможносить изготвления |  | 30min | 2026-04-08 09:00 A | 2026-04-08 09:30 A |  | 100% |  |  | start no earlier than 2026-04-08 09:00 | Зорькин В | 0.5h | 0.5h |
| 2145 | 10.45.2.2 | отправить курьера |  | 15min | 2026-04-08 09:30 A | 2026-04-08 09:45 A | 2144 | 100% |  |  | start no earlier than 2026-04-06 09:00 | Зорькин В | 0.25h | 0.25h |
| 2146 | 10.45.2.3 | контроль |  | 15min | 2026-04-15 09:00 A | 2026-04-15 09:15 A | 2145 | 100% |  |  | start no earlier than 2026-04-15 09:00 | Зорькин В | 0.25h | 0.25h |
| 2147 | 10.46 | проверить наличие лент в ЗИП перед утилизаций б/у |  | 2h | 2026-03-31 09:00 A | 2026-03-31 11:00 A |  | 100% |  |  | start no earlier than 2026-03-31 08:00 | Зорькин В | 2h | 2h |
| 2148 | 10.47 | соединители лент траснспортеры линий - проверить остаток |  | 30min | 2026-08-31 09:00 | 2026-08-31 09:30 |  |  |  | 137.53d | start no earlier than 2026-08-31 09:00 | Зорькин В | 0.5h |  |
| 2149 | 10.48 | **освободить место на син склад / перенос в новый контейнер** |  | 1.5d | 2026-03-30 08:00 A | 2026-03-31 13:00 A |  | 100% |  |  |  |  | 38h | 38h |
| 2150 | 10.48.1 | перенести метал, норию в контейнер с синего склада |  | 4h | 2026-03-30 09:00 A | 2026-03-30 13:00 A |  | 100% |  |  | start no earlier than 2026-03-30 09:00 | Бобренок В; Некрасов А; Тимофеев В | 12h | 12h |
| 2151 | 10.48.2 | сборка стеллаж хранения металла |  | 4h | 2026-03-30 08:00 A | 2026-03-30 13:00 A |  | 100% |  |  | start no earlier than 2026-03-30 08:00 | Некрасов А; Труфанов А; Тимофеев В | 10h | 10h |
| 2152 | 10.48.3 | монтаж стеллаж хранения металла |  | 4h | 2026-03-31 09:00 A | 2026-03-31 13:00 A |  | 100% |  |  | start no earlier than 2026-03-31 09:00 | Некрасов А; Труфанов А | 8h | 8h |
| 2153 | 10.48.4 | загрузка мусор в трактор дерево, отход |  | 4h | 2026-03-31 09:00 A | 2026-03-31 13:00 A |  | 100% |  |  | start no earlier than 2026-03-31 08:00 | Некрасов А; Труфанов А | 8h | 8h |
| 2154 | 10.49 | заточка ножей 2ц орг |  | 30min | 2026-03-25 09:00 A | 2026-03-25 09:30 A |  | 100% |  |  | start no earlier than 2026-03-25 08:00 | Зорькин В | 0.5h | 0.5h |
| 2155 | 10.50 | ремонт водонагреватель орг |  | 1h | 2026-03-23 09:00 A | 2026-03-23 10:00 A |  | 100% |  |  | start no earlier than 2026-03-23 09:00 | Шуранов Ю | 1h | 1h |
| 2156 | 10.51 | ремонт парогенератор орг |  | 1h | 2026-03-23 09:00 A | 2026-03-23 10:00 A |  | 100% |  |  | start no earlier than 2026-03-23 09:00 | Шуранов Ю | 1h | 1h |
| 2157 | 10.52 | **стеллаж для организации хранения металла** |  | 11.5d | 2026-03-23 09:00 A | 2026-04-07 13:00 A |  | 100% |  |  |  |  | 84h | 84h |
| 2158 | 10.52.1 | составить эскиз / расчет заявка металл |  | 4h | 2026-03-23 09:00 A | 2026-03-23 13:00 A |  | 100% |  |  | start no earlier than 2026-03-23 09:00 | Зорькин В | 4h | 4h |
| 2159 | 10.52.2 | доставка |  | 10d | 2026-03-23 14:00 A | 2026-04-06 13:00 A | 2158 | 100% |  |  | start no earlier than 2026-03-20 08:00 | Карабанов | 80h | 80h |
| 2160 | 10.52.3 | сборка |  | 2d | 2026-04-03 14:00 A | 2026-04-07 13:00 A | 2159 | 100% |  |  | start no earlier than 2026-03-20 08:00 |  |  |  |
| 2161 | 10.53 | установить крыльчатку мотор-редуктор смесителя / перенос в контейнер |  | 30min | 2026-08-31 09:00 A | 2026-08-31 09:30 A |  | 100% |  |  | start no earlier than 2026-09-02 09:00 | Тимофеев В | 0.5h | 0.5h |
| 2162 | 10.54 | **изготовить ножевой узел для 2ц** |  | 10.02d | 2026-03-17 09:00 A | 2026-03-31 09:10 A |  | 100% |  |  |  |  | 80.33h | 80.33h |
| 2163 | 10.54.1 | получить счет |  | 10min | 2026-03-17 09:00 A | 2026-03-17 09:10 A |  | 100% |  |  | start no earlier than 2026-03-17 08:00 | Домоводов К | 0.17h | 0.17h |
| 2164 | 10.54.2 | изготовление |  | 10d | 2026-03-17 09:10 A | 2026-03-31 09:10 A | 2163 | 100% |  |  | start no earlier than 2026-03-17 08:00 | Фрезер ЧПУ | 80h | 80h |
| 2165 | 10.54.3 | контроль |  | 5min | 2026-03-28 09:10 A | 2026-03-30 09:05 A | 2164FS+1d | 100% |  |  | start no earlier than 2026-03-17 08:00 | Зорькин В | 0.08h | 0.08h |
| 2166 | 10.54.4 | орг доставка |  | 5min | 2026-03-28 09:15 A | 2026-03-30 09:05 A | 2165 | 100% |  |  | start no earlier than 2026-03-17 08:00 | Зорькин В | 0.08h | 0.08h |
| 2167 | 10.55 | сгоревшие двигатели унести в контенер в коробку |  | 1h | 2026-03-15 09:00 A | 2026-03-16 10:00 A |  | 100% |  |  | start no earlier than 2026-03-15 09:00 | Бобренок В | 1h | 1h |
| 2168 | 10.56 | ремонт головы насоса нгш57 гидродлизат 2шт |  | 2h | 2026-03-16 09:00 A | 2026-03-16 11:00 A |  | 100% |  |  | start no earlier than 2026-03-16 09:00 | Труфанов А | 2h | 2h |
| 2169 | 10.57 | изготовить ножевой узел для 2ц | milestone | 0d | 2026-03-16 09:00 A | 2026-03-16 09:00 A |  | 100% |  |  | start no earlier than 2026-03-16 09:00 | Домоводов К |  |  |
| 2170 | 10.58 | по всем цехам обход, проверка обратный клпан бойлеры / настройка температуры . Составить список под замену |  | 2h | 2026-09-01 09:00 | 2026-09-01 11:00 |  |  |  | 136.34d | start no earlier than 2026-09-01 09:00 | Дедов В | 2h |  |

| ID | WBS | Task | Type | Duration | Start | Finish | Predecessors | Complete | Remaining | Total slack | Free slack | Constraint | Resources | Work | Actual work |
| --- | --- | --- | --- | --- | --- | --- | --- | --- | --- | --- | --- | --- | --- | --- | --- |
| 2171 | 10.59 | **ремонт датчик расхода пара с линия 3** |  | 25.11d | 2026-09-01 09:00 | 2026-10-06 09:55 |  |  |  | 111.48d |  |  |  | 0.92h |  |
| 2172 | 10.59.1 | заявка взип |  | 15min | 2026-09-01 09:00 | 2026-09-01 09:15 |  |  |  | 111.48d | 0d | start no earlier than 2026-09-01 09:00 | Шуранов Ю | 0.25h |  |
| 2173 | 10.59.2 | орг отправить в ремонт |  | 20min | 2026-09-01 09:15 | 2026-09-01 09:35 | 2172 |  |  | 111.48d | 0d | start no earlier than 2026-03-12 08:00 | Шуранов Ю | 0.33h |  |
| 2174 | 10.59.3 | контроль | milestone | 0d | 2026-09-29 09:35 | 2026-09-29 09:35 | 2173FS+20d |  |  | 111.48d | 0d | start no earlier than 2026-04-17 09:00 | Шуранов Ю |  |  |
| 2175 | 10.59.4 | орг забрать сремонта |  | 20min | 2026-10-06 09:35 | 2026-10-06 09:55 | 2174FS+5d |  |  | 111.48d |  | start no earlier than 2026-03-12 08:00 | Шуранов Ю | 0.33h |  |
| 2176 | 10.60 | реставрация вал с охладителя. Полполнить расход ЗИП |  | 1h | 2026-09-01 09:00 | 2026-09-01 10:00 |  |  |  | 136.47d |  | start no earlier than 2026-09-01 09:00 | Шуранов Ю | 1h |  |
| 2177 | 10.61 | ремонт датчик наличия сырья / собрать из 2х один |  | 3h | 2026-09-01 09:00 | 2026-09-01 12:00 |  |  |  | 136.22d |  | start no earlier than 2026-09-01 09:00 | Дедов В | 3h |  |
| 2178 | 10.62 | **ремонт бойлер с 5ц гардероб** |  | 7.04d | 2026-03-13 09:00 A | 2026-03-24 09:20 |  | 57% | 3.02d | 251.55d |  |  |  | 0.58h | 0.33h |
| 2179 | 10.62.1 | орг отправить в ремонт |  | 15min | 2026-03-13 09:00 A | 2026-03-13 09:15 A |  | 100% |  |  |  | start no earlier than 2026-03-13 09:00 | Шуранов Ю | 0.25h | 0.25h |
| 2180 | 10.62.2 | контроль доставка / оплата |  | 5min | 2026-03-23 09:00 A | 2026-03-23 09:05 A | 2179FS+5d | 100% |  |  |  | start no earlier than 2026-03-23 09:00 | Шуранов Ю | 0.08h | 0.08h |
| 2181 | 10.62.3 | орг доставка |  | 15min | 2026-03-24 09:05 | 2026-03-24 09:20 | 2180FS+1d |  |  | 251.55d |  | start no earlier than 2026-03-12 08:00 | Шуранов Ю | 0.25h |  |
| 2182 | 10.63 | диагностика двигателей и редукторов в слесарке. Подробности Шуранов по тлф |  | 2h | 2026-09-01 09:00 A | 2026-09-01 11:00 A |  | 100% |  |  |  | start no earlier than 2026-09-02 09:00 | Бундин В | 2h | 2h |
| 2183 | 10.64 | которые в коробке с них снять крыльчатки |  | 2h | 2026-09-01 09:00 A | 2026-09-01 11:00 A | 2182 | 100% |  |  |  | start no earlier than 2026-03-06 08:00 | Бундин В | 2h | 2h |
| 2184 | 10.65 | ножевой узел 2ц заменаить подшипники. У мастера |  | 1h | 2026-03-04 08:00 A | 2026-03-04 10:00 A |  | 100% |  |  |  | start no earlier than 2026-03-04 08:00 | Дедов В | 1h | 1h |
| 2185 | 10.66 | **ремонт электродов ПГ в ЗИП** |  | 2.75d | 2026-03-08 09:00 A | 2026-03-11 16:00 A |  | 100% |  |  |  |  |  | 12h | 12h |
| 2186 | 10.66.1 | 2шт - шт |  | 6h | 2026-03-08 09:00 A | 2026-03-09 16:00 A |  | 100% |  |  |  | start no earlier than 2026-03-08 09:00 | Макаревич А | 6h | 6h |
| 2187 | 10.66.2 | 1шт = 2ц |  | 6h | 2026-03-11 09:00 A | 2026-03-11 16:00 A |  | 100% |  |  |  | start no earlier than 2026-03-11 09:00 | Макаревич А | 6h | 6h |
| 2188 | 10.67 | промер изношенных шнеков, подготовить таблицу и инструкцию для делегировать |  | 1h | 2026-03-03 09:00 A | 2026-03-03 10:00 A |  | 100% |  |  |  | start no earlier than 2026-03-03 09:00 | Зорькин В | 1h | 1h |
| 2189 | 10.68 | заказ нутромер утерянные детали |  | 30min | 2026-03-06 09:00 A | 2026-03-06 09:30 A |  | 100% |  |  |  | start no earlier than 2026-03-06 09:00 | Зорькин В | 0.5h | 0.5h |
| 2190 | 10.69 | **стопорнное кольцо для валов шнеков** |  | 0.09d | 2026-03-02 09:00 A | 2026-03-02 09:45 A |  | 100% |  |  |  |  |  | 0.75h | 0.75h |
| 2191 | 10.69.1 | заявка снабжение |  | 15min | 2026-03-02 09:00 A | 2026-03-02 09:15 A |  | 100% |  |  |  | start no earlier than 2026-03-02 09:00 | Зорькин В | 0.25h | 0.25h |
| 2192 | 10.69.2 | заявка токарь |  | 15min | 2026-03-02 09:15 A | 2026-03-02 09:30 A | 2191 | 100% |  |  |  | start no earlier than 2026-02-27 08:00 | Зорькин В | 0.25h | 0.25h |
| 2193 | 10.69.3 | заявка кита |  | 15min | 2026-03-02 09:30 A | 2026-03-02 09:45 A | 2192 | 100% |  |  |  | start no earlier than 2026-02-27 08:00 | Зорькин В | 0.25h | 0.25h |
| 2194 | 10.70 | **быстрая замена шнеков - кондуктор для хранения и перемещения подготвленного ствола** |  | 3.25d | 2026-09-07 09:00 | 2026-09-10 11:00 |  |  |  | 129.34d |  |  |  | 20h |  |
| 2195 | 10.70.1 | проект кондуктора и траверсы перемещения ствола штабелером |  | 2h | 2026-09-07 09:00 | 2026-09-07 11:00 |  |  |  | 129.34d | 0d | start no earlier than 2026-09-07 09:00 | Тимофеев В; Бундин В | 4h |  |
| 2196 | 10.70.2 | сборка |  | 2d | 2026-09-08 11:00 | 2026-09-10 11:00 | 2195FS+1d |  |  | 129.34d |  | start no earlier than 2026-04-16 09:00 | Бобренок В | 16h |  |
| 2197 | 10.71 | редуктор печи №7 установить подшипник 30207 |  | 2h | 2026-09-01 09:00 | 2026-09-01 11:00 |  |  |  | 136.34d |  | start no earlier than 2026-09-01 09:00 | Дедов В | 2h |  |

| ID | WBS | Task | Duration | Start | Finish | Predecessors | Complete | Remaining | Total slack | Free slack | Constraint | Resources | Work | Actual work |
| --- | --- | --- | --- | --- | --- | --- | --- | --- | --- | --- | --- | --- | --- | --- |
| 2198 | 10.72 | **заявка шкив на вал прекондиционер + разрезная вставка + спец шпильки** | 0.12d | 2025-08-04 09:00 | 2025-08-04 10:00 |  |  |  | 417.47d |  |  |  | 1h |  |
| 2199 | 10.72.1 | подбор шкив / заявка | 1h | 2025-08-04 09:00 | 2025-08-04 10:00 |  |  |  | 417.47d |  | start no earlier than 2025-08-04 09:00 | Зорькин В | 1h |  |
| 2200 | 10.73 | **ремонт вал прекондиционер** | 12.02d | 2025-07-31 09:00 A | 2025-08-18 09:10 |  | 86% | 1.72d | 407.57d |  |  |  | 1.17h | 1h |
| 2201 | 10.73.1 | подготовить к отправке очистить | 1h | 2025-07-31 09:00 A | 2025-07-31 10:00 A |  | 100% |  |  |  | start no earlier than 2025-07-31 09:00 | Пинчук А | 1h | 1h |
| 2202 | 10.73.2 | орг курьера / отправить | 5min | 2025-08-04 09:00 | 2025-08-04 09:05 | 2201 |  |  | 407.57d | 0d | start no earlier than 2025-08-04 09:00 | Зорькин В | 0.08h |  |
| 2203 | 10.73.3 | контроль / забрать | 5min | 2025-08-18 09:05 | 2025-08-18 09:10 | 2202FS+10d |  |  | 407.57d |  | start no earlier than 2025-07-31 09:00 | Зорькин В | 0.08h |  |
| 2204 | 10.74 | **ремонт вал в барабана жир 2л** | 152.01d | 2025-08-04 09:00 A | 2026-03-04 09:05 |  | 50% | 76.01d | 265.58d |  |  |  | 0.17h | 0.08h |
| 2205 | 10.74.1 | отправить на ремонт | 5min | 2025-08-04 09:00 | 2025-08-04 09:05 |  |  |  | 417.58d |  | start no earlier than 2025-08-04 09:00 | Зорькин В | 0.08h |  |
| 2206 | 10.74.2 | контроль забрать | 5min | 2026-03-04 09:00 A | 2026-03-04 09:05 A | 2205FS+10d | 100% |  |  |  | start no earlier than 2026-03-04 09:00 | Зорькин В | 0.08h | 0.08h |
| 2207 | 10.75 | **заявка эл мотор шибера в ЗИП** | 0.01d | 2025-02-19 09:00 | 2025-02-19 09:05 |  |  |  | 535.58d |  |  |  | 0.08h |  |
| 2208 | 10.75.1 | контроль | 5min | 2025-02-19 09:00 | 2025-02-19 09:05 |  |  |  | 535.58d |  | start no earlier than 2025-02-19 09:00 | Шуранов Ю | 0.08h |  |
| 2209 | 10.76 | составить таблицу ЗИП наличия редукторов / где используется | 4h | 2025-02-21 09:00 | 2025-02-21 13:00 |  |  |  | 533.09d |  | start no earlier than 2025-02-21 09:00 | Тимофеев В; Шуранов Ю | 8h |  |
| 2210 | 10.77 | составить таблицу соответсвия номеров подшипников - где используется | 4h | 2025-02-21 09:00 | 2025-02-21 13:00 |  |  |  | 533.09d |  | start no earlier than 2025-02-21 09:00 | Тимофеев В; Шуранов Ю | 8h |  |
| 2211 | 10.78 | ремонт болгарки замена кнопки | 1h | 2024-10-21 09:00 A | 2024-10-21 10:00 A |  | 100% |  |  |  | start no earlier than 2024-10-21 09:00 | Зорькин В | 1h | 1h |
| 2212 | 10.79 | сборка редуктор LT70 замена пружинные шайбы | 1d? | 2024-09-29 09:00 A | 2024-09-30 18:00 A |  | 100% |  |  |  | start no earlier than 2024-09-29 09:00 | Макаревич А | 8h | 8h |
| 2213 | 10.80 | **прорверить наличие остатков** | 0.01d | 2024-09-25 08:00 A | 2024-09-25 09:05 A |  | 100% |  |  |  |  |  | 2h | 2h |
| 2214 | 10.80.1 | Манжет (армированная 2,2-75*100*10 ГОСТ 8752-79) | 5min | 2024-09-25 08:00 A | 2024-09-25 09:05 A |  | 100% |  |  |  | start no earlier than 2024-09-25 08:00 | Дедов В | 0.08h | 0.08h |
| 2215 | 10.80.2 | Манжет (армированная 1,2-80*105*10) | 5min | 2024-09-25 08:00 A | 2024-09-25 09:05 A |  | 100% |  |  |  | start no earlier than 2024-09-25 08:00 | Дедов В | 0.08h | 0.08h |
| 2216 | 10.80.3 | Манжет (армированная 2,2-80*105*10 ГОСТ 8752-79) | 5min | 2024-09-25 08:00 A | 2024-09-25 09:05 A |  | 100% |  |  |  | start no earlier than 2024-09-25 08:00 | Дедов В | 0.08h | 0.08h |
| 2217 | 10.80.4 | Манжет (армированная 2,2-55*80*10 ГОСТ 8752-79) | 5min | 2024-09-25 08:00 A | 2024-09-25 09:05 A |  | 100% |  |  |  | start no earlier than 2024-09-25 08:00 | Дедов В | 0.08h | 0.08h |
| 2218 | 10.80.5 | Масло (Для швейных машин) | 0.01d | 2024-09-25 08:00 A | 2024-09-25 09:05 A |  | 100% |  |  |  | start no earlier than 2024-09-25 08:00 | Дедов В | 0.08h | 0.08h |
| 2219 | 10.80.6 | Наконечник (ТМЛ 16-10-6 медный луженый) | 0.01d | 2024-09-25 08:00 A | 2024-09-25 09:05 A |  | 100% |  |  |  | start no earlier than 2024-09-25 08:00 | Дедов В | 0.08h | 0.08h |
| 2220 | 10.80.7 | Наконечник (ТМЛ 10-8-5 медный луженый) | 0.01d | 2024-09-25 08:00 A | 2024-09-25 09:05 A |  | 100% |  |  |  | start no earlier than 2024-09-25 08:00 | Дедов В | 0.08h | 0.08h |
| 2221 | 10.80.8 | Подшипник (56006-2RS (180106)SKF (30*5*10)) | 0.01d | 2024-09-25 08:00 A | 2024-09-25 09:05 A |  | 100% |  |  |  | start no earlier than 2024-09-25 08:00 | Дедов В | 0.08h | 0.08h |
| 2222 | 10.80.9 | Подшипник (51410/ART) | 0.01d | 2024-09-25 08:00 A | 2024-09-25 09:05 A |  | 100% |  |  |  | start no earlier than 2024-09-25 08:00 | Дедов В | 0.08h | 0.08h |
| 2223 | 10.80.10 | Подшипник (UCF 208 (40)) | 0.01d | 2024-09-25 08:00 A | 2024-09-25 09:05 A |  | 100% |  |  |  | start no earlier than 2024-09-25 08:00 | Дедов В | 0.08h | 0.08h |
| 2224 | 10.80.11 | Подшипник (6203.LLU/2ASU1/NTN) | 0.01d | 2024-09-25 08:00 A | 2024-09-25 09:05 A |  | 100% |  |  |  | start no earlier than 2024-09-25 08:00 | Дедов В | 0.08h | 0.08h |
| 2225 | 10.80.12 | Подшипник (22212(53512) SKF (60*110*28)) | 0.01d | 2024-09-25 08:00 A | 2024-09-25 09:05 A |  | 100% |  |  |  | start no earlier than 2024-09-25 08:00 | Дедов В | 0.08h | 0.08h |
| 2226 | 10.80.13 | Подшипник (UC 204 (480204) (20х47х17/31)) | 0.01d | 2024-09-25 08:00 A | 2024-09-25 09:05 A |  | 100% |  |  |  | start no earlier than 2024-09-25 08:00 | Дедов В | 0.08h | 0.08h |
| 2227 | 10.80.14 | Подшипник (6906-2RS (30*47*9)) | 0.01d | 2024-09-25 08:00 A | 2024-09-25 09:05 A |  | 100% |  |  |  | start no earlier than 2024-09-25 08:00 | Дедов В | 0.08h | 0.08h |
| 2228 | 10.80.15 | Подшипник (6003-2RS (180103) (17*35*10)) | 0.01d | 2024-09-25 08:00 A | 2024-09-25 09:05 A |  | 100% |  |  |  | start no earlier than 2024-09-25 08:00 | Дедов В | 0.08h | 0.08h |
| 2229 | 10.80.16 | Подшипник (6203-2RS (180203) (17*40*12)) | 0.01d | 2024-09-25 08:00 A | 2024-09-25 09:05 A |  | 100% |  |  |  | start no earlier than 2024-09-25 08:00 | Дедов В | 0.08h | 0.08h |
| 2230 | 10.80.17 | Подшипник (6002 2RS, SKF (180102, 15*32*9)) | 0.01d | 2024-09-25 08:00 A | 2024-09-25 09:05 A |  | 100% |  |  |  | start no earlier than 2024-09-25 08:00 | Дедов В | 0.08h | 0.08h |
| 2231 | 10.80.18 | Провод ПЩ-4 | 0.01d | 2024-09-25 08:00 A | 2024-09-25 09:05 A |  | 100% |  |  |  | start no earlier than 2024-09-25 08:00 | Дедов В | 0.08h | 0.08h |
| 2232 | 10.80.19 | Ремень клиновый А-1400 | 0.01d | 2024-09-25 08:00 A | 2024-09-25 09:05 A |  | 100% |  |  |  | start no earlier than 2024-09-25 08:00 | Дедов В | 0.08h | 0.08h |
| 2233 | 10.80.20 | Ремень клиновый В (Б)-1320 | 0.01d | 2024-09-25 08:00 A | 2024-09-25 09:05 A |  | 100% |  |  |  | start no earlier than 2024-09-25 08:00 | Дедов В | 0.08h | 0.08h |
| 2234 | 10.80.21 | Реле (тепловое РТИ-3353 23-32А) | 0.01d | 2024-09-25 08:00 A | 2024-09-25 09:05 A |  | 100% |  |  |  | start no earlier than 2024-09-25 08:00 | Дедов В | 0.08h | 0.08h |
| 2235 | 10.80.22 | Шланг (для дозирующих насосов черного цвета 6,4х9,6 мм) | 0.01d | 2024-09-25 08:00 A | 2024-09-25 09:05 A |  | 100% |  |  |  | start no earlier than 2024-09-25 08:00 | Дедов В | 0.08h | 0.08h |
| 2236 | 10.80.23 | Труба гофрированная (ПВХ 25мм с протяжкой легкая серая) | 0.01d | 2024-09-25 08:00 A | 2024-09-25 09:05 A |  | 100% |  |  |  | start no earlier than 2024-09-25 08:00 | Дедов В | 0.08h | 0.08h |
| 2237 | 10.80.24 | Шпонка призматическая (DIN 6885 A 18х11х 90мм) | 0.01d | 2024-09-25 08:00 A | 2024-09-25 09:05 A |  | 100% |  |  |  | start no earlier than 2024-09-25 08:00 | Дедов В | 0.08h | 0.08h |

| ID | WBS | Task | Duration | Start | Finish | Predecessors | Complete | Remaining | Total slack | Free slack | Constraint | Resources | Work | Actual work |
| --- | --- | --- | --- | --- | --- | --- | --- | --- | --- | --- | --- | --- | --- | --- |
| 2238 | 10.81 | **прорверить остатки подшипников** | 0.01d | 2024-09-10 08:00 A | 2024-09-10 09:05 A |  | 100% |  |  |  |  |  | 1.17h | 1.17h |
| 2239 | 10.81.1 | 180101АС17/6 ГПЗ | 5min | 2024-09-10 08:00 A | 2024-09-10 09:05 A |  | 100% |  |  |  | start no earlier than 2024-09-10 08:00 | Дедов В | 0.08h | 0.08h |
| 2240 | 10.81.2 | 180202 (6202 2RS) (15*35*11) SKF | 0.01d | 2024-09-10 08:00 A | 2024-09-10 09:05 A |  | 100% |  |  |  | start no earlier than 2024-09-10 08:00 | Дедов В | 0.08h | 0.08h |
| 2241 | 10.81.3 | 180206 (6206 2RS) (30*62*16) HIKI | 0.01d | 2024-09-10 08:00 A | 2024-09-10 09:05 A |  | 100% |  |  |  | start no earlier than 2024-09-10 08:00 | Дедов В | 0.08h | 0.08h |
| 2242 | 10.81.4 | 22212.EAW33C3 / SNR | 0.01d | 2024-09-10 08:00 A | 2024-09-10 09:05 A |  | 100% |  |  |  | start no earlier than 2024-09-10 08:00 | Дедов В | 0.08h | 0.08h |
| 2243 | 10.81.5 | 51407/NEUTR | 0.01d | 2024-09-10 08:00 A | 2024-09-10 09:05 A |  | 100% |  |  |  | start no earlier than 2024-09-10 08:00 | Дедов В | 0.08h | 0.08h |
| 2244 | 10.81.6 | 6001 ZZ.CM | 0.01d | 2024-09-10 08:00 A | 2024-09-10 09:05 A |  | 100% |  |  |  | start no earlier than 2024-09-10 08:00 | Дедов В | 0.08h | 0.08h |
| 2245 | 10.81.7 | 6201.VVC3/ITJ | 0.01d | 2024-09-10 08:00 A | 2024-09-10 09:05 A |  | 100% |  |  |  | start no earlier than 2024-09-10 08:00 | Дедов В | 0.08h | 0.08h |
| 2246 | 10.81.8 | 6205LLU (NTN) | 0.01d | 2024-09-10 08:00 A | 2024-09-10 09:05 A |  | 100% |  |  |  | start no earlier than 2024-09-10 08:00 | Дедов В | 0.08h | 0.08h |
| 2247 | 10.81.9 | 6206. VVC3/ITJ | 0.01d | 2024-09-10 08:00 A | 2024-09-10 09:05 A |  | 100% |  |  |  | start no earlier than 2024-09-10 08:00 | Дедов В | 0.08h | 0.08h |
| 2248 | 10.81.10 | 686-2RS/ART | 0.01d | 2024-09-10 08:00 A | 2024-09-10 09:05 A |  | 100% |  |  |  | start no earlier than 2024-09-10 08:00 | Дедов В | 0.08h | 0.08h |
| 2249 | 10.81.11 | 7512 (32212)(60*110*24) | 0.01d | 2024-09-10 08:00 A | 2024-09-10 09:05 A |  | 100% |  |  |  | start no earlier than 2024-09-10 08:00 | Дедов В | 0.08h | 0.08h |
| 2250 | 10.81.12 | HK1210/NEUTR | 0.01d | 2024-09-10 08:00 A | 2024-09-10 09:05 A |  | 100% |  |  |  | start no earlier than 2024-09-10 08:00 | Дедов В | 0.08h | 0.08h |
| 2251 | 10.81.13 | UC 205 Neutr | 0.01d | 2024-09-10 08:00 A | 2024-09-10 09:05 A |  | 100% |  |  |  | start no earlier than 2024-09-10 08:00 | Дедов В | 0.08h | 0.08h |
| 2252 | 10.81.14 | UCFC 210 ASAHI | 0.01d | 2024-09-10 08:00 A | 2024-09-10 09:05 A |  | 100% |  |  |  | start no earlier than 2024-09-10 08:00 | Дедов В | 0.08h | 0.08h |
| 2253 | 10.82 | **создать реестр документации на оборудование** | 2d? | 2024-09-10 09:00 | 2024-09-11 18:00 |  |  |  | 649.59d |  |  |  | 8h |  |
| 2254 | 10.82.1 | опись документации в наличии, сортировка | 1d? | 2024-09-10 09:00 | 2024-09-10 18:00 |  |  |  | 649.59d | 0d | start no earlier than 2024-09-10 09:00 | Зорькин В | 8h |  |
| 2255 | 10.82.2 | оформление реестра наличия документации | 1d? | 2024-09-11 09:00 | 2024-09-11 18:00 | 2254 |  |  | 649.59d |  | start no earlier than 2024-09-06 08:00 |  |  |  |
| 2256 | 10.83 | **ремонт двигатель с шлюз питатель** | 0.02d | 2024-08-09 09:00 | 2024-08-09 09:10 |  |  |  | 673.57d |  |  |  | 0.17h |  |
| 2257 | 10.83.1 | контроль / орг курьер - | 10min | 2024-08-09 09:00 | 2024-08-09 09:10 |  |  |  | 673.57d |  | start no earlier than 2024-08-09 09:00 | Шуранов Ю | 0.17h |  |
| 2258 | 10.84 | **организовать хранение зап. частей для производства в одном месте, создать склад и нести полную материальную ответственность** | 18d? | 2024-05-09 09:00 A | 2024-06-03 18:00 |  | 15% | 15.3d? | 721.59d |  |  |  | 272h | 24h |
| 2259 | 10.84.1 | монтаж забор / ворота | 3d | 2024-05-09 09:00 A | 2024-05-13 18:00 A |  | 100% |  |  |  | start no earlier than 2024-05-09 09:00 | Макаревич А | 24h | 24h |
| 2260 | 10.84.2 | монтаж ворота, забор | 1d? | 2024-05-14 09:00 | 2024-05-14 18:00 | 2259 |  |  | 721.59d | 0d | start no earlier than 2024-05-13 09:00 | Некрасов А; Черепанов И | 16h |  |
| 2261 | 10.84.3 | подготови доски для стеллажей на 3 складе | 1d? | 2024-05-20 09:00 | 2024-05-20 18:00 |  |  |  | 731.59d |  | start no earlier than 2024-05-18 09:00 | КИнжекул | 8h |  |
| 2262 | 10.84.4 | переместить стеллажи на 2 этаж ГП + сборка | 1d? | 2024-05-15 09:00 | 2024-05-15 18:00 | 2260 |  |  | 728.59d | 7d | start no earlier than 2024-05-08 08:00 | Некрасов А; Черепанов И | 16h |  |
| 2263 | 10.84.5 | составить список всех позиций за забором для учета | 2d | 2024-05-15 09:00 | 2024-05-16 18:00 | 2260 |  |  | 721.59d | 0d | start no earlier than 2024-05-14 09:00 | Шуранов Ю | 16h |  |
| 2264 | 10.84.6 | состаить список ЗИП склад 3 цех | 2d | 2024-05-17 09:00 | 2024-05-20 18:00 | 2263 |  |  | 721.59d | 0d | start no earlier than 2024-05-08 09:00 | Шуранов Ю | 16h |  |
| 2265 | 10.84.7 | состаить список ЗИП склад слесарное помещение | 2d | 2024-05-21 09:00 | 2024-05-22 18:00 | 2264 |  |  | 721.59d | 0d | start no earlier than 2024-05-14 09:00 | Шуранов Ю | 16h |  |
| 2266 | 10.84.8 | составить список ЗИП Контейнер | 2d | 2024-05-23 09:00 | 2024-05-24 18:00 | 2265 |  |  | 721.59d | 0d | start no earlier than 2024-05-14 09:00 | Шуранов Ю | 16h |  |
| 2267 | 10.84.9 | перемещение ЗИП с 3 цеха на 2 этаж ГП | 2d | 2024-05-27 09:00 | 2024-05-28 18:00 | 2262, 2266 |  |  | 721.59d | 0d | start no earlier than 2024-05-14 09:00 | Шуранов Ю; Некрасов А; Черепанов И | 48h |  |
| 2268 | 10.84.10 | перемещение ЗИП с контейнера на 2 этаж ГП | 2d | 2024-05-29 09:00 | 2024-05-30 18:00 | 2267 |  |  | 721.59d | 0d | start no earlier than 2024-05-14 09:00 | Шуранов Ю; Некрасов А; Черепанов И | 48h |  |
| 2269 | 10.84.11 | перемещение ЗИП с слесарного помещения на 2 этаж ГП | 2d | 2024-05-31 09:00 | 2024-06-03 18:00 | 2268 |  |  | 721.59d |  | start no earlier than 2024-05-14 09:00 | Шуранов Ю; Некрасов А; Черепанов И | 48h |  |

| ID | WBS | Task | Duration | Start | Finish | Predecessors | Complete | Remaining | Actual start | Total slack | Free slack | Constraint | Resources | Work | Actual work |
| --- | --- | --- | --- | --- | --- | --- | --- | --- | --- | --- | --- | --- | --- | --- | --- |
| 2270 | 10.85 | **клапан эл магнитный для парогенератора на подачу воды** | 0.06d | 2025-01-16 09:00 | 2025-01-16 09:30 |  |  |  |  | 559.53d |  |  |  | 0.5h |  |
| 2271 | 10.85.1 | контролль остатков, заявка на катушку | 30min | 2025-01-16 09:00 | 2025-01-16 09:30 |  |  |  |  | 559.53d |  | start no earlier than 2025-01-16 09:00 | Шуранов Ю | 0.5h |  |
| 2272 | 10.86 | **вал с конвейера №1 разместить на ремонт** | 15.06d | 2024-05-14 09:00 | 2024-06-04 09:30 |  |  |  |  | 721.53d |  |  |  | 120.5h |  |
| 2273 | 10.86.1 | орг курьера | 15min | 2024-05-14 09:00 | 2024-05-14 09:15 |  |  |  |  | 721.53d | 0d | start no earlier than 2024-05-14 09:00 | Шуранов Ю | 0.25h |  |
| 2274 | 10.86.2 | ремонт | 15d | 2024-05-14 09:15 | 2024-06-04 09:15 | 2273 |  |  |  | 721.53d | 0d | start no earlier than 2024-05-08 08:00 | Подрядчик | 120h |  |
| 2275 | 10.86.3 | контроль, орг курьера забрать | 15min | 2024-06-04 09:15 | 2024-06-04 09:30 | 2274 |  |  |  | 721.53d |  | start no earlier than 2024-05-14 09:00 | Шуранов Ю | 0.25h |  |
| 2276 | 10.87 | подшипник LMK20.UU/FBJ или NEUTR - 4шт ТЕКО после замены | 10min | 2024-05-14 09:00 | 2024-05-14 09:10 |  |  |  |  | 736.57d |  | start no earlier than 2024-05-14 09:00 | Шуранов Ю | 0.17h |  |
| 2277 | 10.88 | UC204 подшипники | 10min | 2024-05-14 09:00 | 2024-05-14 09:10 |  |  |  |  | 736.57d |  | start no earlier than 2024-05-14 09:00 | Шуранов Ю | 0.17h |  |
| 2278 | 10.89 | сетка на дробилку 37квт 5 цех 0,5мм и 0,7 мм - заявка ЕВРОМЕД | 1h | 2024-05-14 09:00 | 2024-05-14 10:00 |  |  |  |  | 736.47d |  | start no earlier than 2024-05-14 09:00 | Шуранов Ю | 1h |  |
| 2279 | 11 | **ЗИП заказ (заявки)** | 1.02d | 2026-09-04 09:00 A | 2026-09-07 09:10 |  | 43% | 0.58d |  | 132.57d |  |  |  | 0.58h | 0.25h |
| 2280 | 11.1 | контактор для тельфера 5ц 24 переменка | 15min | 2026-09-04 09:00 A | 2026-09-04 09:15 A |  | 100% |  |  |  |  | start no earlier than 2026-09-04 09:00 | Зорькин В | 0.25h | 0.25h |
| 2281 | 11.2 | Наконечники штырьевые для сборки схем (получить инфу у Тимофеева) | 10min | 2026-09-07 09:00 | 2026-09-07 09:10 |  |  |  |  | 132.57d |  | start no earlier than 2026-09-07 09:00 | Зорькин В | 0.17h |  |
| 2282 | 11.3 | Газ в слесарку, закончился | 10min | 2026-09-07 09:00 | 2026-09-07 09:10 |  |  |  |  | 132.57d |  | start no earlier than 2026-09-07 09:00 | Зорькин В | 0.17h |  |
| 2283 | 12 | **ТО** | 914.25d? | 2023-03-10 09:00 A | 2026-09-10 11:00 |  | 35% | 593.26d? |  | 129.34d |  |  |  | 28885.2h | 15566.4h |
| 2284 | 12.1 | **1 цех** | 134.25d? | 2024-04-04 09:00 | 2024-10-09 11:00 |  | 42% | 77.97d? | 2023-12-28 09:00 |  |  |  |  | 5648.25h | 775.53h |
| 2285 | 12.1.1 | ТО ШУ печи №1 (замена кабеля, наконечников…) | 1h | 2026-08-27 09:00 | 2026-08-27 10:00 |  |  |  |  | 139.47d |  | start no earlier than 2026-08-27 09:00 | Тимофеев В | 1h |  |
| 2286 | 12.1.2 | **приточная вентиляция** | 105.12d | 2026-03-04 09:00 A | 2026-07-29 10:00 A |  | 100% |  |  |  |  |  |  | 3h | 3h |
| 2287 | 12.1.2.1 | замена оба фильтра | 1h | 2026-03-04 09:00 A | 2026-03-04 10:00 A |  | 100% |  |  |  |  | start no earlier than 2026-03-04 08:00 | Труфанов А | 1h | 1h |
| 2288 | 12.1.2.2 | замена фильтра | 1h | 2026-04-15 09:00 A | 2026-04-15 10:00 A |  | 100% |  |  |  |  | start no earlier than 2026-04-15 09:00 | Труфанов А | 1h | 1h |
| 2289 | 12.1.2.3 | Замена фильтра | 1h | 2026-07-29 09:00 A | 2026-07-29 10:00 A |  | 100% |  |  |  |  | start no earlier than 2026-07-29 08:00 | Бундин В | 1h | 1h |
| 2290 | 12.1.3 | **техническая вода** | 55.06d | 2026-03-11 09:00 A | 2026-05-27 09:30 A |  | 100% |  |  |  |  |  |  | 1.33h | 1.33h |
| 2291 | 12.1.3.1 | проверка гидроаккумулятора | 10min | 2026-03-11 09:00 A | 2026-03-11 09:10 A |  | 100% |  |  |  |  | start no earlier than 2026-03-11 09:00 | Некрасов А | 0.17h | 0.17h |
| 2292 | 12.1.3.2 | замена фильтров | 10min | 2026-03-11 09:00 A | 2026-03-11 09:10 A |  | 100% |  |  |  |  | start no earlier than 2026-03-11 09:00 | Некрасов А | 0.17h | 0.17h |
| 2293 | 12.1.3.3 | замена фильтров | 30min | 2026-05-27 09:00 A | 2026-05-27 09:30 A |  | 100% |  |  |  |  | start no earlier than 2026-03-11 09:00 | Бундин В | 0.5h | 0.5h |
| 2294 | 12.1.3.4 | замена фильтров | 30min | 2026-03-12 09:00 A | 2026-03-12 09:30 A |  | 100% |  |  |  |  | start no earlier than 2026-03-12 09:00 | Бобренок В | 0.5h | 0.5h |

| ID | WBS | Task | Duration | Start | Finish | Complete | Remaining | Total slack | Constraint | Resources | Work | Actual work |
| --- | --- | --- | --- | --- | --- | --- | --- | --- | --- | --- | --- | --- |
| 2295 | 12.1.4 | **линия 1** | 105.12d? | 2026-03-18 09:00 A | 2026-08-12 10:00 A | 100% |  |  |  |  | 21.5h | 21.5h |
| 2296 | 12.1.4.1 | **питатель экструдера** | 95.04d? | 2026-03-18 09:00 A | 2026-07-29 09:20 A | 100% |  |  |  |  | 10h | 10h |
| 2297 | 12.1.4.1.1 | замена подшипники | 1d? | 2026-04-08 09:00 A | 2026-04-08 18:00 A | 100% |  |  | start no earlier than 2026-04-08 09:00 | Тимофеев В | 8h | 8h |
| 2298 | 12.1.4.1.2 | контроль палстик втулки | 1h | 2026-05-13 09:00 A | 2026-05-13 10:00 A | 100% |  |  | start no earlier than 2026-05-13 09:00 | Бобренок В | 1h | 1h |
| 2299 | 12.1.4.1.3 | контроль шестерен привода, редуктора | 10min | 2026-03-18 09:00 A | 2026-03-18 09:10 A | 100% |  |  | start no earlier than 2026-03-18 09:00 | Труфанов А | 0.17h | 0.17h |
| 2300 | 12.1.4.1.4 | контроль состояние пластик втулки | 30min | 2026-06-02 09:00 A | 2026-06-02 09:30 A | 100% |  |  | start no earlier than 2026-06-02 09:00 | Некрасов А | 0.5h | 0.5h |
| 2301 | 12.1.4.1.5 | Ревизия питателя | 20min | 2026-07-29 09:00 A | 2026-07-29 09:20 A | 100% |  |  | start no earlier than 2026-07-29 08:00 | Бундин В | 0.33h | 0.33h |
| 2302 | 12.1.4.2 | **прекондицинер экструдера** | 55.03d | 2026-05-13 09:00 A | 2026-07-29 09:15 A | 100% |  |  |  |  | 0.5h | 0.5h |
| 2303 | 12.1.4.2.1 | контроль привода, подшипников | 15min | 2026-05-13 09:00 A | 2026-05-13 09:15 A | 100% |  |  | start no earlier than 2026-05-13 09:00 | Бобренок В | 0.25h | 0.25h |
| 2304 | 12.1.4.2.2 | контроль привода, подшипников | 15min | 2026-07-29 09:00 A | 2026-07-29 09:15 A | 100% |  |  | start no earlier than 2026-07-29 08:00 | Труфанов А | 0.25h | 0.25h |
| 2305 | 12.1.4.3 | **парогенератор** | 90.12d | 2026-04-08 09:00 A | 2026-08-12 10:00 A | 100% |  |  |  |  | 11h | 11h |
| 2306 | 12.1.4.3.1 | вскрытие электородов, чистка | 1h | 2026-05-13 09:00 A | 2026-05-13 10:00 A | 100% |  |  | start no earlier than 2026-05-13 09:00 | Бобренок В | 1h | 1h |
| 2307 | 12.1.4.3.2 | замена реле вкл насоса. (не вкл) | 2h | 2026-05-13 09:00 A | 2026-05-13 11:00 A | 100% |  |  | start no earlier than 2026-05-13 09:00 | Бобренок В | 2h | 2h |
| 2308 | 12.1.4.3.3 | замена гофротрубы / закрепить жестко | 2h | 2026-04-08 09:00 A | 2026-04-08 11:00 A | 100% |  |  | start no earlier than 2026-04-08 09:00 | Бобренок В | 2h | 2h |
| 2309 | 12.1.4.3.4 | чистка парогенератора, если нужно замена электродов | 2h | 2026-06-10 09:00 A | 2026-06-10 11:00 A | 100% |  |  | start no earlier than 2026-06-10 09:00 | Дедов В | 2h | 2h |
| 2310 | 12.1.4.3.5 | читска парогенератора, если нужно замена электродов | 2h | 2026-05-20 09:00 A | 2026-05-20 11:00 A | 100% |  |  | start no earlier than 2026-05-20 09:00 | Некрасов А | 2h | 2h |
| 2311 | 12.1.4.3.6 | читска парогенератора, если нужно замена электродов | 1h | 2026-06-02 09:00 A | 2026-06-02 10:00 A | 100% |  |  | start no earlier than 2026-06-02 09:00 | Тимофеев В | 1h | 1h |
| 2312 | 12.1.4.3.7 | вскрытие электородов, чистка | 1h | 2026-08-12 09:00 A | 2026-08-12 10:00 A | 100% |  |  | start no earlier than 2026-08-12 09:00 | Некрасов А | 1h | 1h |
| 2313 | 12.1.5 | **редуктор экструдера и маслянная станция** | 632.12d | 2024-04-04 09:00 A | 2026-09-07 10:00 | 41% | 374.59d | 132.47d |  |  | 37.75h | 17.75h |
| 2314 | 12.1.5.1 | чистка фильтра | 30min | 2026-06-02 09:00 A | 2026-06-02 09:30 A | 100% |  |  | start no earlier than 2026-06-02 09:00 | Тимофеев В | 0.5h | 0.5h |
| 2315 | 12.1.5.2 | муфта редутор-мотор | 15min | 2026-03-11 09:00 A | 2026-03-11 09:15 A | 100% |  |  | start no earlier than 2026-03-11 09:00 | Тимофеев В | 0.25h | 0.25h |
| 2316 | 12.1.5.3 | чистка фильтра | 30min | 2026-07-16 09:00 A | 2026-07-16 09:30 A | 100% |  |  | start no earlier than 2026-07-16 09:00 | Бобренок В | 0.5h | 0.5h |
| 2317 | 12.1.5.4 | тэны и термпоры шнеков- прортяжка | 30min | 2025-02-25 09:00 | 2025-02-25 09:30 |  |  | 531.53d | start no earlier than 2025-02-25 09:00 | Дедов В | 0.5h |  |
| 2318 | 12.1.5.5 | Чистка фильтра | 30min | 2026-07-29 08:00 A | 2026-07-29 09:30 A | 100% |  |  | start no earlier than 2026-07-29 08:00 | Тимофеев В | 0.5h | 0.5h |

| ID | WBS | Task | Duration | Start | Finish | Predecessors | Complete | Remaining | Total slack | Free slack | Constraint | Resources | Work | Actual work |
| --- | --- | --- | --- | --- | --- | --- | --- | --- | --- | --- | --- | --- | --- | --- |
| 2319 | 12.1.5.6 | **шкаф управления экструдером** | 86.03d | 2026-03-31 09:00 A | 2026-07-29 09:15 A |  | 100% |  |  |  |  |  | 1.25h | 1.25h |
| 2320 | 12.1.5.6.1 | протяжка контактов | 30min | 2026-03-31 09:00 A | 2026-03-31 09:30 A |  | 100% |  |  |  | start no earlier than 2026-03-11 09:00 | Некрасов А | 0.5h | 0.5h |
| 2321 | 12.1.5.6.2 | частотные привода экструдера, ножей, питателя - продувка | 30min | 2026-05-27 09:00 A | 2026-05-27 09:30 A |  | 100% |  |  |  | start no earlier than 2026-05-27 09:00 | Бундин В | 0.5h | 0.5h |
| 2322 | 12.1.5.6.3 | частотные привода экструдера, ножей, питателя - продувка | 15min | 2026-07-29 09:00 A | 2026-07-29 09:15 A |  | 100% |  |  |  | start no earlier than 2026-07-29 08:00 | Труфанов А | 0.25h | 0.25h |
| 2323 | 12.1.5.7 | **блок тэнов сушки** | 70.03d | 2026-05-20 09:00 A | 2026-08-26 09:15 |  | 80% | 14.01d | 140.56d |  |  |  | 1.25h | 1h |
| 2324 | 12.1.5.7.1 | ревизия, замена отгоревших жил, проверка токов | 1h | 2026-05-20 09:00 A | 2026-05-20 10:00 A |  | 100% |  |  |  | start no earlier than 2026-05-20 09:00 | Некрасов А | 1h | 1h |
| 2325 | 12.1.5.7.2 | ревизия/ проверка токов | 15min | 2026-08-26 09:00 | 2026-08-26 09:15 |  |  |  | 140.56d |  | start no earlier than 2026-08-26 09:00 | Некрасов А | 0.25h |  |
| 2326 | 12.1.5.8 | **шкаф управления тэнами сушки** | 63.12d | 2026-06-10 09:00 A | 2026-09-07 10:00 |  | 29% | 45.09d | 132.47d |  |  |  | 1.75h | 0.5h |
| 2327 | 12.1.5.8.1 | протяжка контактов | 15min | 2026-06-10 09:00 | 2026-06-10 09:15 |  |  |  | 195.56d |  | start no earlier than 2026-06-10 09:00 | Дедов В | 0.25h |  |
| 2328 | 12.1.5.8.2 | замена неисправных жил | 1h | 2026-09-07 09:00 | 2026-09-07 10:00 |  |  |  | 132.47d |  | start no earlier than 2026-09-07 09:00 | Бобренок В | 1h |  |
| 2329 | 12.1.5.8.3 | частотные привода экструдера, ножей, питателя - продувка | 30min | 2026-07-16 09:00 A | 2026-07-16 09:30 A |  | 100% |  |  |  | start no earlier than 2026-07-16 09:00 | Бобренок В | 0.5h | 0.5h |
| 2330 | 12.1.5.9 | конвейер №1 с печи в дрожировщик прорверка подшипники, реуктор | 30min | 2025-02-17 09:00 | 2025-02-17 09:30 |  |  |  | 537.53d |  | start no earlier than 2025-02-15 09:00 | Дедов В | 0.5h |  |
| 2331 | 12.1.5.10 | **барабан смесительный дрожировка - прорверка подшипнки , реуктор** | 105.03d | 2026-03-04 08:00 A | 2026-07-29 09:15 A |  | 100% |  |  |  |  |  | 2.25h | 2.25h |
| 2332 | 12.1.5.10.1 | замена вал № 4 час | 2h | 2026-03-04 08:00 A | 2026-03-04 11:00 A |  | 100% |  |  |  | start no earlier than 2026-03-04 08:00 | Тимофеев В | 2h | 2h |
| 2333 | 12.1.5.10.2 | Дефектовка - проверить подачу, вибрации, посторонние шумы. | 15min | 2026-07-29 08:00 A | 2026-07-29 09:15 A |  | 100% |  |  |  | start no earlier than 2026-07-29 08:00 | Тимофеев В | 0.25h | 0.25h |
| 2334 | 12.1.5.11 | **печь** | 0.25d | 2026-07-16 09:00 A | 2026-07-16 11:00 A |  | 100% |  |  |  |  |  | 7h | 7h |
| 2335 | 12.1.5.11.1 | проверка состояния сетки, ремонт шплинтов | 2h | 2026-07-16 09:00 A | 2026-07-16 11:00 A |  | 100% |  |  |  | start no earlier than 2026-07-16 09:00 | Бобренок В; Некрасов А; Труфанов А | 6h | 6h |
| 2336 | 12.1.5.11.2 | укоротить звено привода | 1h | 2026-07-16 09:00 A | 2026-07-16 10:00 A |  | 100% |  |  |  | start no earlier than 2026-07-16 09:00 | Некрасов А | 1h | 1h |
| 2337 | 12.1.5.12 | конвейер №2 с дрожировки в охладитель - проверка подшипники , редуктор | 30min | 2025-02-17 09:00 | 2025-02-17 09:30 |  |  |  | 537.53d |  | start no earlier than 2025-02-15 09:00 | Дедов В | 0.5h |  |
| 2338 | 12.1.5.13 | охладитель сеточный - смазка, натяжка цепи. Проверка редуктор | 1h | 2025-02-17 09:00 | 2025-02-17 10:00 |  |  |  | 537.47d |  | start no earlier than 2025-02-16 09:00 | Черепанов И | 1h |  |
| 2339 | 12.1.5.14 | вентиляторы обдува сушки | 2h | 2024-06-14 09:00 | 2024-06-14 11:00 |  |  |  | 713.34d |  | start no earlier than 2024-06-14 09:00 | ТО_2 | 2h |  |
| 2340 | 12.1.5.15 | смеситель СМ-500 | 2h | 2024-04-10 09:00 | 2024-04-10 11:00 |  |  |  | 760.09d | 0d | start no earlier than 2024-04-10 09:00 | ТО_1 | 2h |  |
| 2341 | 12.1.5.16 | шнек выгрузки смесителя | 2h | 2024-04-10 11:00 | 2024-04-10 13:00 | 2340 |  |  | 760.09d |  | start no earlier than 2024-01-03 09:00 | ТО_1 | 2h |  |
| 2342 | 12.1.5.17 | электромотор экструдера | 2h | 2024-04-04 09:00 | 2024-04-04 11:00 |  |  |  | 764.34d |  | start no earlier than 2024-03-08 09:00 | ТО_1 | 2h |  |
| 2343 | 12.1.5.18 | редуктор шнеков экструдера | 2h | 2024-04-04 09:00 | 2024-04-04 11:00 |  |  |  | 764.34d |  | start no earlier than 2024-01-26 09:00 | ТО_М | 2h |  |
| 2344 | 12.1.5.19 | чистка фильтр редутор шнеков | 1h | 2025-02-17 09:00 | 2025-02-17 10:00 |  |  |  | 537.47d |  | start no earlier than 2025-02-16 09:00 | Черепанов И | 1h |  |
| 2345 | 12.1.5.20 | пневотранспорт вентилятор | 2h | 2024-05-07 09:00 | 2024-05-07 11:00 |  |  |  | 741.34d |  | start no earlier than 2024-05-07 09:00 | ТО_1 | 2h |  |
| 2346 | 12.1.5.21 | пневотранспорт роторный питатель - проверка масла | 30min | 2025-02-17 09:00 | 2025-02-17 09:30 |  |  |  | 537.53d |  | start no earlier than 2025-02-16 09:00 | Черепанов И | 0.5h |  |
| 2347 | 12.1.5.22 | пневотранспорт роторный питатель - проверка масла | 30min | 2026-07-29 09:00 A | 2026-07-29 09:30 A |  | 100% |  |  |  | start no earlier than 2026-07-29 08:00 | Труфанов А | 0.5h | 0.5h |
| 2348 | 12.1.5.23 | привод сетки ПЕЧИ сушки - прорверка масла | 30min | 2025-02-17 09:00 | 2025-02-17 09:30 |  |  |  | 537.53d |  | start no earlier than 2025-02-16 09:00 | Черепанов И | 0.5h |  |
| 2349 | 12.1.5.24 | привод сетки ПЕЧИ сушки - прорверка масла | 30min | 2026-07-29 09:00 A | 2026-07-29 09:30 A |  | 100% |  |  |  | start no earlier than 2026-07-29 08:00 | Труфанов А | 0.5h | 0.5h |
| 2350 | 12.1.5.25 | насос подачи жира и смесительный узел, баки подогрева протяжка | 1h | 2025-02-17 09:00 | 2025-02-17 10:00 |  |  |  | 537.47d |  | start no earlier than 2025-02-15 09:00 | Дедов В | 1h |  |
| 2351 | 12.1.5.26 | дозатор сухой гидролизат - разборка, чистка, замена подшипников | 2h | 2026-08-18 09:00 A | 2026-08-18 11:00 A |  | 100% |  |  |  | start no earlier than 2026-08-18 09:00 | Бундин В | 2h | 2h |
| 2352 | 12.1.5.27 | проверка передаточн число редуктора/сравнить с 2л. Проверить остатки для замены на менее скоростной | 1h | 2026-08-20 09:00 | 2026-08-20 10:00 |  |  |  | 144.47d |  | start no earlier than 2026-08-20 09:00 | Макаревич А | 1h |  |
| 2353 | 12.1.5.28 | Осмотр цепи и сетки | 1h | 2026-07-29 09:00 A | 2026-07-29 10:00 A |  | 100% |  |  |  | start no earlier than 2026-07-29 08:00 | Труфанов А | 1h | 1h |

| ID | WBS | Task | Duration | Start | Finish | Complete | Remaining | Actual start | Total slack | Constraint | Resources | Work | Actual work |
| --- | --- | --- | --- | --- | --- | --- | --- | --- | --- | --- | --- | --- | --- |
| 2354 | 12.1.6 | **линия 2** | 0.25d? | 2023-12-29 09:00 | 2023-12-29 11:00 | 41% | 0.15d? | 2023-12-28 09:00 |  |  |  | 41.5h | 16.25h |
| 2355 | 12.1.6.1 | **питатель экструдера** | 95.04d | 2026-03-18 09:00 A | 2026-07-29 09:20 A | 100% |  |  |  |  |  | 3.5h | 3.5h |
| 2356 | 12.1.6.1.1 | контроль состояние пластик втулки | 30min | 2026-06-02 09:00 A | 2026-06-02 09:30 A | 100% |  |  |  | start no earlier than 2026-06-02 09:00 | Некрасов А | 0.5h | 0.5h |
| 2357 | 12.1.6.1.2 | замена подшипники | 1h | 2026-04-08 09:00 A | 2026-04-08 10:00 A | 100% |  |  |  | start no earlier than 2026-04-08 09:00 |  |  |  |
| 2358 | 12.1.6.1.3 | замена шестеренок -взять у Веры на складе | 2h | 2026-05-20 09:00 A | 2026-05-20 11:00 A | 100% |  |  |  | start no earlier than 2026-05-20 09:00 | Бобренок В | 2h | 2h |
| 2359 | 12.1.6.1.4 | контроль пластик втулки | 30min | 2026-05-13 09:00 A | 2026-05-13 09:30 A | 100% |  |  |  | start no earlier than 2026-05-13 09:00 | Бобренок В | 0.5h | 0.5h |
| 2360 | 12.1.6.1.5 | контроль шестерен привода, редуктора | 10min | 2026-03-18 09:00 A | 2026-03-18 09:10 A | 100% |  |  |  | start no earlier than 2026-03-18 09:00 | Труфанов А | 0.17h | 0.17h |
| 2361 | 12.1.6.1.6 | Ревизия питателя | 20min | 2026-07-29 09:00 A | 2026-07-29 09:20 A | 100% |  |  |  | start no earlier than 2026-07-29 08:00 | Бундин В | 0.33h | 0.33h |
| 2362 | 12.1.6.2 | **прекондицинер экструдера** | 55.03d | 2026-05-13 09:00 A | 2026-07-29 09:15 A | 100% |  |  |  |  |  | 0.5h | 0.5h |
| 2363 | 12.1.6.2.1 | контроль привода, подшипников | 15min | 2026-05-13 09:00 A | 2026-05-13 09:15 A | 100% |  |  |  | start no earlier than 2026-05-13 09:00 | Бобренок В | 0.25h | 0.25h |
| 2364 | 12.1.6.2.2 | контроль привода, подшипников | 15min | 2026-07-29 09:00 A | 2026-07-29 09:15 A | 100% |  |  |  | start no earlier than 2026-07-29 08:00 | Труфанов А | 0.25h | 0.25h |
| 2365 | 12.1.6.3 | **парогенератор** | 65.12d | 2026-05-13 09:00 A | 2026-08-12 10:00 A | 100% |  |  |  |  |  | 2h | 2h |
| 2366 | 12.1.6.3.1 | вскрытие электородов, чистка | 1h | 2026-05-13 09:00 A | 2026-05-13 10:00 A | 100% |  |  |  | start no earlier than 2026-05-13 09:00 | Бобренок В | 1h | 1h |
| 2367 | 12.1.6.3.2 | вскрытие электородов, чистка | 1h | 2026-08-12 09:00 A | 2026-08-12 10:00 A | 100% |  |  |  | start no earlier than 2026-08-12 09:00 | Некрасов А | 1h | 1h |
| 2368 | 12.1.6.4 | тэны и термпоры шнеков- прортяжка | 30min | 2024-04-10 09:00 | 2024-04-10 09:30 |  |  |  | 760.53d | start no earlier than 2024-04-10 09:00 | Черепанов И | 0.5h |  |
| 2369 | 12.1.6.5 | Чистка парогенератора | 1h | 2026-07-29 09:00 A | 2026-07-29 10:00 A | 100% |  |  |  | start no earlier than 2026-07-29 08:00 | Бундин В | 1h | 1h |
| 2370 | 12.1.6.6 | **шкаф управления экструдером** | 100.03d | 2026-03-11 09:00 A | 2026-07-29 09:15 A | 100% |  |  |  |  |  | 1.5h | 1.5h |
| 2371 | 12.1.6.6.1 | протяжка контактов | 30min | 2026-03-11 09:00 A | 2026-03-11 09:30 A | 100% |  |  |  | start no earlier than 2026-03-11 09:00 | Некрасов А | 0.5h | 0.5h |
| 2372 | 12.1.6.6.2 | частотные привода экструдера, ножей, питателя - продувка | 30min | 2026-05-27 09:00 A | 2026-05-27 09:30 A | 100% |  |  |  | start no earlier than 2026-05-27 09:00 | Бундин В | 0.5h | 0.5h |
| 2373 | 12.1.6.6.3 | частотные привода экструдера, ножей, питателя - продувка | 15min | 2026-07-16 09:00 A | 2026-07-16 09:15 A | 100% |  |  |  | start no earlier than 2026-07-16 09:00 | Бобренок В | 0.25h | 0.25h |
| 2374 | 12.1.6.6.4 | частотные привода экструдера, ножей, питателя - продувка | 15min | 2026-07-29 09:00 A | 2026-07-29 09:15 A | 100% |  |  |  | start no earlier than 2026-07-29 08:00 | Труфанов А | 0.25h | 0.25h |
| 2375 | 12.1.6.7 | **редуктор экструдера и маслянная станция** | 50.06d | 2026-05-20 09:00 A | 2026-07-29 09:30 A | 100% |  |  |  |  |  | 2.5h | 2.5h |
| 2376 | 12.1.6.7.1 | чистка фильтра | 30min | 2026-06-02 09:00 A | 2026-06-02 09:30 A | 100% |  |  |  | start no earlier than 2026-06-02 09:00 | Тимофеев В | 0.5h | 0.5h |
| 2377 | 12.1.6.7.2 | чистка фильтра | 30min | 2026-05-20 09:00 A | 2026-05-20 09:30 A | 100% |  |  |  | start no earlier than 2026-05-20 09:00 | Тимофеев В | 0.5h | 0.5h |
| 2378 | 12.1.6.7.3 | муфта редутор-мотор проверка состояния | 30min | 2026-05-27 09:00 A | 2026-05-27 09:30 A | 100% |  |  |  | start no earlier than 2026-05-27 09:00 | Тимофеев В | 0.5h | 0.5h |
| 2379 | 12.1.6.7.4 | чистка фильтра | 30min | 2026-07-16 09:00 A | 2026-07-16 09:30 A | 100% |  |  |  | start no earlier than 2026-07-16 09:00 | Бобренок В | 0.5h | 0.5h |
| 2380 | 12.1.6.7.5 | Чистка фильтра | 30min | 2026-07-29 08:00 A | 2026-07-29 09:30 A | 100% |  |  |  | start no earlier than 2026-07-29 08:00 | Тимофеев В | 0.5h | 0.5h |

| ID | WBS | Task | Duration | Start | Finish | Predecessors | Complete | Remaining | Total slack | Free slack | Constraint | Resources | Work | Actual work |
| --- | --- | --- | --- | --- | --- | --- | --- | --- | --- | --- | --- | --- | --- | --- |
| 2381 | 12.1.6.8 | **блок тэнов сушки - протяжка** | 80.12d | 2026-05-20 09:00 A | 2026-09-09 10:00 |  | 75% | 20.03d | 130.47d |  |  |  | 4h | 3h |
| 2382 | 12.1.6.8.1 | ревизия, замена отгоревших жил, проверка токов | 3h | 2026-05-20 09:00 A | 2026-05-20 12:00 A |  | 100% |  |  |  | start no earlier than 2026-05-20 09:00 | Бобренок В | 3h | 3h |
| 2383 | 12.1.6.8.2 | ревизия, замена отгоревших жил, проверка токов | 1h | 2026-09-09 09:00 | 2026-09-09 10:00 |  |  |  | 130.47d |  | start no earlier than 2026-09-09 09:00 | Тимофеев В | 1h |  |
| 2384 | 12.1.6.9 | **шкаф управления тэнами сушки** | 65.03d | 2026-05-20 09:00 A | 2026-08-19 09:15 |  | 83% | 10.84d | 145.56d |  |  |  | 1.5h | 1.25h |
| 2385 | 12.1.6.9.1 | протяжка контактов | 15min | 2026-05-20 09:00 A | 2026-05-20 09:15 A |  | 100% |  |  |  | start no earlier than 2026-05-20 09:00 | Бобренок В | 0.25h | 0.25h |
| 2386 | 12.1.6.9.2 | замена неисправных жил | 1h | 2026-05-20 09:00 A | 2026-05-20 10:00 A |  | 100% |  |  |  | start no earlier than 2026-05-20 09:00 | Бобренок В | 1h | 1h |
| 2387 | 12.1.6.9.3 | ревизия/ проверка токов | 15min | 2026-08-19 09:00 | 2026-08-19 09:15 |  |  |  | 145.56d |  | start no earlier than 2026-08-19 09:00 | Некрасов А | 0.25h |  |
| 2388 | 12.1.6.10 | конвейер №1 с печи в дрожировщик прорверка подшипники, реуктор | 30min | 2024-10-04 09:00 | 2024-10-04 09:30 |  |  |  | 633.53d |  | start no earlier than 2024-10-04 09:00 | Тимофеев В | 0.5h |  |
| 2389 | 12.1.6.11 | барабан смесительный дрожировка - прорверка подшипнки , реуктор | 30min | 2024-10-04 09:00 | 2024-10-04 09:30 |  |  |  | 633.53d |  | start no earlier than 2024-10-04 09:00 | Тимофеев В | 0.5h |  |
| 2390 | 12.1.6.12 | конвейер №2 с дрожировки в охладитель - проверка подшипники , редуктор | 30min | 2024-10-04 09:00 | 2024-10-04 09:30 |  |  |  | 633.53d |  | start no earlier than 2024-10-04 09:00 | Тимофеев В | 0.5h |  |
| 2391 | 12.1.6.13 | охладитель сеточный - смазка, натяжка цепи. Проверка редуктор | 1h | 2024-10-04 09:00 | 2024-10-04 10:00 |  |  |  | 633.47d |  | start no earlier than 2024-10-04 09:00 | Тимофеев В | 1h |  |
| 2392 | 12.1.6.14 | вентиляторы обдува сушки | 2h | 2024-06-14 09:00 | 2024-06-14 11:00 |  |  |  | 713.34d |  | start no earlier than 2024-06-14 09:00 | ТО_2 | 2h |  |
| 2393 | 12.1.6.15 | смеситель СМ-500 | 2h | 2024-04-10 09:00 | 2024-04-10 11:00 |  |  |  | 760.09d | 0d | start no earlier than 2024-04-10 09:00 | ТО_1 | 2h |  |
| 2394 | 12.1.6.16 | шнек выгрузки смесителя | 2h | 2024-04-10 11:00 | 2024-04-10 13:00 | 2393 |  |  | 760.09d |  | start no earlier than 2024-01-03 09:00 | ТО_1 | 2h |  |
| 2395 | 12.1.6.17 | электромотор экструдера раборка замена подшипников / есть шум | 6h | 2026-08-27 09:00 | 2026-08-27 16:00 |  |  |  | 138.84d |  | start no earlier than 2026-08-27 09:00 | Тимофеев В | 6h |  |
| 2396 | 12.1.6.18 | редуктор шнеков экструдера | 2h | 2024-10-04 09:00 | 2024-10-04 11:00 |  |  |  | 633.34d |  | start no earlier than 2024-10-04 09:00 | Тимофеев В | 2h |  |
| 2397 | 12.1.6.19 | пневотранспорт вентилятор | 2h | 2024-05-07 09:00 | 2024-05-07 11:00 |  |  |  | 741.34d |  | start no earlier than 2024-05-07 09:00 | ТО_1 | 2h |  |
| 2398 | 12.1.6.20 | пневотранспорт роторный питатель - проверка масла | 30min | 2024-10-04 09:00 | 2024-10-04 09:30 |  |  |  | 633.53d |  | start no earlier than 2024-10-04 09:00 | Тимофеев В | 0.5h |  |
| 2399 | 12.1.6.21 | привод сетки ПЕЧИ сушки - прорверка масла | 30min | 2024-10-04 09:00 | 2024-10-04 09:30 |  |  |  | 633.53d |  | start no earlier than 2024-10-04 09:00 | Тимофеев В | 0.5h |  |
| 2400 | 12.1.6.22 | насос подачи жира и смесительный узел, баки подогрева | 2h | 2023-12-28 09:00 | 2023-12-28 11:00 |  |  |  | 834.34d |  | start no earlier than 2023-12-28 09:00 | ТО_1 | 2h |  |
| 2401 | 12.1.6.23 | дозатор сухой гидролизат - разборка, чистка, замена подшипников | 2h | 2026-08-20 09:00 | 2026-08-20 11:00 |  |  |  | 144.34d |  | start no earlier than 2026-08-20 09:00 | Макаревич А | 2h |  |
| 2402 | 12.1.6.24 | **Насос гидролизата** | 85.06d | 2026-04-01 09:00 A | 2026-07-29 09:30 A |  | 100% |  |  |  |  |  | 1h | 1h |
| 2403 | 12.1.6.24.1 | Дефектовка - проверить подачу, вибрации, посторонние шумы. | 30min | 2026-04-01 09:00 A | 2026-04-01 09:30 A |  | 100% |  |  |  | start no earlier than 2026-04-01 09:00 | Тимофеев В | 0.5h | 0.5h |
| 2404 | 12.1.6.24.2 | Дефектовка - проверить подачу, вибрации, посторонние шумы. | 30min | 2026-07-29 08:00 A | 2026-07-29 09:30 A |  | 100% |  |  |  | start no earlier than 2026-07-29 08:00 | Тимофеев В | 0.5h | 0.5h |

| ID | WBS | Task | Duration | Start | Finish | Complete | Remaining | Total slack | Constraint | Resources | Work | Actual work |
| --- | --- | --- | --- | --- | --- | --- | --- | --- | --- | --- | --- | --- |
| 2405 | 12.1.7 | **Квадропак** | 38.5d | 2026-04-22 09:00 A | 2026-06-15 13:00 A | 100% |  |  |  |  | 9.25h | 9.25h |
| 2406 | 12.1.7.1 | проверить резьбу крепления встряхивателя №1, закрепить | 1h | 2026-06-02 09:00 A | 2026-06-02 10:00 A | 100% |  |  | start no earlier than 2026-06-02 09:00 | Макаревич А | 1h | 1h |
| 2407 | 12.1.7.2 | Замена резинки на воздушном редукторе находящемся под мультиголовой (весы) | 1h | 2026-04-22 09:00 A | 2026-04-22 10:00 A | 100% |  |  | start no earlier than 2026-04-22 09:00 | Бундин В | 1h | 1h |
| 2408 | 12.1.7.3 | ТО узла пайки. Чистка тен/ревизия термоизолятора пневморедуктора | 1h | 2026-05-27 09:00 A | 2026-05-27 10:00 A | 100% |  |  | start no earlier than 2026-05-27 09:00 | Тимофеев В | 1h | 1h |
| 2409 | 12.1.7.4 | ревизия привод встряхивателя | 30min | 2026-05-27 09:00 A | 2026-05-27 09:30 A | 100% |  |  | start no earlier than 2026-05-27 09:00 | Тимофеев В | 0.5h | 0.5h |
| 2410 | 12.1.7.5 | ревизия протяжки кинематики низ / верх | 30min | 2026-05-27 09:00 A | 2026-05-27 09:30 A | 100% |  |  | start no earlier than 2026-05-27 09:00 | Тимофеев В | 0.5h | 0.5h |
| 2411 | 12.1.7.6 | ревизия вакуумный насос | 15min | 2026-05-27 09:00 A | 2026-05-27 09:15 A | 100% |  |  | start no earlier than 2026-05-27 09:00 | Тимофеев В | 0.25h | 0.25h |
| 2412 | 12.1.7.7 | замена вал выход | 4h | 2026-06-15 09:00 A | 2026-06-15 13:00 A | 100% |  |  | start no earlier than 2026-06-15 09:00 | Тимофеев В | 4h | 4h |
| 2413 | 12.1.7.8 | проверить пневмоцилиндр на встряхивателе, если нужно заменить | 1h | 2026-05-20 09:00 A | 2026-05-20 10:00 A | 100% |  |  | start no earlier than 2026-05-20 09:00 | Некрасов А | 1h | 1h |
| 2414 | 12.1.8 | **Парогенератор** | 6.25d | 2026-06-02 09:00 A | 2026-06-10 11:00 | 33% | 4.17d | 195.34d |  |  | 3h | 1h |
| 2415 | 12.1.8.1 | читска парогенератора, если нужно замена электродов | 2h | 2026-06-10 09:00 | 2026-06-10 11:00 |  |  | 195.34d | start no earlier than 2026-06-10 09:00 | Дедов В | 2h |  |
| 2416 | 12.1.8.2 | читска парогенератора, если нужно замена электродов | 1h | 2026-06-02 09:00 A | 2026-06-02 10:00 A | 100% |  |  | start no earlier than 2026-06-02 09:00 | Тимофеев В | 1h | 1h |
| 2417 | 12.1.9 | **Дражжировка** | 0.25d | 2026-08-27 09:00 | 2026-08-27 11:00 |  |  | 139.34d |  |  | 2.42h |  |
| 2418 | 12.1.9.1 | Проверка подшипников на барабанах | 15min | 2026-08-27 09:00 | 2026-08-27 09:15 |  |  | 139.56d | start no earlier than 2026-08-27 09:00 | Тимофеев В | 0.25h |  |
| 2419 | 12.1.9.2 | Проверка фильтров | 10min | 2026-08-27 09:00 | 2026-08-27 09:10 |  |  | 139.57d | start no earlier than 2026-08-27 09:00 | Тимофеев В | 0.17h |  |
| 2420 | 12.1.9.3 | Ревизия насоса гидролизата | 2h | 2026-08-27 09:00 | 2026-08-27 11:00 |  |  | 139.34d | start no earlier than 2026-08-27 09:00 | Тимофеев В | 2h |  |
| 2421 | 12.1.10 | **жиротопка и насос перекачки жира** | 600.03d | 2024-04-10 09:00 A | 2026-07-29 09:15 | 25% | 450.02d | 160.56d |  |  | 1h | 0.25h |
| 2422 | 12.1.10.1 | блок тэнов -протяжка | 30min | 2024-04-10 09:00 | 2024-04-10 09:30 |  |  | 760.53d | start no earlier than 2024-04-10 08:00 | Тимофеев В | 0.5h |  |
| 2423 | 12.1.10.2 | насос, фильтр - осмотр, чистка | 15min | 2024-04-25 09:00 | 2024-04-25 09:15 |  |  | 749.56d | start no earlier than 2024-04-25 09:00 | Тимофеев В | 0.25h |  |
| 2424 | 12.1.10.3 | насос, фильтр - осмотр, чистка | 15min | 2026-07-29 09:00 A | 2026-07-29 09:15 A | 100% |  |  | start no earlier than 2026-07-29 08:00 | Труфанов А | 0.25h | 0.25h |
| 2425 | 12.1.11 | **упаковщкики** | 398.25d | 2025-02-14 09:00 A | 2026-08-26 11:00 | 15% | 336.98d | 140.34d |  |  | 26h | 4h |
| 2426 | 12.1.11.1 | упаковщик ТЕКО 0,4кг | 2h | 2025-02-16 09:00 A | 2025-02-17 11:00 A | 100% |  |  | start no earlier than 2025-02-16 09:00 | Дедов В | 2h | 2h |
| 2427 | 12.1.11.2 | упаковщик ТЕКО 0,4кг | 2h | 2026-08-26 09:00 | 2026-08-26 11:00 |  |  | 140.34d | start no earlier than 2026-08-26 09:00 | Тимофеев В | 2h |  |
| 2428 | 12.1.11.3 | упаковщик НОТИС | 2h | 2025-02-17 09:00 | 2025-02-17 11:00 |  |  | 537.34d | start no earlier than 2025-02-16 09:00 | Дедов В | 2h |  |
| 2429 | 12.1.11.4 | упаковщик ТЕКО 1.5кг | 2h | 2025-02-17 09:00 | 2025-02-17 11:00 |  |  | 537.34d | start no earlier than 2025-02-16 09:00 | Дедов В | 2h |  |
| 2430 | 12.1.11.5 | упаковщик КВАДРОПАК | 2h | 2025-02-17 09:00 | 2025-02-17 11:00 |  |  | 537.34d | start no earlier than 2025-02-16 09:00 | Дедов В | 2h |  |
| 2431 | 12.1.11.6 | нория и вибробункер КВАДРОПАК | 2h | 2025-02-17 09:00 | 2025-02-17 11:00 |  |  | 537.34d | start no earlier than 2025-02-16 09:00 | Дедов В | 2h |  |
| 2432 | 12.1.11.7 | запайщик 1 | 2h | 2025-02-17 09:00 | 2025-02-17 11:00 |  |  | 537.34d | start no earlier than 2025-02-17 09:00 | Дедов В | 2h |  |
| 2433 | 12.1.11.8 | запайщик 2 | 2h | 2025-02-17 09:00 | 2025-02-17 11:00 |  |  | 537.34d | start no earlier than 2025-02-17 09:00 | Дедов В | 2h |  |
| 2434 | 12.1.11.9 | конвейер гп ТЕКО 1,5 | 2h | 2025-02-14 09:00 | 2025-02-14 11:00 |  |  | 538.34d | start no earlier than 2025-02-14 09:00 | Макаревич А | 2h |  |
| 2435 | 12.1.11.10 | конвейер гп ТЕКО 0,4 | 2h | 2025-02-14 09:00 | 2025-02-14 11:00 |  |  | 538.34d | start no earlier than 2025-02-14 09:00 | Макаревич А | 2h |  |
| 2436 | 12.1.11.11 | накопительный стол 1,5 | 2h | 2025-02-17 09:00 | 2025-02-17 11:00 |  |  | 537.34d | start no earlier than 2025-02-15 09:00 | Макаревич А | 2h |  |
| 2437 | 12.1.11.12 | накопительный стол 0,4 | 2h | 2025-02-17 09:00 | 2025-02-17 11:00 |  |  | 537.34d | start no earlier than 2025-02-15 09:00 | Макаревич А | 2h |  |
| 2438 | 12.1.11.13 | Осмотр всех упаковщиков/транспортеров/накопительных столов/ всех щитков оборудования | 2h | 2026-07-29 09:00 A | 2026-07-29 11:00 A | 100% |  |  | start no earlier than 2026-07-29 08:00 | Бундин В | 2h | 2h |

| ID | WBS | Task | Duration | Start | Finish | Complete | Remaining | Total slack | Constraint | Resources | Work | Actual work |
| --- | --- | --- | --- | --- | --- | --- | --- | --- | --- | --- | --- | --- |
| 2439 | 12.1.12 | **электрооборудование** | 627.12d? | 2024-04-04 09:00 A | 2026-08-31 10:00 | 12% | 553.35d? | 137.47d |  | ТО | 5496.5h | 701.2h |
| 2440 | 12.1.12.1 | ВРУ1 | 15min | 2026-05-20 09:00 | 2026-05-20 09:15 |  |  | 210.56d | start no earlier than 2026-05-20 09:00 | ТО; Тимофеев В | 0.5h |  |
| 2441 | 12.1.12.2 | ВРУ2 | 15min | 2026-05-20 09:00 | 2026-05-20 09:15 |  |  | 210.56d | start no earlier than 2026-05-20 09:00 | ТО; Тимофеев В | 0.5h |  |
| 2442 | 12.1.12.3 | ЩР1 экструдер | 15min | 2026-05-20 09:00 | 2026-05-20 09:15 |  |  | 210.56d | start no earlier than 2026-05-20 09:00 | ТО; Тимофеев В | 0.5h |  |
| 2443 | 12.1.12.4 | ЩР2 упаковка №1 | 15min | 2026-05-20 09:00 | 2026-05-20 09:15 |  |  | 210.56d | start no earlier than 2026-05-20 09:00 | ТО; Тимофеев В | 0.5h |  |
| 2444 | 12.1.12.5 | ЩР3 упаковка №2 | 15min | 2026-05-20 09:00 | 2026-05-20 09:15 |  |  | 210.56d | start no earlier than 2026-05-20 09:00 | ТО; Тимофеев В | 0.5h |  |
| 2445 | 12.1.12.6 | ЩР жиротопка и зона жиров | 1h | 2026-05-20 09:00 | 2026-05-20 10:00 |  |  | 210.47d | start no earlier than 2026-05-20 09:00 | ТО; Некрасов А | 2h |  |
| 2446 | 12.1.12.7 | **Компрессор 1 цех** | 60.12d? | 2026-06-07 09:00 A | 2026-08-31 10:00 | 20% | 48.1d? | 137.47d |  | ТО | 483h | 112.4h |
| 2447 | 12.1.12.7.1 | продувка радиаторов осушителя и компрессора, слив конденсата | 1h | 2026-06-07 09:00 A | 2026-06-08 10:00 A | 100% |  |  | start no earlier than 2026-06-07 09:00 | Дедов В | 1h | 1h |
| 2448 | 12.1.12.7.2 | продувка радиаторов осушителя и компрессора, слив конденсата | 1h | 2026-08-29 09:00 A | 2026-08-31 10:00 A | 100% |  |  | start no earlier than 2026-08-29 09:00 | Дедов В | 1h | 1h |
| 2449 | 12.1.12.7.3 | <Новая задача> | 1d? | 2026-08-28 09:00 | 2026-08-28 18:00 |  |  | 137.59d | start no earlier than 2026-08-28 08:00 |  |  |  |
| 2450 | 12.1.12.8 | осушитель 1 цех | 2h | 2024-04-04 09:00 | 2024-04-04 11:00 |  |  | 764.34d | start no earlier than 2023-12-28 09:00 | ТО | 2h |  |
| 2451 | 12.1.12.9 | осушитель 1 цех/слить конденсат | 30min | 2026-07-29 09:00 | 2026-07-29 09:30 |  |  | 160.53d | start no earlier than 2026-07-29 08:00 | Бундин В | 0.5h |  |
| 2452 | 12.1.12.10 | бойлер 1 1 цех раковина | 2h | 2024-04-04 09:00 | 2024-04-04 11:00 |  |  | 764.34d | start no earlier than 2023-12-28 09:00 | ТО | 2h |  |
| 2453 | 12.1.12.11 | бойлер 2 1 цех раковина | 2h | 2024-04-04 09:00 | 2024-04-04 11:00 |  |  | 764.34d | start no earlier than 2023-12-28 09:00 | ТО | 2h |  |
| 2454 | 12.1.12.12 | бойлер 3 1 цех душ | 2h | 2024-04-04 09:00 | 2024-04-04 11:00 |  |  | 764.34d | start no earlier than 2023-12-28 09:00 | ТО | 2h |  |
| 2455 | 12.1.12.13 | насосная станция 1 цех | 2h | 2024-04-04 09:00 | 2024-04-04 11:00 |  |  | 764.34d | start no earlier than 2023-12-28 09:00 | ТО | 2h |  |
| 2456 | 12.1.12.14 | фильтр приточной вентиляции | 2h | 2024-04-04 09:00 | 2024-04-04 11:00 |  |  | 764.34d |  |  |  |  |
| 2457 | 12.1.12.15 | пульт управления вентиляцией, частототные приводы | 2h | 2024-04-04 09:00 | 2024-04-04 11:00 |  |  | 764.34d | start no earlier than 2023-12-28 09:00 | ТО | 2h |  |
| 2458 | 12.1.12.16 | кондиционер 1 продувка фильтров внутр / очистка наруж блок | 30min | 2026-06-02 09:00 A | 2026-06-02 09:30 A | 100% |  |  | start no earlier than 2026-06-02 09:00 | Некрасов А | 0.5h | 0.5h |
| 2459 | 12.1.12.17 | кондиционер 2 продувка фильтров внутр / очистка наруж блок | 30min | 2026-06-02 09:00 A | 2026-06-02 09:30 A | 100% |  |  | start no earlier than 2026-06-02 09:00 | Некрасов А | 0.5h | 0.5h |
| 2460 | 12.1.12.18 | кондиционер 3 продувка фильтров внутр / очистка наруж блок | 30min | 2026-06-02 09:00 A | 2026-06-02 09:30 A | 100% |  |  | start no earlier than 2026-06-02 09:00 | Некрасов А | 0.5h | 0.5h |
| 2461 | 12.1.12.19 | кондиционер 1 продувка фильтров внутр / очистка наруж блок (керхер взять у Мейхера) | 30min | 2026-06-10 09:00 | 2026-06-10 09:30 |  |  | 195.53d | start no earlier than 2026-06-10 09:00 | Некрасов А; Дедов В | 1h |  |
| 2462 | 12.1.12.20 | кондиционер 2 продувка фильтров внутр / очистка наруж блок (керхер взять у Мейхера) | 30min | 2026-06-10 09:00 | 2026-06-10 09:30 |  |  | 195.53d | start no earlier than 2026-06-10 09:00 | Некрасов А; Дедов В | 1h |  |
| 2463 | 12.1.12.21 | кондиционер 3 продувка фильтров внутр / очистка наруж блок (керхер взять у Мейхера) | 30min | 2026-06-10 09:00 | 2026-06-10 09:30 |  |  | 195.53d | start no earlier than 2026-06-10 09:00 | Некрасов А; Дедов В | 1h |  |
| 2464 | 12.1.13 | электроштабелер упаковка | 2h | 2023-12-28 09:00 | 2023-12-28 11:00 |  |  | 834.34d | start no earlier than 2023-12-28 09:00 | ТО | 2h |  |
| 2465 | 12.1.14 | электроштабелер навески | 2h | 2023-12-28 09:00 | 2023-12-28 11:00 |  |  | 834.34d | start no earlier than 2023-12-28 09:00 | ТО | 2h |  |

| ID | WBS | Task | Duration | Start | Finish | Complete | Remaining | Total slack | Constraint | Resources | Work | Actual work |
| --- | --- | --- | --- | --- | --- | --- | --- | --- | --- | --- | --- | --- |
| 2466 | 12.2 | **2 цех** | 914.25d? | 2023-03-10 09:00 A | 2026-09-10 11:00 | 59% | 370.9d? | 129.34d |  |  | 16732.9h | 13884.2h |
| 2467 | 12.2.1 | обдув пыли с вентиляции и балки кровли зона жир + экструдер + упаковка | 3h | 2026-08-20 09:00 | 2026-08-20 12:00 |  |  | 144.22d | start no earlier than 2026-08-20 09:00 | Некрасов А; Тимофеев В | 6h |  |
| 2468 | 12.2.2 | **линия 3** | 909.06d? | 2023-03-10 09:00 A | 2026-09-03 09:30 | 98% | 22.62d? | 134.53d |  |  | 130.67h | 128.83h |
| 2469 | 12.2.2.1 | **прекондицинер экструдера** | 620.03d? | 2024-04-18 09:00 A | 2026-09-03 09:15 | 98% | 14.42d? | 134.56d |  |  | 21.5h | 21h |
| 2470 | 12.2.2.1.1 | замена заднего подшипника ведомый вал | 8h | 2026-05-26 09:00 A | 2026-05-26 18:00 A | 100% |  |  | start no earlier than 2026-05-26 09:00 | Тимофеев В | 8h | 8h |
| 2471 | 12.2.2.1.2 | замена подшипников | 1h | 2024-04-18 09:00 A | 2024-04-18 10:00 A | 100% |  |  | start no earlier than 2024-04-18 08:00 | Тимофеев В | 1h | 1h |
| 2472 | 12.2.2.1.3 | Ревизия масла редуктора | 30min | 2024-04-18 09:00 A | 2024-04-18 09:30 A | 100% |  |  | start no earlier than 2024-04-18 08:00 | Тимофеев В | 0.5h | 0.5h |
| 2473 | 12.2.2.1.4 | контроль крепления лопаток | 30min | 2026-05-21 09:00 A | 2026-05-21 09:30 A | 100% |  |  | start no earlier than 2026-03-05 09:00 | Тимофеев В | 0.5h | 0.5h |
| 2474 | 12.2.2.1.5 | шприцевание подшипников | 1h | 2026-05-21 08:00 A | 2026-05-21 10:00 A | 100% |  |  | start no earlier than 2026-05-21 08:00 | Тимофеев В | 1h | 1h |
| 2475 | 12.2.2.1.6 | Ревизия масла редуктора | 15min | 2026-07-21 09:00 A | 2026-07-21 09:15 A | 100% |  |  | start no earlier than 2026-07-21 09:00 | Труфанов А | 0.25h | 0.25h |
| 2476 | 12.2.2.1.7 | шприцевание подшипников | 30min | 2026-07-21 09:00 A | 2026-07-21 09:30 A | 100% |  |  | start no earlier than 2026-07-21 09:00 | Труфанов А | 0.5h | 0.5h |
| 2477 | 12.2.2.1.8 | Осмотр подшипников | 15min | 2026-07-30 09:00 A | 2026-07-30 09:15 A | 100% |  |  | start no earlier than 2026-07-30 09:00 | Тимофеев В | 0.25h | 0.25h |
| 2478 | 12.2.2.1.9 | Осмотр подшипников | 1d? | 2026-08-06 09:00 A | 2026-08-06 18:00 A | 100% |  |  | start no earlier than 2026-08-06 09:00 | Бундин В | 8h | 8h |
| 2479 | 12.2.2.1.10 | Осмотр подшипников / смазка / по необходимости замена | 1h | 2026-08-13 09:00 A | 2026-08-13 10:00 A | 100% |  |  | start no earlier than 2026-08-13 09:00 | Некрасов А | 1h | 1h |
| 2480 | 12.2.2.1.11 | Осмотр подшипников / смазка | 15min | 2026-08-20 09:00 | 2026-08-20 09:15 |  |  | 144.56d | start no earlier than 2026-08-20 09:00 | Некрасов А | 0.25h |  |
| 2481 | 12.2.2.1.12 | Замена водяного фильтра на прекондиционере/парогенератор (нет фильтров не меняли в следующее ТО на 10.09.26) | 15min | 2026-09-03 09:00 | 2026-09-03 09:15 |  |  | 134.56d | start no earlier than 2026-09-03 09:00 | Труфанов А | 0.25h |  |
| 2482 | 12.2.2.2 | **парогенератор** | 619.92d | 2024-04-18 10:00 A | 2026-09-03 09:20 A | 100% |  |  |  |  | 15.5h | 15.5h |
| 2483 | 12.2.2.2.1 | читска | 1h | 2024-04-18 10:00 A | 2024-04-18 11:00 A | 100% |  |  | start no earlier than 2024-04-18 08:00 | Тимофеев В | 1h | 1h |
| 2484 | 12.2.2.2.2 | замена гильзы | 1h | 2024-04-18 10:00 A | 2024-04-18 11:00 A | 100% |  |  | start no earlier than 2024-04-18 08:00 | Тимофеев В | 1h | 1h |
| 2485 | 12.2.2.2.3 | чистка | 2h | 2026-03-05 09:30 A | 2026-03-05 11:30 A | 100% |  |  | start no earlier than 2026-03-04 09:00 | Бундин В | 2h | 2h |
| 2486 | 12.2.2.2.4 | прорвеп срабатывания защитного клапана | 10min | 2026-03-05 09:30 A | 2026-03-05 09:40 A | 100% |  |  | start no earlier than 2024-10-03 09:00 | Бундин В | 0.17h | 0.17h |
| 2487 | 12.2.2.2.5 | читска | 1h | 2026-03-19 09:00 A | 2026-03-19 10:00 A | 100% |  |  | start no earlier than 2026-03-19 09:00 | Тимофеев В | 1h | 1h |
| 2488 | 12.2.2.2.6 | чистка | 1h | 2026-03-12 09:00 A | 2026-03-12 10:00 A | 100% |  |  | start no earlier than 2026-03-12 09:00 | Бундин В; Тимофеев В | 2h | 2h |
| 2489 | 12.2.2.2.7 | чистка | 1h | 2026-05-14 09:00 A | 2026-05-14 10:00 A | 100% |  |  | start no earlier than 2026-05-14 09:00 | Некрасов А | 1h | 1h |
| 2490 | 12.2.2.2.8 | чистка | 2h | 2026-07-14 09:00 A | 2026-07-14 11:00 A | 100% |  |  | start no earlier than 2026-07-14 09:00 | Некрасов А | 2h | 2h |
| 2491 | 12.2.2.2.9 | Чистка | 1h | 2026-07-30 09:00 A | 2026-07-30 10:00 A | 100% |  |  | start no earlier than 2026-07-30 09:00 | Бундин В | 1h | 1h |
| 2492 | 12.2.2.2.10 | Чистка | 1h | 2026-08-06 09:00 A | 2026-08-06 10:00 A | 100% |  |  | start no earlier than 2026-08-06 09:00 | Тимофеев В | 1h | 1h |
| 2493 | 12.2.2.2.11 | Чистка | 1h | 2026-08-13 09:00 A | 2026-08-13 10:00 A | 100% |  |  | start no earlier than 2026-08-13 09:00 | Некрасов А | 1h | 1h |
| 2494 | 12.2.2.2.12 | Чистка | 1h | 2026-08-19 09:00 A | 2026-08-19 10:00 A | 100% |  |  | start no earlier than 2026-08-19 09:00 | Некрасов А | 1h | 1h |
| 2495 | 12.2.2.2.13 | Чистка | 1h | 2026-09-02 08:00 A | 2026-09-02 10:00 A | 100% |  |  | start no earlier than 2026-09-02 08:00 | Бобренок В | 1h | 1h |
| 2496 | 12.2.2.2.14 | Убрать грязь с парогенератора, привести в порядок внешний вид, где что отлеплено, прилепить | 20min | 2026-09-03 09:00 A | 2026-09-03 09:20 A | 100% |  |  | start no earlier than 2026-09-03 09:00 | Тимофеев В | 0.33h | 0.33h |

| ID | WBS | Task | Duration | Start | Finish | Complete | Remaining | Total slack | Constraint | Resources | Work | Actual work |
| --- | --- | --- | --- | --- | --- | --- | --- | --- | --- | --- | --- | --- |
| 2497 | 12.2.2.3 | **привод сетки ПЕЧИ сушки** | 610.04d | 2024-04-18 08:00 A | 2026-08-20 09:20 | 90% | 58.1d | 144.55d |  |  | 3.5h | 3.17h |
| 2498 | 12.2.2.3.1 | прорверка масла редуктор / натяжка цепи/ ремень | 30min | 2024-04-18 08:00 A | 2024-04-18 09:30 A | 100% |  |  | start no earlier than 2024-04-18 08:00 | Тимофеев В | 0.5h | 0.5h |
| 2499 | 12.2.2.3.2 | прорверка масла редуктор / натяжка цепи/ ремень | 30min | 2026-03-05 09:00 A | 2026-03-05 09:30 A | 100% |  |  | start no earlier than 2026-03-05 09:00 | Тимофеев В | 0.5h | 0.5h |
| 2500 | 12.2.2.3.3 | прорверка масла редуктор / натяжка цепи/ ремень | 30min | 2026-03-19 09:00 A | 2026-03-19 09:30 A | 100% |  |  | start no earlier than 2026-03-19 09:00 | Тимофеев В | 0.5h | 0.5h |
| 2501 | 12.2.2.3.4 | прорверка масла редуктор / натяжка цепи/ ремень/осмотр сетки | 30min | 2026-07-14 09:00 A | 2026-07-14 09:30 A | 100% |  |  | start no earlier than 2026-07-14 09:00 | Труфанов А | 0.5h | 0.5h |
| 2502 | 12.2.2.3.5 | прорверка масла редуктор / натяжка цепи/ ремень/осмотр сетки | 30min | 2026-07-30 09:00 A | 2026-07-30 09:30 A | 100% |  |  | start no earlier than 2026-07-30 09:00 | Труфанов А | 0.5h | 0.5h |
| 2503 | 12.2.2.3.6 | прорверка масла редуктор / натяжка цепи/ ремень/осмотр сетки | 20min | 2026-08-13 09:00 A | 2026-08-13 09:20 A | 100% |  |  | start no earlier than 2026-08-13 09:00 | Некрасов А | 0.33h | 0.33h |
| 2504 | 12.2.2.3.7 | прорверка масла редуктор / натяжка цепи/ ремень/осмотр сетки | 20min | 2026-08-20 09:00 A | 2026-08-20 09:20 A | 100% |  |  | start no earlier than 2026-08-20 09:00 | Некрасов А | 0.33h | 0.33h |
| 2505 | 12.2.2.3.8 | прорверка масла редуктор / натяжка цепи/ ремень/осмотр сетки | 20min | 2026-08-20 09:00 | 2026-08-20 09:20 |  |  | 144.55d | start no earlier than 2026-08-20 09:00 | Некрасов А | 0.33h |  |
| 2506 | 12.2.2.4 | **блок тэнов сушки** | 605.12d | 2024-04-18 08:00 A | 2026-08-13 10:00 A | 100% |  |  |  |  | 12h | 12h |
| 2507 | 12.2.2.4.1 | вскрыть все блоки | 1h | 2024-04-18 08:00 A | 2024-04-18 10:00 A | 100% |  |  | start no earlier than 2024-04-18 08:00 | Тимофеев В | 1h | 1h |
| 2508 | 12.2.2.4.2 | ревизия / замена критичных | 4h | 2024-04-18 09:00 A | 2024-04-18 13:00 A | 100% |  |  | start no earlier than 2024-04-18 08:00 | Некрасов А; Черепанов И | 8h | 8h |
| 2509 | 12.2.2.4.3 | ревизия | 1h | 2026-03-19 09:00 A | 2026-03-19 10:00 A | 100% |  |  | start no earlier than 2026-03-19 09:00 | Бундин В | 1h | 1h |
| 2510 | 12.2.2.4.4 | ревизия | 1h | 2026-05-14 09:00 A | 2026-05-14 10:00 A | 100% |  |  | start no earlier than 2026-05-14 09:00 | Труфанов А | 1h | 1h |
| 2511 | 12.2.2.4.5 | ревизия перемычек | 1h | 2026-08-13 09:00 A | 2026-08-13 10:00 A | 100% |  |  | start no earlier than 2026-08-13 09:00 | Некрасов А | 1h | 1h |
| 2512 | 12.2.2.5 | нория 1 загрзка в смеситель | 4h | 2023-03-10 09:00 A | 2023-03-10 13:00 A | 100% |  |  |  | ТО | 4h | 4h |
| 2513 | 12.2.2.6 | **смеситель СМ-1500** | 130.03d | 2026-03-05 09:00 A | 2026-09-03 09:15 | 86% | 18.58d | 134.56d |  |  | 7h | 6h |
| 2514 | 12.2.2.6.1 | контроль масла | 15min | 2026-03-05 09:00 A | 2026-03-05 09:15 A | 100% |  |  | start no earlier than 2026-03-05 09:00 | Тимофеев В | 0.25h | 0.25h |
| 2515 | 12.2.2.6.2 | контроль масла | 15min | 2026-03-05 09:00 A | 2026-03-05 09:15 A | 100% |  |  | start no earlier than 2026-03-05 09:00 | Некрасов А | 0.25h | 0.25h |
| 2516 | 12.2.2.6.3 | замена сальника | 4h | 2026-04-16 09:00 A | 2026-04-16 13:00 A | 100% |  |  | start no earlier than 2026-04-16 09:00 | Тимофеев В | 4h | 4h |
| 2517 | 12.2.2.6.4 | контроль масла | 15min | 2026-07-30 09:00 A | 2026-07-30 09:15 A | 100% |  |  | start no earlier than 2026-07-30 09:00 | Тимофеев В | 0.25h | 0.25h |
| 2518 | 12.2.2.6.5 | ревизия подшипникой красного смесителя, просыпается мука со стороны редуктора | 1h | 2026-08-13 09:00 A | 2026-08-13 10:00 A | 100% |  |  | start no earlier than 2026-08-13 09:00 | Тимофеев В | 1h | 1h |
| 2519 | 12.2.2.6.6 | ревизия подшипникой красного смесителя, просыпается мука со стороны редуктора | 1h | 2026-08-27 09:00 | 2026-08-27 10:00 |  |  | 139.47d | start no earlier than 2026-08-27 09:00 | Тимофеев В | 1h |  |
| 2520 | 12.2.2.6.7 | контроль масла | 15min | 2026-09-03 09:00 A | 2026-09-03 09:15 A | 100% |  |  | start no earlier than 2026-09-03 09:00 | Тимофеев В | 0.25h | 0.25h |

| ID | WBS | Task | Duration | Start | Finish | Complete | Constraint | Resources | Work | Actual work |
| --- | --- | --- | --- | --- | --- | --- | --- | --- | --- | --- |
| 2521 | 12.2.2.7 | **нория 2 выгрузки смесителя** | 130.06d | 2026-03-05 09:00 A | 2026-09-03 09:30 A | 100% |  | ТО | 58.08h | 58.08h |
| 2522 | 12.2.2.7.1 | смазка подшипников | 30min | 2026-03-05 09:00 A | 2026-03-05 09:30 A | 100% | start no earlier than 2026-03-05 09:00 | Бундин В | 0.5h | 0.5h |
| 2523 | 12.2.2.7.2 | Осмотр подшипников/смазка по необходимости | 30min | 2026-07-30 09:00 A | 2026-07-30 09:30 A | 100% | start no earlier than 2026-07-30 09:00 | Бундин В | 0.5h | 0.5h |
| 2524 | 12.2.2.7.3 | ревизия крепления редуктора | 15min | 2026-03-05 09:00 A | 2026-03-05 09:15 A | 100% | start no earlier than 2026-03-05 09:00 | Бундин В | 0.25h | 0.25h |
| 2525 | 12.2.2.7.4 | ревизия ленты, обрезать нитки | 4h | 2026-03-26 09:00 A | 2026-03-26 13:00 A | 100% | start no earlier than 2026-03-26 09:00 | Тимофеев В | 4h | 4h |
| 2526 | 12.2.2.7.5 | вскрыть для чистки | 10min | 2026-05-19 09:00 A | 2026-05-19 09:10 A | 100% | start no earlier than 2026-05-21 09:00 | Труфанов А | 0.17h | 0.17h |
| 2527 | 12.2.2.7.6 | Вскрыть, осмотреть ленту (держится на одном | 30min | 2026-09-03 09:00 A | 2026-09-03 09:30 A | 100% | start no earlier than 2026-09-03 09:00 | Тимофеев В | 0.5h | 0.5h |
| 2528 | 12.2.2.7.7 | вскрыть для чистки, осмотреть ленту, закрыить после чистки | 10min | 2026-08-13 09:00 A | 2026-08-13 09:10 A | 100% | start no earlier than 2026-08-13 09:00 | Труфанов А | 0.17h | 0.17h |
| 2529 | 12.2.2.8 | **бункер-накопитель с шнековой разкгрузкой синий** | 80.01d | 2026-05-14 09:00 A | 2026-09-03 09:05 A | 100% |  |  | 9.08h | 9.08h |
| 2530 | 12.2.2.8.1 | смазка подшипников, ревизия редуктора (нужно разбирать все для смазки). Задний | 4h | 2026-05-14 09:00 A | 2026-05-14 13:00 A | 100% | start no earlier than 2026-05-14 09:00 | Тимофеев В | 4h | 4h |
| 2531 | 12.2.2.8.2 | смазка подшипников, ревизия редуктора (нужно разбирать все для смазки). Передний | 4h | 2026-05-28 09:00 A | 2026-05-28 13:00 A | 100% | start no earlier than 2026-05-28 09:00 | Бундин В | 4h | 4h |
| 2532 | 12.2.2.8.3 | Осмотр редуктора со стороны мойки, скрипит | 1h | 2026-08-13 09:00 A | 2026-08-13 10:00 A | 100% | start no earlier than 2026-08-13 09:00 | Тимофеев В | 1h | 1h |
| 2533 | 12.2.2.8.4 | Осмотр | 5min | 2026-09-03 09:00 A | 2026-09-03 09:05 A | 100% | start no earlier than 2026-09-03 09:00 | Тимофеев В | 0.08h | 0.08h |
| 2534 | 12.2.3 | **питатель экструдера** | 115.12d | 2026-03-26 09:00 A | 2026-09-03 10:00 A | 100% |  |  | 20h | 20h |
| 2535 | 12.2.3.1 | замена сальников питателя, сыпит муку | 4h | 2026-07-22 09:00 A | 2026-07-22 13:00 A | 100% | start no earlier than 2026-07-22 09:00 | Труфанов А | 4h | 4h |
| 2536 | 12.2.3.2 | ревизия подшипников, редутора, привода. Разборка/сборка (нужно разбирать) | 1h | 2026-03-26 09:00 A | 2026-03-26 10:00 A | 100% | start no earlier than 2026-03-26 09:00 | Тимофеев В | 1h | 1h |
| 2537 | 12.2.3.3 | ревизия подшипников, редутора, привода. Разборка/сборка (нужно разбирать) | 1h | 2026-08-19 09:00 A | 2026-08-19 10:00 A | 100% | start no earlier than 2026-08-19 09:00 | Тимофеев В | 1h | 1h |
| 2538 | 12.2.3.4 | замена шетсерен и подшипников узла. Поставили новый комплект | 4h | 2026-04-03 08:00 A | 2026-04-03 13:00 A | 100% | start no earlier than 2026-04-03 08:00 | Тимофеев В | 4h | 4h |
| 2539 | 12.2.3.5 | ревизия шестерни мал редуктора | 1h | 2026-04-16 09:00 A | 2026-04-16 10:00 A | 100% | start no earlier than 2026-04-16 09:00 | Тимофеев В | 1h | 1h |
| 2540 | 12.2.3.6 | ревизия шестерни мал редуктора | 2h | 2026-08-13 09:00 A | 2026-08-13 11:00 A | 100% | start no earlier than 2026-08-13 09:00 | Некрасов А; Зорькин В | 4h | 4h |
| 2541 | 12.2.3.7 | ревизия шестерни мал редуктора | 2h | 2026-08-27 09:00 A | 2026-08-27 11:00 A | 100% | start no earlier than 2026-08-27 09:00 | Некрасов А; Зорькин В | 4h | 4h |
| 2542 | 12.2.3.8 | ревизия шестерен питателя | 1h | 2026-09-03 09:00 A | 2026-09-03 10:00 A | 100% | start no earlier than 2026-09-03 09:00 | Некрасов А | 1h | 1h |
| 2543 | 12.2.4 | **привод прекондиционера** | 130.06d | 2026-03-05 09:00 A | 2026-09-03 09:30 A | 100% |  |  | 1.17h | 1.17h |
| 2544 | 12.2.4.1 | проверка масла | 5min | 2026-03-05 09:00 A | 2026-03-05 09:05 A | 100% | start no earlier than 2026-03-05 09:00 | Тимофеев В | 0.08h | 0.08h |
| 2545 | 12.2.4.2 | контроль крепления шестерен | 5min | 2026-03-05 09:00 A | 2026-03-05 09:05 A | 100% | start no earlier than 2026-03-05 09:00 | Тимофеев В | 0.08h | 0.08h |
| 2546 | 12.2.4.3 | ревизия подшипников и стопорных винтов | 30min | 2026-03-05 09:00 A | 2026-03-05 09:30 A | 100% | start no earlier than 2026-03-05 09:00 | Бундин В | 0.5h | 0.5h |
| 2547 | 12.2.4.4 | Осмотр шестерён(стоит звон), подшипников, сальников | 30min | 2026-09-03 09:00 A | 2026-09-03 09:30 A | 100% | start no earlier than 2026-09-03 09:00 | Тимофеев В | 0.5h | 0.5h |

| ID | WBS | Task | Duration | Start | Finish | Predecessors | Complete | Remaining | Total slack | Constraint | Resources | Work | Actual work |
| --- | --- | --- | --- | --- | --- | --- | --- | --- | --- | --- | --- | --- | --- |
| 2548 | 12.2.5 | **мотор-редуктор привод шнеков** | 10.02d | 2026-08-20 09:00 A | 2026-09-03 09:10 |  | 8% | 9.25d | 134.57d |  |  | 2.17h | 0.17h |
| 2549 | 12.2.5.1 | замена масла | 2h | 2026-08-20 09:00 | 2026-08-20 11:00 |  |  |  | 144.34d | start no earlier than 2026-08-20 09:00 | Тимофеев В | 2h |  |
| 2550 | 12.2.5.2 | Проверка масла (долил уровень) | 10min | 2026-09-03 09:00 A | 2026-09-03 09:10 A |  | 100% |  |  | start no earlier than 2026-09-03 09:00 | Труфанов А | 0.17h | 0.17h |
| 2551 | 12.2.6 | **редуктор шнеков экструдера - проверка масла** | 403.03d | 2025-02-17 09:00 A | 2026-09-03 09:15 A |  | 100% |  |  |  |  | 4.58h | 4.58h |
| 2552 | 12.2.6.1 | чистка фильтра редуктора | 15min | 2026-03-05 09:00 A | 2026-03-05 09:15 A |  | 100% |  |  | start no earlier than 2026-03-05 09:00 | Тимофеев В | 0.25h | 0.25h |
| 2553 | 12.2.6.2 | контоль цепи муфты привода | 5min | 2026-03-05 09:15 A | 2026-03-05 09:20 A | 2552, 2554, 2555, 2557, 2561, 2562 | 100% |  |  | start no earlier than 2026-03-04 08:00 | Тимофеев В | 0.08h | 0.08h |
| 2554 | 12.2.6.3 | чистка фильтра редуктора | 15min | 2026-03-19 09:00 A | 2026-03-19 09:15 A |  | 100% |  |  | start no earlier than 2026-03-19 09:00 | Тимофеев В | 0.25h | 0.25h |
| 2555 | 12.2.6.4 | чистка фильтра редуктора | 15min | 2026-06-18 09:00 A | 2026-06-18 09:15 A |  | 100% |  |  | start no earlier than 2026-06-18 09:00 | Тимофеев В | 0.25h | 0.25h |
| 2556 | 12.2.6.5 | чистка фильтра редуктора | 30min | 2026-08-06 08:00 A | 2026-08-06 09:30 A |  | 100% |  |  | start no earlier than 2026-08-06 08:00 | Тимофеев В | 0.5h | 0.5h |
| 2557 | 12.2.6.6 | чистка фильтра редуктора | 15min | 2026-07-14 09:00 A | 2026-07-14 09:15 A |  | 100% |  |  | start no earlier than 2026-07-14 09:00 | Бундин В | 0.25h | 0.25h |
| 2558 | 12.2.6.7 | тэны и термпоры шнеков | 2h | 2025-02-17 09:00 A | 2025-02-17 11:00 A |  | 100% |  |  | start no earlier than 2025-02-17 09:00 | Дедов В | 2h | 2h |
| 2559 | 12.2.6.8 | проверка масла | 5min | 2026-08-06 09:00 A | 2026-08-06 09:05 A |  | 100% |  |  | start no earlier than 2026-08-06 09:00 | Тимофеев В | 0.08h | 0.08h |
| 2560 | 12.2.6.9 | Проверка масла | 10min | 2026-07-30 09:00 A | 2026-07-30 09:10 A |  | 100% |  |  | start no earlier than 2026-07-30 09:00 | Бундин В | 0.17h | 0.17h |
| 2561 | 12.2.6.10 | чистка фильтра редуктора | 15min | 2026-08-13 09:00 A | 2026-08-13 09:15 A |  | 100% |  |  | start no earlier than 2026-08-13 09:00 | Тимофеев В | 0.25h | 0.25h |
| 2562 | 12.2.6.11 | чистка фильтра редуктора | 15min | 2026-08-20 09:00 A | 2026-08-20 09:15 A |  | 100% |  |  | start no earlier than 2026-08-20 09:00 | Тимофеев В | 0.25h | 0.25h |
| 2563 | 12.2.6.12 | Чистка фильтра | 15min | 2026-09-03 09:00 A | 2026-09-03 09:15 A |  | 100% |  |  | start no earlier than 2026-09-03 09:00 | Труфанов А | 0.25h | 0.25h |
| 2564 | 12.2.7 | **шкаф управления экструдером** | 130.02d | 2026-03-05 09:00 A | 2026-09-03 09:10 A |  | 100% |  |  |  |  | 1.33h | 1.33h |
| 2565 | 12.2.7.1 | продувка частотного привода | 10min | 2026-03-05 09:00 A | 2026-03-05 09:10 A |  | 100% |  |  | start no earlier than 2026-03-05 09:00 | Труфанов А | 0.17h | 0.17h |
| 2566 | 12.2.7.2 | продувка частотного привода | 10min | 2026-08-06 09:00 A | 2026-08-06 09:10 A |  | 100% |  |  | start no earlier than 2026-08-06 09:00 | Бундин В | 0.17h | 0.17h |
| 2567 | 12.2.7.3 | уложить и закрепить провода | 5min | 2026-03-05 09:10 A | 2026-03-05 09:15 A | 2565, 2566, 2569, 2570, 2571, 2572 | 100% |  |  | start no earlier than 2026-03-04 08:00 | Труфанов А | 0.08h | 0.08h |
| 2568 | 12.2.7.4 | протяжка контактов | 5min | 2026-03-05 09:15 A | 2026-03-05 09:20 A | 2567 | 100% |  |  | start no earlier than 2026-03-04 08:00 | Труфанов А | 0.08h | 0.08h |
| 2569 | 12.2.7.5 | продувка частотного привода | 10min | 2026-03-19 09:00 A | 2026-03-19 09:10 A |  | 100% |  |  | start no earlier than 2026-03-19 09:00 | Дедов В | 0.17h | 0.17h |
| 2570 | 12.2.7.6 | продувка частотного привода | 10min | 2026-05-14 09:00 A | 2026-05-14 09:10 A |  | 100% |  |  | start no earlier than 2026-05-14 09:00 | Макаревич А | 0.17h | 0.17h |
| 2571 | 12.2.7.7 | продувка частотного привода | 10min | 2026-08-13 09:00 A | 2026-08-13 09:10 A |  | 100% |  |  | start no earlier than 2026-08-13 09:00 | Некрасов А | 0.17h | 0.17h |
| 2572 | 12.2.7.8 | продувка частотного привода | 10min | 2026-08-20 09:00 A | 2026-08-20 09:10 A |  | 100% |  |  | start no earlier than 2026-08-20 09:00 | Дедов В | 0.17h | 0.17h |
| 2573 | 12.2.7.9 | продувка частотного привода | 10min | 2026-09-03 09:00 A | 2026-09-03 09:10 A |  | 100% |  |  | start no earlier than 2026-09-03 09:00 | Труфанов А | 0.17h | 0.17h |

| ID | WBS | Task | Duration | Start | Finish | Complete | Remaining | Total slack | Constraint | Resources | Work | Actual work |
| --- | --- | --- | --- | --- | --- | --- | --- | --- | --- | --- | --- | --- |
| 2574 | 12.2.8 | **пневотранспорт роторный питатель** | 120.04d | 2026-03-19 09:00 A | 2026-09-03 09:20 | 48% | 62.63d | 134.55d |  |  | 5.83h | 1.83h |
| 2575 | 12.2.8.1 | замена на ЗИП / вывод на ремонт промывку | 2h | 2026-06-25 09:00 | 2026-06-25 11:00 |  |  | 184.34d | start no earlier than 2026-06-25 09:00 | Труфанов А; Некрасов А | 4h |  |
| 2576 | 12.2.8.2 | проверка масла - высок температурная смазка | 1h | 2026-03-19 09:00 A | 2026-03-19 10:00 A | 100% |  |  | start no earlier than 2026-03-19 09:00 | Труфанов А | 1h | 1h |
| 2577 | 12.2.8.3 | Ревизия узлов/масла | 30min | 2026-07-30 09:00 A | 2026-07-30 09:30 A | 100% |  |  | start no earlier than 2026-07-30 09:00 | Труфанов А | 0.5h | 0.5h |
| 2578 | 12.2.8.4 | Ревизия узлов/масла (смазку свежую набил) | 20min | 2026-09-03 09:00 A | 2026-09-03 09:20 A | 100% |  |  | start no earlier than 2026-09-03 09:00 | Труфанов А | 0.33h | 0.33h |
| 2579 | 12.2.9 | **печь - валы этажей, подшипники, цепи** | 120.06d | 2026-03-19 09:00 A | 2026-09-03 09:30 A | 100% |  |  |  |  | 3.5h | 3.5h |
| 2580 | 12.2.9.1 | осмотр смазка | 30min | 2026-03-19 09:00 A | 2026-03-19 09:30 A | 100% |  |  | start no earlier than 2026-03-19 09:00 | Тимофеев В | 0.5h | 0.5h |
| 2581 | 12.2.9.2 | осмотр смазка сетки | 2h | 2026-05-14 09:00 A | 2026-05-14 11:00 A | 100% |  |  | start no earlier than 2026-05-14 09:00 | Макаревич А | 2h | 2h |
| 2582 | 12.2.9.3 | натяжка цепей | 30min | 2026-08-13 09:00 A | 2026-08-13 09:30 A | 100% |  |  | start no earlier than 2026-08-13 09:00 | Некрасов А | 0.5h | 0.5h |
| 2583 | 12.2.9.4 | натяжка цепей, контроль привода | 30min | 2026-09-03 09:00 A | 2026-09-03 09:30 A | 100% |  |  | start no earlier than 2026-09-03 09:00 | Труфанов А | 0.5h | 0.5h |
| 2584 | 12.2.10 | **вентиляторы обдува сушки** | 1d? | 2026-03-05 09:00 | 2026-03-05 18:00 |  |  | 263.59d |  | ТО | 8h | 8h |
| 2585 | 12.2.10.1 | чистка крыльчатки | 1d? | 2026-03-05 09:00 | 2026-03-05 18:00 |  |  | 263.59d | start no earlier than 2026-03-05 09:00 |  |  |  |
| 2586 | 12.2.10.2 | замена подшипников | 1d? | 2026-03-05 09:00 | 2026-03-05 18:00 |  |  | 263.59d | start no earlier than 2026-03-05 09:00 |  |  |  |
| 2587 | 12.2.11 | **шкаф управления тэнами сушки главный** | 130.02d | 2026-03-05 09:00 A | 2026-09-03 09:10 | 89% | 14.45d | 134.57d |  |  | 4.5h | 4h |
| 2588 | 12.2.11.1 | протяжка контактов, продувка шкафа, частотного привода | 10min | 2026-03-05 09:00 A | 2026-03-05 09:10 A | 100% |  |  | start no earlier than 2026-03-05 09:00 | Труфанов А | 0.17h | 0.17h |
| 2589 | 12.2.11.2 | протяжка контактов, продувка шкафа, частотного привода | 10min | 2026-07-14 09:00 A | 2026-07-14 09:10 A | 100% |  |  | start no earlier than 2026-07-14 09:00 | Некрасов А | 0.17h | 0.17h |
| 2590 | 12.2.11.3 | осмотср замена подгоревших кабелей | 30min | 2026-05-21 09:00 A | 2026-05-21 09:30 A | 100% |  |  | start no earlier than 2026-05-21 09:00 | Тимофеев В | 0.5h | 0.5h |
| 2591 | 12.2.11.4 | протяжка контактов, продувка шкафа, частотного привода | 30min | 2026-08-06 09:00 | 2026-08-06 09:30 |  |  | 154.53d | start no earlier than 2026-08-06 08:00 | Бундин В | 0.5h |  |
| 2592 | 12.2.11.5 | осмотср замена подгоревших кабелей | 30min | 2026-05-21 09:00 A | 2026-05-21 09:30 A | 100% |  |  | start no earlier than 2026-05-21 09:00 | Некрасов А | 0.5h | 0.5h |
| 2593 | 12.2.11.6 | продуть, протяжка контактов | 1h | 2026-05-21 08:00 A | 2026-05-21 10:00 A | 100% |  |  | start no earlier than 2026-05-21 08:00 | Тимофеев В | 1h | 1h |
| 2594 | 12.2.11.7 | осмотср замена подгоревших кабелей | 30min | 2026-07-14 09:00 A | 2026-07-14 09:30 A | 100% |  |  | start no earlier than 2026-07-14 09:00 | Труфанов А | 0.5h | 0.5h |
| 2595 | 12.2.11.8 | осмотср замена подгоревших кабелей | 1h | 2026-08-13 09:00 A | 2026-08-13 10:00 A | 100% |  |  | start no earlier than 2026-08-13 09:00 | Труфанов А | 1h | 1h |
| 2596 | 12.2.11.9 | продувка | 10min | 2026-09-03 09:00 A | 2026-09-03 09:10 A | 100% |  |  | start no earlier than 2026-09-03 09:00 | Труфанов А | 0.17h | 0.17h |
| 2597 | 12.2.12 | **шкаф управления тэнами твердотельный** | 130.02d | 2026-03-05 09:00 A | 2026-09-03 09:10 A | 100% |  |  |  |  | 1.33h | 1.33h |
| 2598 | 12.2.12.1 | продувка, протяжка | 10min | 2026-03-05 09:00 A | 2026-03-05 09:10 A | 100% |  |  | start no earlier than 2026-03-05 09:00 | Труфанов А | 0.17h | 0.17h |
| 2599 | 12.2.12.2 | продувка, протяжка | 10min | 2026-07-14 09:00 A | 2026-07-14 09:10 A | 100% |  |  | start no earlier than 2026-07-14 09:00 | Труфанов А | 0.17h | 0.17h |
| 2600 | 12.2.12.3 | продувка, протяжка | 10min | 2026-08-06 09:00 A | 2026-08-06 09:10 A | 100% |  |  | start no earlier than 2026-08-06 08:00 | Бундин В | 0.17h | 0.17h |
| 2601 | 12.2.12.4 | замена подгоревших кабелей | 30min | 2026-08-13 09:00 A | 2026-08-13 09:30 A | 100% |  |  | start no earlier than 2026-08-13 09:00 | Труфанов А | 0.5h | 0.5h |
| 2602 | 12.2.12.5 | продувка, протяжка | 10min | 2026-08-06 09:00 A | 2026-08-06 09:10 A | 100% |  |  | start no earlier than 2026-08-06 08:00 | Труфанов А | 0.17h | 0.17h |
| 2603 | 12.2.12.6 | продувка, протяжка | 10min | 2026-09-03 09:00 A | 2026-09-03 09:10 A | 100% |  |  | start no earlier than 2026-09-03 09:00 | Труфанов А | 0.17h | 0.17h |

| ID | WBS | Task | Duration | Start | Finish | Complete | Remaining | Total slack | Constraint | Resources | Work | Actual work |
| --- | --- | --- | --- | --- | --- | --- | --- | --- | --- | --- | --- | --- |
| 2604 | 12.2.13 | **конвейер №1 с печи в дрожировщик** | 130.06d | 2026-03-05 09:00 A | 2026-09-03 09:30 A | 100% |  |  |  |  | 2.08h | 2.08h |
| 2605 | 12.2.13.1 | ослабить ленту для чистки барабана / натяжка после чистки | 30min | 2026-03-05 09:00 A | 2026-03-05 09:30 A | 100% |  |  | start no earlier than 2026-03-05 09:00 | Тимофеев В | 0.5h | 0.5h |
| 2606 | 12.2.13.2 | ревизия люфтов, фиксации смазки подшипников | 30min | 2026-03-05 09:00 A | 2026-03-05 09:30 A | 100% |  |  | start no earlier than 2026-03-05 09:00 | Тимофеев В | 0.5h | 0.5h |
| 2607 | 12.2.13.3 | ослабить ленту для чистки барабана / натяжка после чистки | 10min | 2026-03-12 09:00 A | 2026-03-12 09:10 A | 100% |  |  | start no earlier than 2026-03-12 09:00 | Тимофеев В | 0.17h | 0.17h |
| 2608 | 12.2.13.4 | чистка ленты контроль операторов, если нужно ослаить | 15min | 2026-08-13 09:00 A | 2026-08-13 09:15 A | 100% |  |  | start no earlier than 2026-08-13 09:00 | Тимофеев В | 0.25h | 0.25h |
| 2609 | 12.2.13.5 | ревизия люфтов, фиксации смазки подшипников | 30min | 2026-09-03 09:00 A | 2026-09-03 09:30 A | 100% |  |  | start no earlier than 2026-09-03 09:00 | Тимофеев В | 0.5h | 0.5h |
| 2610 | 12.2.13.6 | ослабить ленту для чистки барабана / натяжка после чистки | 10min | 2026-09-03 09:00 A | 2026-09-03 09:10 A | 100% |  |  | start no earlier than 2026-09-03 09:00 | Тимофеев В | 0.17h | 0.17h |
| 2611 | 12.2.14 | **барабан смесительный дрожировка** | 700.03d | 2023-12-28 09:00 A | 2026-09-03 09:15 | 82% | 127.28d | 134.56d |  | ТО | 125h | 102.27h |
| 2612 | 12.2.14.1 | ревизия состяния валов, подшипников | 2h | 2026-02-25 09:00 A | 2026-02-25 11:00 A | 100% |  |  | start no earlier than 2026-02-25 09:00 | Тимофеев В | 2h | 2h |
| 2613 | 12.2.14.2 | ремонт вала временный. 11 час | 2h | 2026-02-25 09:00 A | 2026-02-25 11:00 A | 100% |  |  | start no earlier than 2026-02-25 09:00 | Тимофеев В | 2h | 2h |
| 2614 | 12.2.14.3 | замена подшипников мотора привода | 2h | 2026-02-25 09:00 A | 2026-02-25 11:00 A | 100% |  |  | start no earlier than 2026-02-25 09:00 | Тимофеев В | 2h | 2h |
| 2615 | 12.2.14.4 | заменаить вал дрожировки по стрелкам на 11час / после прихода с ремонта | 2h | 2026-04-30 09:00 A | 2026-04-30 11:00 A | 100% |  |  | start no earlier than 2026-04-30 09:00 | Тимофеев В | 2h | 2h |
| 2616 | 12.2.14.5 | насос подачи жира и смесительный узел, баки подогрева | 2h | 2023-12-28 09:00 | 2023-12-28 11:00 |  |  | 834.34d | start no earlier than 2023-12-28 09:00 | ТО | 2h |  |
| 2617 | 12.2.14.6 | Осмотр подшипников редукторов | 20min | 2026-07-30 09:00 A | 2026-07-30 09:20 A | 100% |  |  | start no earlier than 2026-07-30 09:00 | Труфанов А | 0.33h | 0.33h |
| 2618 | 12.2.14.7 | Осмотр подшипников редукторов | 15min | 2026-08-13 09:00 A | 2026-08-13 09:15 A | 100% |  |  | start no earlier than 2026-08-13 09:00 | Тимофеев В | 0.25h | 0.25h |
| 2619 | 12.2.14.8 | Осмотр подшипников редукторов | 15min | 2026-09-03 09:00 A | 2026-09-03 09:15 A | 100% |  |  | start no earlier than 2026-09-03 09:00 | Тимофеев В | 0.25h | 0.25h |
| 2620 | 12.2.14.9 | Осмотр соединений фитингов, трехходового крана бежит/не бежит | 10min | 2026-09-03 09:00 A | 2026-09-03 09:10 A | 100% |  |  | start no earlier than 2026-09-03 09:00 | Тимофеев В | 0.17h | 0.17h |
| 2621 | 12.2.15 | **Узел подачи гидролизата** | 37.02d | 2026-07-14 09:00 A | 2026-09-03 09:10 A | 100% |  |  |  |  | 2.5h | 2.5h |
| 2622 | 12.2.15.1 | Дефектовка/ выяснить причу почему еле крутит/ устранить | 2h | 2026-07-14 09:00 A | 2026-07-14 11:00 A | 100% |  |  | start no earlier than 2026-07-14 09:00 | Бундин В | 2h | 2h |
| 2623 | 12.2.15.2 | осмотр цепи, редуктора, протяжка | 20min | 2026-08-13 09:00 A | 2026-08-13 09:20 A | 100% |  |  | start no earlier than 2026-08-13 09:00 | Тимофеев В | 0.33h | 0.33h |
| 2624 | 12.2.15.3 | Осмотр/ревизия насоса гидролизата, проверка всех соединений | 10min | 2026-09-03 09:00 A | 2026-09-03 09:10 A | 100% |  |  | start no earlier than 2026-09-03 09:00 | Тимофеев В | 0.17h | 0.17h |
| 2625 | 12.2.16 | **конвейер №2 с дрожировки в охладитель** | 130.06d | 2026-03-05 09:00 A | 2026-09-03 09:30 A | 100% |  |  |  |  | 2.17h | 2.17h |
| 2626 | 12.2.16.1 | ослабить ленту для чистки барабана / натяжка после чистки | 30min | 2026-03-05 09:00 A | 2026-03-05 09:30 A | 100% |  |  | start no earlier than 2026-03-05 09:00 | Тимофеев В | 0.5h | 0.5h |
| 2627 | 12.2.16.2 | ревизия люфтов, фиксации смазки подшипников | 30min | 2026-03-05 09:00 A | 2026-03-05 09:30 A | 100% |  |  | start no earlier than 2026-03-05 09:00 | Тимофеев В | 0.5h | 0.5h |
| 2628 | 12.2.16.3 | ослабить ленту для чистки барабана / натяжка после чистки | 10min | 2026-03-12 09:00 A | 2026-03-12 09:10 A | 100% |  |  | start no earlier than 2026-03-12 09:00 | Тимофеев В | 0.17h | 0.17h |
| 2629 | 12.2.16.4 | чистка ленты контроль операторов, если нужно ослаить | 15min | 2026-08-13 09:00 A | 2026-08-13 09:15 A | 100% |  |  | start no earlier than 2026-08-13 09:00 | Тимофеев В | 0.25h | 0.25h |
| 2630 | 12.2.16.5 | чистка ленты контроль операторов, если нужно ослаить | 15min | 2026-08-13 09:00 A | 2026-08-13 09:15 A | 100% |  |  | start no earlier than 2026-08-13 09:00 | Тимофеев В | 0.25h | 0.25h |
| 2631 | 12.2.16.6 | ослабить ленту для чистки барабана / натяжка после чистки | 30min | 2026-09-03 09:00 A | 2026-09-03 09:30 A | 100% |  |  | start no earlier than 2026-09-03 09:00 | Тимофеев В | 0.5h | 0.5h |

| ID | WBS | Task | Duration | Start | Finish | Complete | Remaining | Total slack | Constraint | Resources | Work | Actual work |
| --- | --- | --- | --- | --- | --- | --- | --- | --- | --- | --- | --- | --- |
| 2632 | 12.2.17 | **охладитель сеточный** | 625.12d? | 2024-04-18 09:00 A | 2026-09-10 10:00 | 40% | 377.14d? | 129.47d |  |  | 15.17h | 10h |
| 2633 | 12.2.17.1 | ревизия осей сетки, замена шплинтов | 2h | 2024-04-18 09:00 A | 2024-04-18 11:00 A | 100% |  |  | start no earlier than 2024-04-18 08:00 | Некрасов А; Черепанов И | 4h | 4h |
| 2634 | 12.2.17.2 | ревизия привода - масло, ремень (не проверено масло) | 10min | 2026-03-19 09:00 A | 2026-03-19 09:10 A | 100% |  |  | start no earlier than 2026-03-05 09:00 | Тимофеев В | 0.17h | 0.17h |
| 2635 | 12.2.17.3 | ревизия привода - масло, ремень (не проверено масло) | 10min | 2026-07-14 09:00 | 2026-07-14 09:10 |  |  | 171.57d | start no earlier than 2026-07-14 09:00 | Некрасов А | 0.17h |  |
| 2636 | 12.2.17.4 | ревизия состояния сетки | 2h | 2026-07-14 09:00 A | 2026-07-14 11:00 A | 100% |  |  | start no earlier than 2026-07-14 08:00 | Некрасов А | 2h | 2h |
| 2637 | 12.2.17.5 | ревизия состояния сетки | 1h | 2026-07-30 09:00 A | 2026-07-30 10:00 A | 100% |  |  | start no earlier than 2026-07-30 09:00 | Бундин В | 1h | 1h |
| 2638 | 12.2.17.6 | ревизия состояния сетки | 1d? | 2026-08-20 09:00 | 2026-08-20 18:00 |  |  | 143.59d | start no earlier than 2026-08-20 09:00 |  |  |  |
| 2639 | 12.2.17.7 | контроль натяжки цепей | 20min | 2026-03-05 09:00 A | 2026-03-05 09:20 A | 100% |  |  | start no earlier than 2026-03-05 09:00 | Бундин В | 0.33h | 0.33h |
| 2640 | 12.2.17.8 | текущий ремонт силиконовых уплотнений | 30min | 2026-03-05 09:00 A | 2026-03-05 09:30 A | 100% |  |  | start no earlier than 2026-03-05 09:00 | Бундин В | 0.5h | 0.5h |
| 2641 | 12.2.17.9 | осмотр ремней, натяжка цепей, ремонт силиконовых отбортовок | 1h | 2026-05-14 09:00 A | 2026-05-14 10:00 A | 100% |  |  | start no earlier than 2026-05-14 09:00 | Макаревич А | 1h | 1h |
| 2642 | 12.2.17.10 | осмотр ремней, натяжка цепей, ремонт силиконовых отбортовок | 1h | 2026-07-14 09:00 | 2026-07-14 10:00 |  |  | 171.47d | start no earlier than 2026-07-14 09:00 | Некрасов А | 1h |  |
| 2643 | 12.2.17.11 | осмотр ремней, натяжка цепей, ремонт силиконовых отбортовок | 1h | 2026-07-30 09:00 A | 2026-07-30 10:00 A | 100% |  |  | start no earlier than 2026-07-30 09:00 | Бундин В | 1h | 1h |
| 2644 | 12.2.17.12 | осмотр ремней, натяжка цепей, ремонт силиконовых отбортовок | 1h | 2026-08-20 09:00 | 2026-08-20 10:00 |  |  | 144.47d | start no earlier than 2026-08-20 09:00 | Труфанов А; Некрасов А | 2h |  |
| 2645 | 12.2.17.13 | осмотр ремней, натяжка цепей, ремонт силиконовых отбортовок | 1h | 2026-08-20 09:00 | 2026-08-20 10:00 |  |  | 144.47d | start no earlier than 2026-08-20 09:00 | Дедов В | 1h |  |
| 2646 | 12.2.17.14 | Ревизия сетки, контроль роспуска, подогнуть, где что можно, что бы не зацепилось | 1h | 2026-09-10 09:00 | 2026-09-10 10:00 |  |  | 129.47d | start no earlier than 2026-09-10 09:00 | Макаревич А | 1h |  |
| 2647 | 12.2.18 | **конвейер 3 с охладителя в упаковку** | 16.03d | 2026-08-12 09:00 A | 2026-09-03 09:15 A | 100% |  |  |  | ТО | 129h | 129h |
| 2648 | 12.2.18.1 | ослабить ленту для чистки барабана / натяжка после чистки | 15min | 2026-08-12 09:00 A | 2026-08-12 09:15 A | 100% |  |  | start no earlier than 2026-08-12 09:00 | Тимофеев В | 0.25h | 0.25h |
| 2649 | 12.2.18.2 | ревизия люфтов, фиксации, смазки подшипников | 15min | 2026-08-12 09:00 A | 2026-08-12 09:15 A | 100% |  |  | start no earlier than 2026-08-12 09:00 | Тимофеев В | 0.25h | 0.25h |
| 2650 | 12.2.18.3 | ослабить ленту для чистки барабана / натяжка после чистки | 15min | 2026-09-03 09:00 A | 2026-09-03 09:15 A | 100% |  |  | start no earlier than 2026-09-03 09:00 | Макаревич А | 0.25h | 0.25h |
| 2651 | 12.2.19 | **упаковка** | 700.25d | 2023-12-28 09:00 A | 2026-09-03 11:00 | 67% | 233.42d | 134.34d |  | ТО | 5100h | 3400h |
| 2652 | 12.2.19.1 | НОТИС 1 | 2h | 2023-12-28 09:00 | 2023-12-28 11:00 |  |  | 834.34d | start no earlier than 2023-12-28 09:00 | ТО | 2h |  |
| 2653 | 12.2.19.2 | НОТИС 2 | 2h | 2023-12-28 09:00 | 2023-12-28 11:00 |  |  | 834.34d | start no earlier than 2023-12-28 09:00 | ТО | 2h |  |
| 2654 | 12.2.19.3 | запайщик 1 | 2h | 2026-06-18 09:00 A | 2026-06-18 11:00 A | 100% |  |  | start no earlier than 2026-06-18 09:00 | Труфанов А | 2h | 2h |
| 2655 | 12.2.19.4 | запайщик 2 | 2h | 2026-06-18 09:00 A | 2026-06-18 11:00 A | 100% |  |  | start no earlier than 2026-06-18 09:00 | Труфанов А | 2h | 2h |
| 2656 | 12.2.19.5 | запайщик 1 проверка перемычек/тефлона замена при необходимости | 2h | 2026-09-03 09:00 A | 2026-09-03 11:00 A | 100% |  |  | start no earlier than 2026-09-03 09:00 | Макаревич А | 2h | 2h |
| 2657 | 12.2.19.6 | запайщик 1 проверка перемычек/тефлона замена при необходимости | 2h | 2026-09-03 09:00 A | 2026-09-03 11:00 A | 100% |  |  | start no earlier than 2026-09-03 09:00 | Макаревич А | 2h | 2h |

| ID | WBS | Task | Duration | Start | Finish | Predecessors | Complete | Remaining | Total slack | Free slack | Constraint | Resources | Work | Actual work |
| --- | --- | --- | --- | --- | --- | --- | --- | --- | --- | --- | --- | --- | --- | --- |
| 2658 | 12.2.20 | **квадропак** | 10.25d | 2026-08-27 09:00 A | 2026-09-10 11:00 |  | 18% | 8.39d | 129.34d |  |  |  | 5.5h | 1h |
| 2659 | 12.2.20.1 | смазка вращающиющихся механизмов | 30min | 2026-08-27 09:00 | 2026-08-27 09:30 |  |  |  | 139.34d | 0d | start no earlier than 2026-08-27 09:00 | Тимофеев В | 0.5h |  |
| 2660 | 12.2.20.2 | протяжка креплений поворотных лап захвата | 30min | 2026-08-27 09:30 | 2026-08-27 10:00 | 2659 |  |  | 139.34d | 0d | start no earlier than 2026-03-05 09:00 | Тимофеев В | 0.5h |  |
| 2661 | 12.2.20.3 | чистка вала ленты выгрзного транспортера | 30min | 2026-08-27 10:00 | 2026-08-27 10:30 | 2660 |  |  | 139.34d | 0d | start no earlier than 2026-03-31 08:00 | Тимофеев В | 0.5h |  |
| 2662 | 12.2.20.4 | осмотр приводной системы нории / смазка | 30min | 2026-08-27 10:30 | 2026-08-27 11:00 | 2661 |  |  | 139.34d |  | start no earlier than 2026-08-12 09:00 | Тимофеев В | 0.5h |  |
| 2663 | 12.2.20.5 | осмотр приводной системы нории / смазка | 30min | 2026-08-27 10:30 | 2026-08-27 11:00 | 2661 |  |  | 139.34d |  | start no earlier than 2026-08-20 09:00 | Дедов В | 0.5h |  |
| 2664 | 12.2.20.6 | осмотр приводной системы нории / смазка | 30min | 2026-09-03 09:00 A | 2026-09-03 09:30 A |  | 100% |  |  |  | start no earlier than 2026-09-03 09:00 | Макаревич А | 0.5h | 0.5h |
| 2665 | 12.2.20.7 | протяжка креплений поворотных лап захвата | 30min | 2026-09-03 09:00 A | 2026-09-03 09:30 A |  | 100% |  |  |  | start no earlier than 2026-09-03 09:00 | Макаревич А | 0.5h | 0.5h |
| 2666 | 12.2.20.8 | снимать ковши для доступка к подшинику, нуждающего в смазке( сообщил Некрасов) | 2h | 2026-09-10 09:00 | 2026-09-10 11:00 |  |  |  | 129.34d |  | start no earlier than 2026-09-10 09:00 | Некрасов А | 2h |  |
| 2667 | 12.2.21 | **БЕСТРОМ** | 705.06d | 2023-12-28 09:00 A | 2026-09-10 09:30 |  | 71% | 201.45d | 129.53d |  |  | ТО | 1096.83h | 67.83h |
| 2668 | 12.2.21.1 | чистка тен с демантожем | 2.5h | 2026-03-05 09:00 A | 2026-03-05 11:30 A |  | 100% |  |  |  | start no earlier than 2026-03-05 09:00 | Бундин В | 2.5h | 2.5h |
| 2669 | 12.2.21.2 | ослабить ленту для чистки барабана / натяжка после чистки | 10min | 2026-03-12 09:00 A | 2026-03-12 09:10 A |  | 100% |  |  |  | start no earlier than 2026-03-12 09:00 | Бундин В | 0.17h | 0.17h |
| 2670 | 12.2.21.3 | чистка тенов | 1h | 2026-05-14 09:00 A | 2026-05-14 10:00 A |  | 100% |  |  |  | start no earlier than 2026-05-14 09:00 | Макаревич А | 1h | 1h |
| 2671 | 12.2.21.4 | чистка тенов | 2h | 2026-07-14 09:00 | 2026-07-14 11:00 |  |  |  | 171.34d |  | start no earlier than 2026-07-14 09:00 | Бундин В | 2h |  |
| 2672 | 12.2.21.5 | конвейер и вибробункер БЕСТРОМ | 2h | 2023-12-28 09:00 | 2023-12-28 11:00 |  |  |  | 834.34d |  | start no earlier than 2023-12-28 09:00 | ТО | 2h |  |
| 2673 | 12.2.21.6 | бестром чистка тен, проверка тефлона, роликов (согласовать с мастером) | 2h | 2026-07-08 09:00 A | 2026-07-08 11:00 A |  | 100% |  |  |  | start no earlier than 2026-07-08 09:00 | Бобренок В | 2h | 2h |
| 2674 | 12.2.21.7 | бестром чистка тен, проверка тефлона, роликов (согласовать с мастером) | 1h | 2026-07-30 09:00 A | 2026-07-30 10:00 A |  | 100% |  |  |  | start no earlier than 2026-07-30 09:00 | Тимофеев В | 1h | 1h |
| 2675 | 12.2.21.8 | бестром чистка тен, проверка тефлона, роликов (согласовать с мастером) | 1h | 2026-08-13 09:00 A | 2026-08-13 10:00 A |  | 100% |  |  |  | start no earlier than 2026-08-13 09:00 | Тимофеев В | 1h | 1h |
| 2676 | 12.2.21.9 | бестром чистка тен, проверка тефлона, роликов (согласовать с мастером) | 1h | 2026-08-20 09:00 A | 2026-08-20 10:00 A |  | 100% |  |  |  | start no earlier than 2026-08-20 09:00 | Дедов В | 1h | 1h |
| 2677 | 12.2.21.10 | бестром чистка тен, проверка тефлона, роликов (согласовать с мастером) | 1h | 2026-09-03 09:00 A | 2026-09-03 10:00 A |  | 100% |  |  |  | start no earlier than 2026-09-03 09:00 | Макаревич А | 1h | 1h |
| 2678 | 12.2.21.11 | Замена линейного подшипника ISKRA KH2030-PP (согласование с Домоводовым) не делали, все норм там) | 2h | 2026-09-03 09:00 A | 2026-09-03 11:00 A |  | 100% |  |  |  | start no earlier than 2026-09-03 09:00 | Макаревич А | 2h | 2h |
| 2679 | 12.2.21.12 | ослабить ленту для чистки барабана / натяжка после чистки | 10min | 2026-09-10 09:00 | 2026-09-10 09:10 |  |  |  | 129.57d |  | start no earlier than 2026-09-10 09:00 | Макаревич А | 0.17h |  |
| 2680 | 12.2.21.13 | Замена поролоновой губки на горизонтальных тенах запайки пакетов | 30min | 2026-09-10 09:00 | 2026-09-10 09:30 |  |  |  | 129.53d |  | start no earlier than 2026-09-10 09:00 | Макаревич А | 0.5h |  |
| 2681 | 12.2.22 | **электрооборудование** | 700.02d? | 2023-12-28 09:00 A | 2026-09-03 09:10 |  |  | 696.66d? | 134.57d |  |  |  | 69.33h | 0.33h |
| 2682 | 12.2.22.1 | ВРУ3 | 30min | 2024-10-03 09:00 | 2024-10-03 09:30 |  |  |  | 634.53d |  | start no earlier than 2024-10-03 09:00 | Тимофеев В | 0.5h |  |
| 2683 | 12.2.22.2 | ВРУ4 | 2h | 2023-12-28 09:00 | 2023-12-28 11:00 |  |  |  | 834.34d |  | start no earlier than 2023-12-28 09:00 | ТО | 2h |  |
| 2684 | 12.2.22.3 | ВРУ5 | 2h | 2023-12-28 09:00 | 2023-12-28 11:00 |  |  |  | 834.34d |  | start no earlier than 2023-12-28 09:00 | ТО | 2h |  |
| 2685 | 12.2.22.4 | ВРУ6 | 2h | 2023-12-28 09:00 | 2023-12-28 11:00 |  |  |  | 834.34d |  | start no earlier than 2023-12-28 09:00 | ТО | 2h |  |
| 2686 | 12.2.22.5 | ЩР4 у печи | 2h | 2023-12-28 09:00 | 2023-12-28 11:00 |  |  |  | 834.34d |  | start no earlier than 2023-12-28 09:00 | ТО | 2h |  |
| 2687 | 12.2.22.6 | ЩО1 у печи | 30min | 2024-10-03 09:00 | 2024-10-03 09:30 |  |  |  | 634.53d |  | start no earlier than 2024-10-03 09:00 | Тимофеев В | 0.5h |  |
| 2688 | 12.2.22.7 | ЩР5 у жиротопки | 2h | 2023-12-28 09:00 | 2023-12-28 11:00 |  |  |  | 834.34d |  | start no earlier than 2023-12-28 09:00 | ТО | 2h |  |
| 2689 | 12.2.22.8 | ЩР6 упаковка стна жир | 2h | 2023-12-28 09:00 | 2023-12-28 11:00 |  |  |  | 834.34d |  | start no earlier than 2023-12-28 09:00 | ТО | 2h |  |
| 2690 | 12.2.22.9 | ЩР7 упаковка колонна | 2h | 2023-12-28 09:00 | 2023-12-28 11:00 |  |  |  | 834.34d |  | start no earlier than 2023-12-28 09:00 | ТО | 2h |  |
| 2691 | 12.2.22.10 | ЩР8 склад навесок | 2h | 2023-12-28 09:00 | 2023-12-28 11:00 |  |  |  | 834.34d |  | start no earlier than 2023-12-28 09:00 | ТО | 2h |  |
| 2692 | 12.2.22.11 | ЩР9 2 этаж | 2h | 2023-12-28 09:00 | 2023-12-28 11:00 |  |  |  | 834.34d |  | start no earlier than 2023-12-28 09:00 | ТО | 2h |  |
| 2693 | 12.2.22.12 | электрокотел 1 - 2 цех | 2h | 2023-12-28 09:00 | 2023-12-28 11:00 |  |  |  | 834.34d |  | start no earlier than 2023-12-28 09:00 | ТО | 2h |  |
| 2694 | 12.2.22.13 | электрокотел 2 - 2 цех | 1d? | 2023-12-28 09:00 | 2023-12-28 18:00 |  |  |  | 833.59d |  | start no earlier than 2023-12-28 09:00 | ТО | 8h |  |
| 2695 | 12.2.22.14 | электрокотел 3 - 2 цех | 1d? | 2023-12-28 09:00 | 2023-12-28 18:00 |  |  |  | 833.59d |  | start no earlier than 2023-12-28 09:00 | ТО | 8h |  |
| 2696 | 12.2.22.15 | бойлер 4 2 цех раковина | 1d? | 2023-12-28 09:00 | 2023-12-28 18:00 |  |  |  | 833.59d |  | start no earlier than 2023-12-28 09:00 | ТО | 8h |  |
| 2697 | 12.2.22.16 | бойлер 5 2 цех душ М | 1d? | 2023-12-28 09:00 | 2023-12-28 18:00 |  |  |  | 833.59d |  | start no earlier than 2023-12-28 09:00 | ТО | 8h |  |
| 2698 | 12.2.22.17 | бойлер 6 2 цех душ Ж | 1d? | 2023-12-28 09:00 | 2023-12-28 18:00 |  |  |  | 833.59d |  | start no earlier than 2023-12-28 09:00 | ТО | 8h |  |
| 2699 | 12.2.22.18 | насос санитарный | 1d? | 2023-12-28 09:00 | 2023-12-28 18:00 |  |  |  | 833.59d |  | start no earlier than 2023-12-28 09:00 | ТО | 8h |  |
| 2700 | 12.2.22.19 | ЩР4 у печи продувка | 10min | 2026-09-03 09:00 A | 2026-09-03 09:10 A |  | 100% |  |  |  | start no earlier than 2026-09-03 09:00 | Труфанов А | 0.17h | 0.17h |
| 2701 | 12.2.22.20 | ЩО1 у печи продувка | 10min | 2026-09-03 09:00 A | 2026-09-03 09:10 A |  | 100% |  |  |  | start no earlier than 2026-09-03 09:00 | Труфанов А | 0.17h | 0.17h |

| ID | WBS | Task | Duration | Start | Finish | Complete | Remaining | Total slack | Constraint | Resources | Work | Actual work |
| --- | --- | --- | --- | --- | --- | --- | --- | --- | --- | --- | --- | --- |
| 2702 | 12.2.23 | **Компрессор 2 цех** | 25.06d | 2026-08-06 09:00 A | 2026-09-10 09:30 | 88% | 3.13d | 129.53d |  | ТО | 4h | 3.5h |
| 2703 | 12.2.23.1 | продувка фильтров | 30min | 2026-08-06 09:00 A | 2026-08-06 09:30 A | 100% |  |  | start no earlier than 2026-08-06 09:00 | Тимофеев В | 0.5h | 0.5h |
| 2704 | 12.2.23.2 | слив конденсат с осушителя | 30min | 2026-08-06 09:00 A | 2026-08-06 09:30 A | 100% |  |  | start no earlier than 2026-08-06 09:00 | Тимофеев В | 0.5h | 0.5h |
| 2705 | 12.2.23.3 | слив конденсат с осушителя | 30min | 2026-08-20 09:00 A | 2026-08-20 09:30 A | 100% |  |  | start no earlier than 2026-08-20 09:00 | Дедов В | 0.5h | 0.5h |
| 2706 | 12.2.23.4 | продувка фильтров | 30min | 2026-08-29 09:00 A | 2026-08-31 09:30 A | 100% |  |  | start no earlier than 2026-08-29 09:00 | Макаревич А | 0.5h | 0.5h |
| 2707 | 12.2.23.5 | слив конденсат с осушителя | 30min | 2026-08-29 09:00 A | 2026-08-31 09:30 A | 100% |  |  | start no earlier than 2026-08-29 09:00 | Макаревич А | 0.5h | 0.5h |
| 2708 | 12.2.23.6 | слив конденсат с осушителя | 30min | 2026-08-29 09:00 A | 2026-08-31 09:30 A | 100% |  |  | start no earlier than 2026-08-29 09:00 | Макаревич А | 0.5h | 0.5h |
| 2709 | 12.2.23.7 | слив конденсат с осушителя | 30min | 2026-09-03 09:00 A | 2026-09-03 09:30 A | 100% |  |  | start no earlier than 2026-09-03 09:00 | Макаревич А | 0.5h | 0.5h |
| 2710 | 12.2.23.8 | продувка фильтров (дать размеры фильтра) | 30min | 2026-09-10 09:00 | 2026-09-10 09:30 |  |  | 129.53d | start no earlier than 2026-09-10 09:00 | Макаревич А | 0.5h |  |
| 2711 | 12.2.24 | **насосная станция 2 цех** | 130.06d | 2026-03-05 09:00 A | 2026-09-03 09:30 | 50% | 65.03d | 134.53d |  |  | 1h | 0.5h |
| 2712 | 12.2.24.1 | замена фильтров | 30min | 2026-03-05 09:00 A | 2026-03-05 09:30 A | 100% |  |  | start no earlier than 2026-03-05 09:00 | Тимофеев В | 0.5h | 0.5h |
| 2713 | 12.2.24.2 | замена фильтров (перенос замены на 10.09.26 закончились) | 30min | 2026-09-03 09:00 | 2026-09-03 09:30 |  |  | 134.53d | start no earlier than 2026-09-03 09:00 | Труфанов А | 0.5h |  |
| 2714 | 12.2.25 | **приточнго-вытяжная венгтиляция и смесительный узел** | 0.12d | 2026-04-16 09:00 | 2026-04-16 10:00 |  |  | 234.47d |  | ТО | 3h |  |
| 2715 | 12.2.25.1 | замена фильтра | 1h | 2026-04-16 09:00 | 2026-04-16 10:00 |  |  | 234.47d | start no earlier than 2026-04-16 09:00 | Труфанов А; Некрасов А | 2h |  |
| 2716 | 12.2.26 | **кондиционер 1** | 620.04d? | 2024-04-18 09:00 A | 2026-09-03 09:20 A | 100% |  |  |  | ТО | 4981h | 4981h |
| 2717 | 12.2.26.1 | чистка фильтра | 1h | 2024-04-18 09:00 A | 2024-04-18 10:00 A | 100% |  |  | start no earlier than 2024-04-18 08:00 | Черепанов И; Некрасов А | 2h | 2h |
| 2718 | 12.2.26.2 | чистка фильтра | 20min | 2026-03-05 09:00 A | 2026-03-05 09:20 A | 100% |  |  | start no earlier than 2026-03-05 09:00 | Некрасов А; Бундин В | 0.67h | 0.67h |
| 2719 | 12.2.26.3 | чистка фильтров | 1d? | 2026-06-25 09:00 A | 2026-06-25 18:00 A | 100% |  |  | start no earlier than 2026-06-25 09:00 | Тимофеев В; Дедов В | 16h | 16h |
| 2720 | 12.2.26.4 | чистка фильтров | 20min | 2026-07-14 09:00 A | 2026-07-14 09:20 A | 100% |  |  | start no earlier than 2026-07-14 09:00 | Некрасов А; Бундин В | 0.67h | 0.67h |
| 2721 | 12.2.26.5 | чистка фильтров | 20min | 2026-08-13 09:00 A | 2026-08-13 09:20 A | 100% |  |  | start no earlier than 2026-08-13 09:00 | Некрасов А; Труфанов А | 0.67h | 0.67h |
| 2722 | 12.2.26.6 | чистка фильтров | 20min | 2026-09-03 09:00 A | 2026-09-03 09:20 A | 100% |  |  | start no earlier than 2026-09-03 09:00 | Некрасов А; Тимофеев В | 0.67h | 0.67h |
| 2723 | 12.2.27 | **кондиционер 2** | 620.04d? | 2024-04-18 09:00 A | 2026-09-03 09:20 A | 100% |  |  |  | ТО | 4981.67h | 4981.67h |
| 2724 | 12.2.27.1 | чистка фильтров | 1d? | 2026-06-25 09:00 A | 2026-06-25 18:00 A | 100% |  |  | start no earlier than 2026-06-25 09:00 | Тимофеев В; Дедов В | 16h | 16h |
| 2725 | 12.2.27.2 | чистка фильтра | 1h | 2024-04-18 09:00 A | 2024-04-18 10:00 A | 100% |  |  | start no earlier than 2024-04-18 08:00 | Черепанов И; Некрасов А | 2h | 2h |
| 2726 | 12.2.27.3 | чистка фильтра | 20min | 2026-03-05 09:00 A | 2026-03-05 09:20 A | 100% |  |  | start no earlier than 2026-03-05 09:00 | Некрасов А; Бундин В | 0.67h | 0.67h |
| 2727 | 12.2.27.4 | чистка фильтров | 20min | 2026-07-14 09:00 A | 2026-07-14 09:20 A | 100% |  |  | start no earlier than 2026-07-14 09:00 | Некрасов А; Бундин В | 0.67h | 0.67h |
| 2728 | 12.2.27.5 | чистка фильтров | 20min | 2026-08-13 09:00 A | 2026-08-13 09:20 A | 100% |  |  | start no earlier than 2026-08-13 09:00 | Некрасов А; Труфанов А | 0.67h | 0.67h |
| 2729 | 12.2.27.6 | чистка фильтров | 20min | 2026-08-13 09:00 A | 2026-08-13 09:20 A | 100% |  |  | start no earlier than 2026-08-13 09:00 | Некрасов А; Труфанов А | 0.67h | 0.67h |
| 2730 | 12.2.27.7 | чистка фильтров | 20min | 2026-09-03 09:00 A | 2026-09-03 09:20 A | 100% |  |  | start no earlier than 2026-09-03 09:00 | Некрасов А; Тимофеев В | 0.67h | 0.67h |

| ID | WBS | Task | Type | Duration | Start | Finish | Complete | Remaining | Total slack | Constraint | Resources | Work | Actual work |
| --- | --- | --- | --- | --- | --- | --- | --- | --- | --- | --- | --- | --- | --- |
| 2731 | 12.2.28 | **кондиционер 3** |  | 130.04d | 2026-03-05 09:00 A | 2026-09-03 09:20 A | 100% |  |  |  |  | 3.33h | 3.33h |
| 2732 | 12.2.28.1 | чистка фильтра |  | 20min | 2026-03-05 09:00 A | 2026-03-05 09:20 A | 100% |  |  | start no earlier than 2026-03-05 09:00 | Некрасов А; Бундин В | 0.67h | 0.67h |
| 2733 | 12.2.28.2 | чистка фильтров |  | 20min | 2026-07-14 09:00 A | 2026-07-14 09:20 A | 100% |  |  | start no earlier than 2026-07-14 09:00 | Некрасов А; Бундин В | 0.67h | 0.67h |
| 2734 | 12.2.28.3 | чистка фильтров |  | 20min | 2026-08-13 09:00 A | 2026-08-13 09:20 A | 100% |  |  | start no earlier than 2026-08-13 09:00 | Некрасов А; Труфанов А | 0.67h | 0.67h |
| 2735 | 12.2.28.4 | чистка фильтров |  | 20min | 2026-08-13 09:00 A | 2026-08-13 09:20 A | 100% |  |  | start no earlier than 2026-08-13 09:00 | Некрасов А; Труфанов А | 0.67h | 0.67h |
| 2736 | 12.2.28.5 | чистка фильтров |  | 20min | 2026-09-03 09:00 A | 2026-09-03 09:20 A | 100% |  |  | start no earlier than 2026-09-03 09:00 | Некрасов А; Тимофеев В | 0.67h | 0.67h |
| 2737 | 12.2.29 | **электроштабелер** |  | 2.38d | 2026-08-11 09:00 A | 2026-08-13 12:00 A | 100% |  |  |  | ТО | 22.25h | 22.25h |
| 2738 | 12.2.29.1 | **хруст в колесе устранить** |  | 2.38d | 2026-08-11 09:00 A | 2026-08-13 12:00 A | 100% |  |  |  |  | 3.25h | 3.25h |
| 2739 | 12.2.29.1.1 | хруст с правой стороны штабелера- ревизия, скорее всего подшипник (экструдер). Осмотр, доложить | manual | 15min | 2026-08-11 09:00 A | 2026-08-11 09:15 A | 100% |  |  | start no earlier than 2026-08-11 09:00 | Тимофеев В | 0.25h | 0.25h |
| 2740 | 12.2.29.1.2 | ремонт замена подшипник колесо штабелер |  | 3h | 2026-08-13 09:00 A | 2026-08-13 12:00 A | 100% |  |  | start no earlier than 2026-08-13 09:00 | Тимофеев В | 3h | 3h |
| 2741 | 12.3 | **3 цех** |  | 1d? | 2023-12-28 09:00 | 2023-12-28 18:00 |  |  | 833.59d |  | ТО | 88h |  |
| 2742 | 12.3.1 | **электрооборудование** |  | 1d? | 2023-12-28 09:00 | 2023-12-28 18:00 |  |  | 833.59d |  | ТО | 48h |  |
| 2743 | 12.3.1.1 | ВРУ7 |  | 1d? | 2023-12-28 09:00 | 2023-12-28 18:00 |  |  | 833.59d | start no earlier than 2023-12-28 09:00 | ТО | 8h |  |
| 2744 | 12.3.1.2 | ОЩР |  | 1d? | 2023-12-28 09:00 | 2023-12-28 18:00 |  |  | 833.59d | start no earlier than 2023-12-28 09:00 | ТО | 8h |  |
| 2745 | 12.3.1.3 | электрокотел 4 - 3 цех |  | 1d? | 2023-12-28 09:00 | 2023-12-28 18:00 |  |  | 833.59d | start no earlier than 2023-12-28 09:00 | ТО | 8h |  |
| 2746 | 12.3.1.4 | электрокотел 5 - 3 цех |  | 1d? | 2023-12-28 09:00 | 2023-12-28 18:00 |  |  | 833.59d | start no earlier than 2023-12-28 09:00 | ТО | 8h |  |
| 2747 | 12.3.1.5 | электрокотел 6 - 3 цех |  | 1d? | 2023-12-28 09:00 | 2023-12-28 18:00 |  |  | 833.59d | start no earlier than 2023-12-28 09:00 | ТО | 8h |  |
| 2748 | 12.3.2 | электроштабелер 1 |  | 1d? | 2023-12-28 09:00 | 2023-12-28 18:00 |  |  | 833.59d | start no earlier than 2023-12-28 09:00 | ТО | 8h |  |
| 2749 | 12.3.3 | электроштабелер 2 |  | 1d? | 2023-12-28 09:00 | 2023-12-28 18:00 |  |  | 833.59d | start no earlier than 2023-12-28 09:00 | ТО | 8h |  |
| 2750 | 12.3.4 | вилочный погрузчик 1 |  | 1d? | 2023-12-28 09:00 | 2023-12-28 18:00 |  |  | 833.59d | start no earlier than 2023-12-28 09:00 | ТО | 8h |  |
| 2751 | 12.3.5 | вилочный погрузчик 2 |  | 1d? | 2023-12-28 09:00 | 2023-12-28 18:00 |  |  | 833.59d | start no earlier than 2023-12-28 09:00 | ТО | 8h |  |
| 2752 | 12.4 | **5 цех** |  | 656.25d? | 2023-12-28 09:00 A | 2026-07-03 11:00 | 10% | 593.75d? | 178.34d |  | ТО | 6302h | 906.67h |
| 2753 | 12.4.1 | насосная станция 5 цех |  | 1d? | 2023-12-28 09:00 | 2023-12-28 18:00 |  |  | 833.59d | start no earlier than 2023-12-28 09:00 | ТО | 8h |  |
| 2754 | 12.4.2 | растариватель |  | 1d? | 2023-12-28 09:00 | 2023-12-28 18:00 |  |  | 833.59d | start no earlier than 2023-12-28 09:00 | ТО | 8h |  |

| ID | WBS | Task | Type | Duration | Start | Finish | Complete | Remaining | Total slack | Constraint | Resources | Work | Actual work |
| --- | --- | --- | --- | --- | --- | --- | --- | --- | --- | --- | --- | --- | --- |
| 2755 | 12.4.3 | **шнек 1 растариватель-смеситель** |  | 65.25d | 2026-04-03 09:00 A | 2026-07-03 11:00 | 67% | 21.75d | 0d |  | ТО | 492h | 342.67h |
| 2756 | 12.4.3.1 | замена подшипник нижний | manual | 2h | 2026-04-03 09:00 A | 2026-04-03 11:00 A | 100% |  |  |  | Некрасов А; Труфанов А | 4h | 4h |
| 2757 | 12.4.3.2 | ревизия подшипник верхний - не снимается.ревизия - все ок, мазка | manual | 2h | 2026-04-03 09:00 A | 2026-04-03 11:00 A | 100% |  |  |  | Некрасов А; Труфанов А | 4h | 4h |
| 2758 | 12.4.3.3 | осмотр износа, смазка | manual | 2h | 2026-07-03 09:00 | 2026-07-03 11:00 |  |  |  |  | Тимофеев В | 2h |  |
| 2759 | 12.4.4 | смеситель СМ1500 |  | 1d? | 2023-12-28 09:00 | 2023-12-28 18:00 |  |  | 833.59d | start no earlier than 2023-12-28 09:00 | ТО | 8h |  |
| 2760 | 12.4.5 | **шнек 2 смеситель -дробилка** |  | 68.5d? | 2026-03-24 09:00 A | 2026-06-26 13:00 | 67% | 22.83d? | 183.09d |  | ТО | 440h | 64h |
| 2761 | 12.4.5.1 | ремонт вала, т.к съело посадку на верх подшипник |  | 1d? | 2026-03-24 09:00 A | 2026-03-24 18:00 A | 100% |  |  | start no earlier than 2026-03-24 09:00 | Труфанов А; Некрасов А | 16h | 16h |
| 2762 | 12.4.5.2 | осмотр износа |  | 4h | 2026-06-26 09:00 | 2026-06-26 13:00 |  |  | 183.09d | start no earlier than 2026-06-26 09:00 | Тимофеев В | 4h |  |
| 2763 | 12.4.6 | **дробилка ДМС3** |  | 0.5d | 2026-05-11 09:00 | 2026-05-11 13:00 |  |  | 217.09d |  | ТО | 8h |  |
| 2764 | 12.4.6.1 | замена подшипник буксы сторона мотора |  | 4h | 2026-05-11 09:00 | 2026-05-11 13:00 |  |  | 217.09d | start no earlier than 2026-05-10 09:00 | Бундин В | 4h |  |
| 2765 | 12.4.7 | шнек 3 дробилка-накопитель |  | 1d? | 2023-12-28 09:00 | 2023-12-28 18:00 |  |  | 833.59d | start no earlier than 2023-12-28 09:00 | ТО | 8h |  |
| 2766 | 12.4.8 | дробилка 11квт |  | 1d? | 2023-12-28 09:00 | 2023-12-28 18:00 |  |  | 833.59d | start no earlier than 2023-12-28 09:00 | ТО | 8h |  |
| 2767 | 12.4.9 | дробилка 7,5квт |  | 1d? | 2023-12-28 09:00 | 2023-12-28 18:00 |  |  | 833.59d | start no earlier than 2023-12-28 09:00 | ТО | 8h |  |
| 2768 | 12.4.10 | вибросито А |  | 1d? | 2023-12-28 09:00 | 2023-12-28 18:00 |  |  | 833.59d | start no earlier than 2023-12-28 09:00 | ТО | 8h |  |
| 2769 | 12.4.11 | вибросито Б |  | 1d? | 2023-12-28 09:00 | 2023-12-28 18:00 |  |  | 833.59d | start no earlier than 2023-12-28 09:00 | ТО | 8h |  |
| 2770 | 12.4.12 | **электрооборудование** |  | 1d? | 2023-12-28 09:00 | 2023-12-28 18:00 |  |  | 833.59d |  | ТО | 48h |  |
| 2771 | 12.4.12.1 | ВРУ7 |  | 1d? | 2023-12-28 09:00 | 2023-12-28 18:00 |  |  | 833.59d | start no earlier than 2023-12-28 09:00 | ТО | 8h |  |
| 2772 | 12.4.12.2 | ЩР2 |  | 1d? | 2023-12-28 09:00 | 2023-12-28 18:00 |  |  | 833.59d | start no earlier than 2023-12-28 09:00 | ТО | 8h |  |
| 2773 | 12.4.12.3 | котельная газовая 5 цех |  | 1d? | 2023-12-28 09:00 | 2023-12-28 18:00 |  |  | 833.59d | start no earlier than 2023-12-28 09:00 | ТО | 8h |  |
| 2774 | 12.4.12.4 | бойлеры душ |  | 1d? | 2023-12-28 09:00 | 2023-12-28 18:00 |  |  | 833.59d | start no earlier than 2023-12-28 09:00 | ТО | 8h |  |
| 2775 | 12.4.12.5 | вентилятор вытяжной в дробилке |  | 1d? | 2023-12-28 09:00 | 2023-12-28 18:00 |  |  | 833.59d | start no earlier than 2023-12-28 09:00 | ТО | 8h |  |
| 2776 | 12.5 | **адм корпус** |  | 1d? | 2023-12-28 09:00 | 2023-12-28 18:00 |  |  | 833.59d |  | ТО | 24h |  |
| 2777 | 12.5.1 | бойлер туалет |  | 1d? | 2023-12-28 09:00 | 2023-12-28 18:00 |  |  | 833.59d | start no earlier than 2023-12-28 09:00 | ТО | 8h |  |
| 2778 | 12.5.2 | ОЩР |  | 1d? | 2023-12-28 09:00 | 2023-12-28 18:00 |  |  | 833.59d | start no earlier than 2023-12-28 09:00 | ТО | 8h |  |

| ID | WBS | Task | Type | Duration | Start | Finish | Complete | Remaining | Total slack | Constraint | Resources | Work | Actual work |
| --- | --- | --- | --- | --- | --- | --- | --- | --- | --- | --- | --- | --- | --- |
| 2779 | 12.6 | **склад упаковки** |  | 1d? | 2023-12-28 09:00 | 2023-12-28 18:00 |  |  | 833.59d |  | ТО | 32h |  |
| 2780 | 12.6.1 | **электрооборудование** |  | 1d? | 2023-12-28 09:00 | 2023-12-28 18:00 |  |  | 833.59d |  | ТО | 24h |  |
| 2781 | 12.6.1.1 | ЩО и ЩР |  | 1d? | 2023-12-28 09:00 | 2023-12-28 18:00 |  |  | 833.59d | start no earlier than 2023-12-28 09:00 | ТО | 8h |  |
| 2782 | 12.6.1.2 | санитарный насос |  | 1d? | 2023-12-28 09:00 | 2023-12-28 18:00 |  |  | 833.59d | start no earlier than 2023-12-28 09:00 | ТО | 8h |  |
| 2783 | 12.7 | **цех наполнителей** |  | 1d? | 2023-12-28 09:00 | 2023-12-28 18:00 |  |  | 833.59d |  | ТО | 56h |  |
| 2784 | 12.7.1 | ЩО и ЩР |  | 1d? | 2023-12-28 09:00 | 2023-12-28 18:00 |  |  | 833.59d | start no earlier than 2023-12-28 09:00 | ТО | 8h |  |
| 2785 | 12.7.2 | комппрессор |  | 1d? | 2023-12-28 09:00 | 2023-12-28 18:00 |  |  | 833.59d | start no earlier than 2023-12-28 09:00 | ТО | 8h |  |
| 2786 | 12.7.3 | конвейер загрузки |  | 1d? | 2023-12-28 09:00 | 2023-12-28 18:00 |  |  | 833.59d | start no earlier than 2023-12-28 09:00 | ТО | 8h |  |
| 2787 | 12.7.4 | дозатор НОТИС |  | 1d? | 2023-12-28 09:00 | 2023-12-28 18:00 |  |  | 833.59d | start no earlier than 2023-12-28 09:00 | ТО | 8h |  |
| 2788 | 12.7.5 | запайщик |  | 1d? | 2023-12-28 09:00 | 2023-12-28 18:00 |  |  | 833.59d | start no earlier than 2023-12-28 09:00 | ТО | 8h |  |
| 2789 | 12.7.6 | вилочный погрузчик тойота |  | 1d? | 2023-12-28 09:00 | 2023-12-28 18:00 |  |  | 833.59d | start no earlier than 2023-12-28 09:00 | ТО | 8h |  |
| 2790 | 12.8 | Установка розетки под литийионный аккумклятор 3-х фазный, установить рядом с существующей ВРУ |  | 2h | 2026-07-08 09:00 | 2026-07-08 11:00 |  |  | 175.34d | start no earlier than 2026-07-08 08:00 | Бундин В | 2h |  |
| 2791 | 13 | **синий склад** |  | 88d | 2026-05-07 09:00 A | 2026-09-07 18:00 | 34% | 57.66d | 131.59d |  |  | 37h | 10h |
| 2792 | 13.1 | установить на место крышки вентиляторов |  | 1h | 2026-08-17 09:00 A | 2026-08-17 10:00 A | 100% |  |  | start no earlier than 2026-08-17 09:00 | Бобренок В | 1h | 1h |
| 2793 | 13.2 | монтаж включателя света с улицы, возле вход. Двери |  | 3h | 2026-09-07 09:00 | 2026-09-07 12:00 |  |  | 132.22d | start no earlier than 2026-09-07 09:00 | Бобренок В | 3h |  |
| 2794 | 13.3 | расширить проем вверху для проезда погрузчиков, врезаются | manual | 1d | 2026-09-04 09:00 | 2026-09-04 18:00 |  |  |  | start no earlier than 2026-09-04 09:00 | Олег | 8h |  |
| 2795 | 13.4 | замерить диаметр крыльчатки двигателя экструдера, инфу передать мне |  | 1h | 2026-06-13 09:00 A | 2026-06-15 10:00 A | 100% |  |  | start no earlier than 2026-06-13 09:00 | Бобренок В | 1h | 1h |
| 2796 | 13.5 | найти амперметры 30А и 150А (сказать кол-во) |  | 2h | 2026-06-10 09:00 A | 2026-06-10 11:00 A | 100% |  |  | start no earlier than 2026-06-10 09:00 | Труфанов А | 2h | 2h |
| 2797 | 13.6 | монтаж секции стеллажа |  | 8h | 2026-09-07 09:00 | 2026-09-07 18:00 |  |  | 131.59d | start no earlier than 2026-09-07 09:00 | Некрасов А; Макаревич А | 16h |  |
| 2798 | 13.7 | Навести порядок на входе в синий склад |  | 2h | 2026-07-23 09:00 A | 2026-07-23 11:00 A | 100% |  |  | start no earlier than 2026-07-24 09:00 | Бундин В | 2h | 2h |
| 2799 | 13.8 | проверить и подписать все материалы в синем складе с Алексеем |  | 4h | 2026-05-07 09:00 A | 2026-05-07 13:00 A | 100% |  |  | start no earlier than 2026-05-07 09:00 | Шуранов Ю | 4h | 4h |
| 2800 | 14 | **хим лаб** |  | 652.25d? | 2024-01-11 08:00 A | 2026-07-13 11:00 A | 100% |  |  |  |  | 71.75h | 71.75h |
| 2801 | 14.1 | замена кран РР |  | 2h | 2026-07-13 09:00 A | 2026-07-13 11:00 A | 100% |  |  | start no earlier than 2026-07-13 09:00 | Тимофеев В | 2h | 2h |
| 2802 | 14.2 | ремонт термоконтроллера - замена реле / перепаять с сзоны ALARM |  | 1h | 2026-06-09 09:00 A | 2026-06-09 10:00 A | 100% |  |  | start no earlier than 2026-06-09 09:00 | Дедов В | 1h | 1h |

| ID | WBS | Task | Duration | Start | Finish | Predecessors | Complete | Constraint | Resources | Work | Actual work |
| --- | --- | --- | --- | --- | --- | --- | --- | --- | --- | --- | --- |
| 2803 | 14.3 | **усилить питание хим лаб, что бы не отключался автомат при вкл быт приборов** | 0.12d | 2026-05-29 09:00 A | 2026-05-29 10:00 A |  | 100% |  |  | 2h | 2h |
| 2804 | 14.3.1 | переключение питания хим лаб на отдельный ШУ | 1h | 2026-05-29 09:00 A | 2026-05-29 10:00 A |  | 100% | start no earlier than 2026-05-29 09:00 | Некрасов А; Бобренок В | 2h | 2h |
| 2805 | 14.4 | **ремонт бойлер вода - ПУН** | 10.25d | 2026-05-14 08:00 A | 2026-05-28 11:00 A |  | 100% |  |  | 4.75h | 4.75h |
| 2806 | 14.4.1 | замена из ЗИП | 1h | 2026-05-14 08:00 A | 2026-05-14 10:00 A |  | 100% | start no earlier than 2026-05-14 08:00 | Тимофеев В | 1h | 1h |
| 2807 | 14.4.2 | диагностика неисправности. Бойлер в слесарне | 1h | 2026-05-14 08:00 A | 2026-05-14 10:00 A |  | 100% | start no earlier than 2026-05-14 08:00 | Бобренок В | 1h | 1h |
| 2808 | 14.4.3 | заявка предохарнитель | 30min | 2026-05-15 09:00 A | 2026-05-15 09:30 A | 2807 | 100% | start no earlier than 2026-05-15 08:00 | Шуранов Ю | 0.5h | 0.5h |
| 2809 | 14.4.4 | контроль поставки | 15min | 2026-05-22 09:30 A | 2026-05-22 09:45 A | 2808FS+7d | 100% | start no earlier than 2026-05-15 08:00 | Шуранов Ю | 0.25h | 0.25h |
| 2810 | 14.4.5 | заменить на бойлере в слесарке термостата WY-S37A | 2h | 2026-05-28 09:00 A | 2026-05-28 11:00 A |  | 100% | start no earlier than 2026-05-28 09:00 | Тимофеев В | 2h | 2h |
| 2811 | 14.5 | **ремонт дистилятор** | 31d? | 2026-04-27 09:00 A | 2026-06-08 18:00 A |  | 100% |  |  | 17h | 17h |
| 2812 | 14.5.1 | заявка тен | 1h | 2026-04-27 09:00 A | 2026-04-27 10:00 A |  | 100% | start no earlier than 2026-04-27 09:00 | Шуранов Ю | 1h | 1h |
| 2813 | 14.5.2 | доставка | 1d? | 2026-06-05 09:00 A | 2026-06-05 18:00 A | 2812 | 100% | finish no earlier than 2026-06-05 18:00 | Карабанов | 8h | 8h |
| 2814 | 14.5.3 | замена. Больше не выбиывает | 1d? | 2026-06-05 18:00 A | 2026-06-08 18:00 A | 2813 | 100% | start no earlier than 2026-05-13 09:00 | Тимофеев В | 8h | 8h |
| 2815 | 14.6 | **ремонт АКВ_шесть** | 30d? | 2026-04-27 09:00 A | 2026-06-05 18:00 A |  | 100% |  |  | 11h | 11h |
| 2816 | 14.6.1 | заявка тен | 1h | 2026-04-27 09:00 A | 2026-04-27 10:00 A |  | 100% | start no earlier than 2026-04-27 09:00 | Шуранов Ю | 1h | 1h |
| 2817 | 14.6.2 | доставка | 1d? | 2026-06-05 09:00 A | 2026-06-05 18:00 A | 2816 | 100% | finish no earlier than 2026-06-05 18:00 | Карабанов | 8h | 8h |
| 2818 | 14.6.3 | замена | 2h | 2026-05-24 09:00 A | 2026-05-25 11:00 A |  | 100% | start no earlier than 2026-05-24 09:00 | Дедов В | 2h | 2h |
| 2819 | 14.7 | проверить прибор | 1d? | 2026-05-06 09:00 A | 2026-05-06 18:00 A |  | 100% | start no earlier than 2026-05-06 08:00 | Шуранов Ю | 8h | 8h |
| 2820 | 14.8 | датчик температуры ?? Заявка | 1d? | 2026-04-27 09:00 A | 2026-04-27 18:00 A |  | 100% | start no earlier than 2026-04-27 08:00 | Шуранов Ю | 8h | 8h |
| 2821 | 14.9 | дистилятор отключается ?? Заявка | 1d? | 2026-04-27 09:00 A | 2026-04-27 18:00 A |  | 100% | start no earlier than 2026-04-27 08:00 | Шуранов Ю | 8h | 8h |
| 2822 | 14.10 | перенос старый прибор в архив 5ц | 30min | 2026-04-20 09:00 A | 2026-04-20 09:30 A |  | 100% | start no earlier than 2026-04-20 08:00 | Кладовщики | 0.5h | 0.5h |
| 2823 | 14.11 | замена 2 вентилятора | 4h | 2024-01-16 08:00 A | 2024-01-16 13:00 A |  | 100% | start no earlier than 2024-01-16 08:00 | Бобренок В | 4h | 4h |
| 2824 | 14.12 | ремонт соленоид | 2h | 2024-01-16 08:00 A | 2024-01-16 11:00 A |  | 100% | start no earlier than 2024-01-16 08:00 | Тимофеев В | 2h | 2h |
| 2825 | 14.13 | ремонт вытяжка №2 диагностика вентилятор | 30min | 2024-01-11 08:00 A | 2024-01-11 09:30 A |  | 100% | start no earlier than 2024-01-11 08:00 | Дедов В | 0.5h | 0.5h |
| 2826 | 14.14 | замена насос " агрегат | 1h | 2024-01-11 08:00 A | 2024-01-11 10:00 A |  | 100% | start no earlier than 2024-01-11 08:00 | Дедов В | 1h | 1h |
| 2827 | 14.15 | замена тен по доставке | 2h | 2026-03-17 09:00 A | 2026-03-17 11:00 A |  | 100% | start no earlier than 2026-03-17 09:00 | Макаревич А | 2h | 2h |

| ID | WBS | Task | Duration | Start | Finish | Predecessors | Complete | Remaining | Total slack | Constraint | Resources | Work | Actual work |
| --- | --- | --- | --- | --- | --- | --- | --- | --- | --- | --- | --- | --- | --- |
| 2828 | 15 | **цех наполнителей** | 194.12d | 2025-07-14 09:00 A | 2026-04-10 10:00 A |  | 100% |  |  |  |  | 10h | 10h |
| 2829 | 15.1 | взять со склада АКБ и клеммы заменить на погрузчике, старый АКБ отдать на 2 этаж склад | 1h | 2026-04-10 09:00 A | 2026-04-10 10:00 A |  | 100% |  |  | start no earlier than 2026-04-10 09:00 | Тимофеев В | 1h | 1h |
| 2830 | 15.2 | поменять пневмоцилиндр на нотис | 1h | 2026-04-09 09:00 A | 2026-04-09 10:00 A |  | 100% |  |  | start no earlier than 2026-04-10 09:00 | Тимофеев В | 1h | 1h |
| 2831 | 15.3 | проверить дист. Воду в АКБ погрузчика | 1h | 2026-04-01 09:00 A | 2026-04-01 10:00 A |  | 100% |  |  | start no earlier than 2026-04-01 09:00 | Тимофеев В | 1h | 1h |
| 2832 | 15.4 | просверлить больше, нарезать резьбу для крепления стола запайщика, резьба сорвана | 1h | 2026-03-20 09:00 A | 2026-03-20 10:00 A |  | 100% |  |  | start no earlier than 2026-03-20 09:00 | Бундин В | 1h | 1h |
| 2833 | 15.5 | ремонт компрессор. Проверка конденсаторов/не запускается мотор. Ключь у кладовщиков | 4h | 2025-07-14 09:00 A | 2025-07-14 13:00 A |  | 100% |  |  | start no earlier than 2025-07-14 09:00 | Бобренок В | 4h | 4h |
| 2834 | 15.6 | ТО компрессор / конвейер / запайщик | 2h | 2026-03-09 09:00 A | 2026-03-09 11:00 A |  | 100% |  |  | start no earlier than 2026-03-09 09:00 | Тимофеев В | 2h | 2h |
| 2835 | 16 | **офис** | 912.25d? | 2023-03-10 09:00 A | 2026-09-08 11:00 |  | 97% | 28.15d? | 131.34d |  |  | 217.67h | 207.17h |
| 2836 | 16.1 | демонтаж шурупы с наличиников | 10min | 2026-07-10 09:00 A | 2026-07-10 09:10 A |  | 100% |  |  | start no earlier than 2026-07-10 09:00 | Тимофеев В | 0.17h | 0.17h |
| 2837 | 16.2 | взять на складе ламочку Е27 малого размера и поменять в муж. Туалете и закрыть плафоном | 1h | 2026-06-29 09:00 A | 2026-06-29 10:00 A |  | 100% |  |  | start no earlier than 2026-06-29 09:00 | Тимофеев В | 1h | 1h |
| 2838 | 16.3 | собрать аккуратно стеллаж для Буслаева (стеллаж на складе у Веры, подписан буквами ГД, мечковская) | 3h | 2026-06-13 09:00 A | 2026-06-15 12:00 A |  | 100% |  |  | start no earlier than 2026-06-13 09:00 | Бобренок В | 3h | 3h |
| 2839 | 16.4 | посмотреть что с розеткой у Ширяевой в кабинете | 1h | 2026-06-22 09:00 A | 2026-06-22 10:00 A |  | 100% |  |  | start no earlier than 2026-06-22 09:00 | Тимофеев В | 1h | 1h |
| 2840 | 16.5 | бухгалтерия настройка язычка двери, что бы дверь закрывалась без усилия | 1h | 2026-05-28 09:00 A | 2026-05-28 10:00 A |  | 100% |  |  | start no earlier than 2026-05-28 09:00 | Тимофеев В | 1h | 1h |
| 2841 | 16.6 | **полка мебельная** | 25.12d | 2026-05-18 09:00 A | 2026-06-22 10:00 A |  | 100% |  |  |  |  | 1.5h | 1.5h |
| 2842 | 16.6.1 | заявка крепеж | 15min | 2026-05-18 09:00 A | 2026-05-18 09:15 A |  | 100% |  |  | start no earlier than 2026-05-18 09:00 | Шуранов Ю | 0.25h | 0.25h |
| 2843 | 16.6.2 | контроль доставка | 15min | 2026-05-27 09:15 A | 2026-05-27 09:30 A | 2842FS+7d | 100% |  |  | start no earlier than 2026-05-15 08:00 | Шуранов Ю | 0.25h | 0.25h |
| 2844 | 16.6.3 | крепеж полки у Юли в кабинете (уголки на складе) | 1h | 2026-06-22 09:00 A | 2026-06-22 10:00 A | 2843 | 100% |  |  | start no earlier than 2026-06-22 09:00 | Тимофеев В | 1h | 1h |
| 2845 | 16.7 | монтаж диплом на стену нач хим лаб | 30min | 2026-05-15 09:00 A | 2026-05-15 09:30 A |  | 100% |  |  | start no earlier than 2026-05-15 09:00 | Тимофеев В | 0.5h | 0.5h |
| 2846 | 16.8 | монтаж розеток в серверной продолжить | 2h | 2026-04-23 09:00 A | 2026-04-23 11:00 A |  | 100% |  |  | start no earlier than 2026-04-23 09:00 | Тимофеев В; Бобренок В | 4h | 4h |
| 2847 | 16.9 | ремонт стул в столовая, спинка | 1h | 2026-04-21 09:00 A | 2026-04-21 10:00 A |  | 100% |  |  | start no earlier than 2026-04-21 09:00 | Тимофеев В | 1h | 1h |
| 2848 | 16.10 | **полочка под пк** | 0.12d | 2026-06-26 09:00 A | 2026-06-26 10:00 A |  | 100% |  |  |  | Тимофеев В | 2h | 2h |
| 2849 | 16.10.1 | замер | 1h | 2026-06-26 09:00 A | 2026-06-26 10:00 A |  | 100% |  |  | start no earlier than 2026-06-26 09:00 | Тимофеев В | 1h | 1h |
| 2850 | 16.11 | прикрутить декоративную пластину на ручке в столовой | 1h | 2026-04-15 09:00 A | 2026-04-15 10:00 A |  | 100% |  |  | start no earlier than 2026-04-17 08:00 | Макаревич А | 1h | 1h |
| 2851 | 16.12 | монтаж розеток 4 шт. в серверной | 2h | 2026-04-15 09:00 A | 2026-04-15 11:00 A |  | 100% |  |  | start no earlier than 2026-04-17 08:00 | Макаревич А | 2h | 2h |
| 2852 | 16.13 | протянуть кабель UTP от кабинета Курдюмовой до переговорки | 2h | 2026-04-17 08:00 A | 2026-04-17 11:00 A |  | 100% |  |  | start no earlier than 2026-04-17 08:00 | Тимофеев В; Некрасов А | 4h | 4h |
| 2853 | 16.14 | убрать шнурок у Курдюмовой в кабинете | 1h | 2026-04-17 08:00 A | 2026-04-17 10:00 A |  | 100% |  |  | start no earlier than 2026-04-17 08:00 | Тимофеев В | 1h | 1h |
| 2854 | 16.15 | ремонт кровля над каб Курдюмовой | 20d | 2026-06-15 09:00 A | 2026-07-10 18:00 A |  | 100% |  |  | start no earlier than 2026-06-15 09:00 | Олег | 160h | 160h |
| 2855 | 16.16 | ремонт крепеж пано каб продаж | 1h | 2026-03-24 08:00 A | 2026-03-24 10:00 A |  | 100% |  |  | start no earlier than 2026-03-24 08:00 | Тимофеев В | 1h | 1h |
| 2856 | 16.17 | крепить розетку для проектора | 2h | 2025-04-09 09:00 A | 2025-04-09 11:00 A |  | 100% |  |  | start no earlier than 2025-04-09 09:00 | Тимофеев В | 2h | 2h |
| 2857 | 16.18 | упорядочить кабеля под тв | 2h | 2025-04-09 09:00 A | 2025-04-09 11:00 A |  | 100% |  |  | start no earlier than 2025-04-09 09:00 | Некрасов А | 2h | 2h |
| 2858 | 16.19 | выбивает автомат у Монича, нет селективности, замена автоматов. Ремонт освещения корридор | 4h | 2026-09-07 09:00 | 2026-09-07 13:00 |  |  |  | 132.09d | start no earlier than 2026-09-07 09:00 | Тимофеев В; Дедов В | 8h |  |
| 2859 | 16.20 | монтаж ключница для пожарной двери 2 и 3 этаж | 1h | 2026-03-16 09:00 A | 2026-03-16 10:00 A |  | 100% |  |  | start no earlier than 2026-03-16 09:00 | Тимофеев В | 1h | 1h |
| 2860 | 16.21 | замена регистр отопления нач снабжения | 2h | 2026-09-08 09:00 | 2026-09-08 11:00 |  |  |  | 131.34d | start no earlier than 2026-09-08 09:00 | Некрасов А | 2h |  |
| 2861 | 16.22 | сделать заглушки в комнату пищи | 30min | 2026-09-01 09:00 | 2026-09-01 09:30 |  |  |  | 136.53d | start no earlier than 2026-09-01 09:00 | Домоводов К | 0.5h |  |

| ID | WBS | Task | Type | Duration | Start | Finish | Predecessors | Complete | Remaining | Total slack | Constraint | Resources | Work | Actual work |
| --- | --- | --- | --- | --- | --- | --- | --- | --- | --- | --- | --- | --- | --- | --- |
| 2862 | 16.23 | **вентиляция в переговорке и к приема пищи** |  | 812d? | 2023-03-10 09:00 A | 2026-04-20 18:00 A |  | 100% |  |  |  |  | 17h | 17h |
| 2863 | 16.23.1 | взять на желтом складе (наша половина) вентилятор канальный и проверить работает или нет |  | 1h | 2023-03-10 09:00 A | 2023-03-10 10:00 A |  | 100% |  |  |  | Бундин В | 1h | 1h |
| 2864 | 16.23.2 | заявка на КП = 300к |  | 4h | 2026-03-13 09:00 A | 2026-03-13 13:00 A |  | 100% |  |  | start no earlier than 2026-03-13 09:00 | Домоводов К | 4h | 4h |
| 2865 | 16.23.3 | монтаж ВК200 + кабель |  | 6h | 2026-04-20 09:00 A | 2026-04-20 16:00 A |  | 100% |  |  | start no earlier than 2026-04-20 08:00 | Некрасов А; Труфанов А | 12h | 12h |
| 2866 | 16.23.4 | установка на крыше офиса, приточка в переговорку |  | 1d? | 2026-04-20 09:00 A | 2026-04-20 18:00 A |  | 100% |  |  | start no earlier than 2026-04-20 09:00 |  |  |  |
| 2867 | 16.24 | **подсветка продукции в пепреговорке вращающийся лаезерный круг с эмблемой** |  | 0.12d | 2026-03-13 09:00 A | 2026-03-13 10:00 A |  | 100% |  |  |  |  | 1h | 1h |
| 2868 | 16.24.1 | найти поставщика / узнать стоимость |  | 1h | 2026-03-13 09:00 A | 2026-03-13 10:00 A |  | 100% |  |  | start no earlier than 2026-03-13 09:00 | Зорькин В | 1h | 1h |
| 2869 | 17 | **склад упаковки** |  | 113.5d? | 2026-04-02 09:00 A | 2026-09-08 13:00 |  | 98% | 2.16d? | 131.09d |  |  | 383.75h | 373.75h |
| 2870 | 17.1 | переделать крепление рамы наруж блока - к МК задния, анкера убрать |  | 4h | 2026-09-08 09:00 | 2026-09-08 13:00 |  |  |  | 131.09d | start no earlier than 2026-09-08 09:00 | Некрасов А | 4h |  |
| 2871 | 17.2 | установить светильники над столом Веры и перенести светильник над стеллажами |  | 3h | 2026-08-25 09:00 | 2026-08-25 12:00 |  |  |  | 141.22d | start no earlier than 2026-08-25 09:00 | Тимофеев В; Некрасов А | 6h |  |
| 2872 | 17.3 | втягиваем кабель 5х4 от реф, для подключения кондиционера, место установки щитка покажу- подключаем кондиционер |  | 1d? | 2026-07-31 08:00 A | 2026-07-31 18:00 A |  | 100% |  |  | start no earlier than 2026-07-31 08:00 | Труфанов А; Бобренок В | 16h | 16h |
| 2873 | 17.4 | сделать акты списания по результатам инвентаризации |  | 1d? | 2026-06-22 09:00 A | 2026-06-22 18:00 A |  | 100% |  |  | start no earlier than 2026-06-22 09:00 | Шуранов Ю | 8h | 8h |
| 2874 | 17.5 | **установить бойлер** |  | 11.25d | 2026-06-01 09:00 A | 2026-06-16 11:00 A |  | 100% |  |  |  |  | 12h | 12h |
| 2875 | 17.5.1 | монтаж кабель + розетка с щитка 1 этажа на 2 этаж |  | 4h | 2026-06-03 09:00 A | 2026-06-03 13:00 A |  | 100% |  |  | start no earlier than 2026-06-03 09:00 | Некрасов А; Бундин В | 8h | 8h |
| 2876 | 17.5.2 | монтаж бойлер на стену |  | 2h | 2026-06-01 09:00 A | 2026-06-01 11:00 A | 2875 | 100% |  |  | start no earlier than 2026-06-01 09:00 | Тимофеев В | 2h | 2h |
| 2877 | 17.5.3 | подключение сантехника |  | 2h | 2026-06-16 09:00 A | 2026-06-16 11:00 A | 2876 | 100% |  |  | start no earlier than 2026-06-16 09:00 | Тимофеев В | 2h | 2h |
| 2878 | 17.6 | отремонтировать ручку на входной двери |  | 1h | 2026-05-16 09:00 A | 2026-05-18 10:00 A |  | 100% |  |  | start no earlier than 2026-05-16 09:00 |  |  |  |
| 2879 | 17.7 | **анкерить стеллажи** |  | 26d | 2026-05-15 09:00 A | 2026-06-21 13:00 A |  | 100% |  |  |  |  | 4.75h | 4.75h |
| 2880 | 17.7.1 | заявка анкеры |  | 30min | 2026-05-15 09:00 A | 2026-05-15 09:30 A |  | 100% |  |  | start no earlier than 2026-05-15 09:00 | Шуранов Ю | 0.5h | 0.5h |
| 2881 | 17.7.2 | контроль доставка |  | 15min | 2026-05-27 09:30 A | 2026-05-27 09:45 A | 2880FS+10d | 100% |  |  | start no earlier than 2026-05-14 08:00 | Шуранов Ю | 0.25h | 0.25h |
| 2882 | 17.7.3 | монтаж / указать доделать оставшиеся анкера | manual | 4h | 2026-06-21 09:00 A | 2026-06-21 13:00 A | 2881 | 100% |  |  | start no earlier than 2026-06-21 09:00 | Бундин В | 4h | 4h |
| 2883 | 17.8 | заменить тросик на воротах |  | 2h | 2026-04-29 09:00 A | 2026-04-29 11:00 A |  | 100% |  |  | start no earlier than 2026-04-29 09:00 | Тимофеев В; Бундин В | 4h | 4h |
| 2884 | 17.9 | **замена двери** |  | 40.12d? | 2026-04-02 09:00 A | 2026-05-28 10:00 A |  | 100% |  |  |  |  | 329h | 329h |
| 2885 | 17.9.1 | заказ замерщика / получить счет |  | 1h | 2026-04-02 09:00 A | 2026-04-02 10:00 A |  | 100% |  |  | start no earlier than 2026-04-02 08:00 | Домоводов К | 1h | 1h |
| 2886 | 17.9.2 | изготовление |  | 40d | 2026-04-02 10:00 A | 2026-05-28 10:00 A | 2885 | 100% |  |  | start no earlier than 2026-04-02 08:00 | Подрядчик | 320h | 320h |
| 2887 | 17.9.3 | замена |  | 1d? | 2026-05-19 10:00 A | 2026-05-20 10:00 A | 2886 | 100% |  |  | start no earlier than 2026-04-02 08:00 | Подрядчик | 8h | 8h |

| ID | WBS | Task | Type | Duration | Start | Finish | Predecessors | Complete | Remaining | Total slack | Free slack | Constraint | Resources | Work | Actual work |
| --- | --- | --- | --- | --- | --- | --- | --- | --- | --- | --- | --- | --- | --- | --- | --- |
| 2888 | 18 | **РЭФ контейнеры** |  | 204.59d? | 2026-05-28 09:00 A | 2027-03-10 14:45 |  | 14% | 175.62d? | 0d |  |  |  | 66.25h | 13.25h |
| 2889 | 18.1 | уложить палеты в проходе к площадке / вырубить кусты с дворником |  | 1h | 2026-05-28 09:00 A | 2026-05-28 10:00 A |  | 100% |  |  |  | start no earlier than 2026-05-28 09:00 | Некрасов А; Бобренок В | 1h | 1h |
| 2890 | 18.2 | монтаж площадка обслуживания внешнего блока. 4 стойки труба 100 + лист 5 |  | 7h | 2026-05-28 09:00 A | 2026-05-28 17:00 A |  | 100% |  |  |  | start no earlier than 2026-05-28 09:00 | Некрасов А; Бобренок В | 12h | 12h |
| 2891 | 18.3 | **ремонт сплит система холодильная камера №1** |  | 21.12d | 2026-08-12 09:00 A | 2026-09-10 10:00 |  | 20% | 16.9d | 129.47d |  |  |  | 1.25h | 0.25h |
| 2892 | 18.3.1 | отправить фото участка |  | 15min | 2026-08-12 09:00 A | 2026-08-12 09:15 A |  | 100% |  |  |  | start no earlier than 2026-08-12 09:00 | Домоводов К | 0.25h | 0.25h |
| 2893 | 18.3.2 | получить счет на ремонт |  | 15min | 2026-09-01 09:00 | 2026-09-01 09:15 |  |  |  | 129.47d | 0d | start no earlier than 2026-09-01 09:00 | Домоводов К | 0.25h |  |
| 2894 | 18.3.3 | оплата |  | 15min | 2026-09-02 09:15 | 2026-09-02 09:30 | 2893FS+1d |  |  | 129.47d | 0d | start no earlier than 2026-09-01 09:00 | Домоводов К | 0.25h |  |
| 2895 | 18.3.4 | контроль даты ремонта |  | 15min | 2026-09-09 09:30 | 2026-09-09 09:45 | 2894FS+5d |  |  | 129.47d | 0d | start no earlier than 2026-08-10 08:00 | Зорькин В | 0.25h |  |
| 2896 | 18.3.5 | приемка работ |  | 15min | 2026-09-10 09:45 | 2026-09-10 10:00 | 2895FS+1d |  |  | 129.47d |  | start no earlier than 2026-08-10 08:00 | Зорькин В | 0.25h |  |
| 2897 | 18.4 | **монтаж холодильной машины №2** |  | 6.59d? | 2027-03-02 09:00 | 2027-03-10 14:45 |  |  |  | 0d |  |  |  | 45h |  |
| 2898 | 18.4.1 | решение какую ставить машину - на весну |  | 30min | 2027-03-02 09:00 | 2027-03-02 09:30 |  |  |  | 0d |  | start no earlier than 2027-03-02 09:00 | Домоводов К | 0.5h |  |
| 2899 | 18.4.2 | заключение договор |  | 3d | 2027-03-02 09:30 | 2027-03-05 09:30 | 2898 |  |  | 0d |  | start no earlier than 2026-08-12 09:00 | Домоводов К | 24h |  |
| 2900 | 18.4.3 | оплата |  | 15min | 2027-03-08 09:30 | 2027-03-08 09:45 | 2899FS+1d |  |  | 0d |  | start no earlier than 2026-08-18 09:00 | Домоводов К | 0.25h |  |
| 2901 | 18.4.4 | контроль доставки , начала работ |  | 1d? | 2027-03-08 09:45 | 2027-03-09 09:45 | 2900 |  |  | 0d |  | start no earlier than 2026-08-10 08:00 | Зорькин В | 8h |  |
| 2902 | 18.4.5 | **монтаж кабель силовой** |  | 0.5d | 2027-03-09 09:45 | 2027-03-09 14:45 | 2901 |  |  | 0d |  |  |  | 4.25h |  |
| 2903 | 18.4.5.1 | проверка поставки |  | 15min | 2027-03-09 09:45 | 2027-03-09 10:00 |  |  |  | 0.47d |  | start no earlier than 2026-08-10 08:00 | Зорькин В | 0.25h |  |
| 2904 | 18.4.5.2 | монтаж |  | 4h | 2027-03-09 09:45 | 2027-03-09 14:45 |  |  |  | 0d |  | start no earlier than 2026-08-10 08:00 | Некрасов А | 4h |  |
| 2905 | 18.4.6 | монтаж |  | 1d? | 2027-03-09 14:45 | 2027-03-10 14:45 | 2902 |  |  | 0d |  | start no earlier than 2026-08-10 08:00 | Подрядчик | 8h |  |
| 2906 | 18.5 | **утепление контейнера №2 под рефрежератор** |  | 0.5d | 2026-08-21 09:00 | 2026-08-21 13:00 |  |  |  | 0d |  |  |  | 7h |  |
| 2907 | 18.5.1 | продолжить выравнивание пены по периметру ножовкой для будующей установки профлиста (задание, если нечем заняться) | manual | 2h | 2026-08-21 09:00 | 2026-08-21 11:00 |  |  |  |  |  | start no earlier than 2026-08-21 09:00 | Некрасов А; Дедов В | 4h |  |
| 2908 | 18.5.2 | установка профлиста |  | 2h | 2026-08-21 11:00 | 2026-08-21 13:00 | 2907 |  |  | 143.09d |  | start no earlier than 2026-08-11 09:00 | Некрасов А; Дедов В | 3h |  |
| 2909 | 19 | **обучение** |  | 604.5d? | 2024-05-14 09:00 A | 2026-09-07 13:00 |  | 42% | 348.19d? | 132.09d |  |  |  | 130h | 58h |
| 2910 | 19.1 | **инструкция управлления дозаций жира** |  | 1.5d | 2026-09-04 09:00 | 2026-09-07 13:00 |  |  |  | 132.09d |  |  |  | 12h |  |
| 2911 | 19.1.1 | подготовка гидравлической и функциональной схем системы |  | 4h | 2026-09-04 09:00 | 2026-09-04 13:00 |  |  |  | 132.09d | 0d | start no earlier than 2026-09-04 09:00 | Зорькин В | 4h |  |
| 2912 | 19.1.2 | описание принципов регулирования |  | 4h | 2026-09-04 14:00 | 2026-09-04 18:00 | 2911 |  |  | 132.09d | 0d | start no earlier than 2026-08-31 09:00 | Зорькин В | 4h |  |
| 2913 | 19.1.3 | пошаговый алогритм действий по операциям замена фильтров, остановка пуск, настройка режимов |  | 4h | 2026-09-07 09:00 | 2026-09-07 13:00 | 2912 |  |  | 132.09d |  | start no earlier than 2026-08-31 09:00 | Зорькин В | 4h |  |
| 2914 | 19.2 | настройка и ремонты упаковщиков |  | 1h | 2026-02-27 09:00 A | 2026-02-27 10:00 A |  | 100% |  |  |  | start no earlier than 2026-02-27 08:00 | Труфанов А; Бундин В | 2h | 2h |
| 2915 | 19.3 | подготовить памятку по чистке ножа для бестром |  | 4h | 2026-09-04 09:00 A | 2026-09-04 13:00 A |  | 100% |  |  |  | start no earlier than 2026-09-04 09:00 | Зорькин В | 4h | 4h |
| 2916 | 19.4 | бестром |  | 2h | 2025-09-02 09:00 A | 2025-09-02 11:00 A |  | 100% |  |  |  | start no earlier than 2025-09-02 09:00 | Труфанов А; Зорькин В | 4h | 4h |
| 2917 | 19.5 | квадропак |  | 2h | 2025-09-02 11:00 A | 2025-09-02 13:00 A | 2916 | 100% |  |  |  | start no earlier than 2025-09-02 09:00 | Труфанов А; Зорькин В | 4h | 4h |
| 2918 | 19.6 | инструкция парогенератор управление по датчику давления |  | 4h | 2025-01-16 09:00 A | 2025-01-16 13:00 A |  | 100% |  |  |  | start no earlier than 2025-01-16 09:00 | Зорькин В | 4h | 4h |
| 2919 | 19.7 | инструкция по работе на теко 1.5 новый |  | 2d | 2025-01-17 09:00 A | 2025-01-20 18:00 A | 2918 | 100% |  |  |  | start no earlier than 2025-01-17 09:00 | Зорькин В | 16h | 16h |
| 2920 | 19.8 | инструкция ремонт запайщика |  | 1d? | 2025-01-17 09:00 A | 2025-01-17 18:00 A |  | 100% |  |  |  | start no earlier than 2025-01-17 09:00 | Зорькин В | 8h | 8h |
| 2921 | 19.9 | Составить список ЗИП - ежедневно вносить приход / расход |  | 1h | 2024-05-14 09:00 | 2024-05-14 10:00 |  |  |  | 736.47d |  | start no earlier than 2024-05-14 09:00 | Шуранов Ю | 1h |  |
| 2922 | 19.10 | составить инструкцию по затягиванию фильеры и соосности муфты |  | 4h | 2024-05-14 09:00 | 2024-05-14 13:00 |  |  |  | 736.09d |  | start no earlier than 2024-05-14 09:00 | Шуранов Ю | 4h |  |
| 2923 | 19.11 | составитьт инструкцию настройка бестром - формирование шва |  | 4h | 2024-05-14 09:00 | 2024-05-14 13:00 |  |  |  | 736.09d |  | start no earlier than 2024-05-14 09:00 | Шуранов Ю | 4h |  |
| 2924 | 19.12 | составитьт инструкцию настройка бестром - заправка ленты зип лок |  | 4h | 2024-05-14 09:00 | 2024-05-14 13:00 |  |  |  | 736.09d |  | start no earlier than 2024-05-14 09:00 | Шуранов Ю | 4h |  |

| ID | WBS | Task | Duration | Start | Finish | Predecessors | Complete | Remaining | Total slack | Free slack | Constraint | Resources | Work | Actual work |
| --- | --- | --- | --- | --- | --- | --- | --- | --- | --- | --- | --- | --- | --- | --- |
| 2925 | 19.13 | **формирование шаблона настройки оборудования** | 4d | 2024-09-06 09:00 A | 2024-09-11 18:00 |  | 67% | 1.33d | 649.59d |  |  |  | 21h | 14h |
| 2926 | 19.13.1 | **БЕСТРОМ** | 2.25d | 2024-09-06 09:00 A | 2024-09-10 11:00 A |  | 100% |  |  |  |  |  | 7h | 7h |
| 2927 | 19.13.1.1 | определить базовые точки относительно которых будет проводится замер в 3х плоскостях - флажки верх, флажки низ, смыкание ножа, центр трубы | 1h | 2024-09-06 09:00 A | 2024-09-06 10:00 A |  | 100% |  |  |  | start no earlier than 2024-09-06 08:00 | Зорькин В | 1h | 1h |
| 2928 | 19.13.1.2 | обвести в PAINT фото методику измерений, присвоить \имя каждому размеру | 2h | 2024-09-06 10:00 A | 2024-09-06 12:00 A | 2927 | 100% |  |  |  | start no earlier than 2024-09-06 09:00 | Зорькин В | 2h | 2h |
| 2929 | 19.13.1.3 | создать карту / таблицу настройки. Размер-дата-фио | 2h | 2024-09-09 09:00 A | 2024-09-09 11:00 A | 2928 | 100% |  |  |  | start no earlier than 2024-09-09 09:00 | Зорькин В | 2h | 2h |
| 2930 | 19.13.1.4 | оформить ведение карты в журнал | 2h | 2024-09-10 09:00 A | 2024-09-10 11:00 A | 2929 | 100% |  |  |  | start no earlier than 2024-09-10 09:00 | Зорькин В | 2h | 2h |
| 2931 | 19.13.2 | **ТЕКО 1.5** | 0.88d | 2024-09-10 11:00 A | 2024-09-11 10:00 A | 2926 | 100% |  |  |  |  |  | 7h | 7h |
| 2932 | 19.13.2.1 | определить базовые точки относительно которых будет проводится замер в 3х плоскостях - флажки верх, флажки низ, смыкание ножа, центр трубы | 1h | 2024-09-10 11:00 A | 2024-09-10 12:00 A |  | 100% |  |  |  | start no earlier than 2024-09-10 09:00 | Зорькин В | 1h | 1h |
| 2933 | 19.13.2.2 | обвести в PAINT фото методику измерений, присвоить \имя каждому размеру | 2h | 2024-09-10 12:00 A | 2024-09-10 15:00 A | 2932 | 100% |  |  |  | start no earlier than 2024-09-06 08:00 | Зорькин В | 2h | 2h |
| 2934 | 19.13.2.3 | создать карту / таблицу настройки. Размер-дата-фио | 2h | 2024-09-10 15:00 A | 2024-09-10 17:00 A | 2933 | 100% |  |  |  | start no earlier than 2024-09-06 08:00 | Зорькин В | 2h | 2h |
| 2935 | 19.13.2.4 | оформить ведение карты в журнал | 2h | 2024-09-10 17:00 A | 2024-09-11 10:00 A | 2934 | 100% |  |  |  | start no earlier than 2024-09-06 08:00 | Зорькин В | 2h | 2h |
| 2936 | 19.13.3 | **ТЕКО 0,4** | 0.88d | 2024-09-11 10:00 | 2024-09-11 18:00 | 2931 |  |  | 649.59d |  |  |  | 7h |  |
| 2937 | 19.13.3.1 | определить базовые точки относительно которых будет проводится замер в 3х плоскостях - флажки верх, флажки низ, смыкание ножа, центр трубы | 1h | 2024-09-11 10:00 | 2024-09-11 11:00 |  |  |  | 649.59d | 0d | start no earlier than 2024-09-06 08:00 | Зорькин В | 1h |  |
| 2938 | 19.13.3.2 | обвести в PAINT фото методику измерений, присвоить \имя каждому размеру | 2h | 2024-09-11 11:00 | 2024-09-11 13:00 | 2937 |  |  | 649.59d | 0d | start no earlier than 2024-09-06 08:00 | Зорькин В | 2h |  |
| 2939 | 19.13.3.3 | создать карту / таблицу настройки. Размер-дата-фио | 2h | 2024-09-11 14:00 | 2024-09-11 16:00 | 2938 |  |  | 649.59d | 0d | start no earlier than 2024-09-06 08:00 | Зорькин В | 2h |  |
| 2940 | 19.13.3.4 | оформить ведение карты в журнал | 2h | 2024-09-11 16:00 | 2024-09-11 18:00 | 2939 |  |  | 649.59d |  | start no earlier than 2024-09-06 08:00 | Зорькин В | 2h |  |
| 2941 | 19.14 | **наполнение базы данных по занятиям, запись видео уроки** | 5.12d | 2024-09-09 09:00 A | 2024-09-16 10:00 |  | 5% | 4.88d | 647.47d |  |  |  | 42h | 2h |
| 2942 | 19.14.1 | заяавка фотокамера, штатив | 1h | 2024-09-09 09:00 A | 2024-09-09 10:00 A |  | 100% |  |  |  | start no earlier than 2024-09-09 09:00 | Зорькин В | 1h | 1h |
| 2943 | 19.14.2 | доставка | 5d | 2024-09-09 10:00 | 2024-09-16 10:00 | 2942 |  |  | 647.47d |  | start no earlier than 2024-09-06 08:00 | Мультан | 40h |  |
| 2944 | 19.14.3 | **Бестром** | 0.12d | 2024-09-16 09:00 A | 2024-09-16 10:00 A |  | 100% |  |  |  |  |  | 1h | 1h |
| 2945 | 19.14.3.1 | урок 1 | 1h | 2024-09-16 09:00 A | 2024-09-16 10:00 A | 2943 | 100% |  |  |  | start no earlier than 2024-09-16 09:00 | Зорькин В | 1h | 1h |
| 2946 | 20 | **администрантивные** | 121.25d | 2026-03-19 09:00 A | 2026-09-04 11:00 |  | 87% | 15.78d | 133.34d |  |  |  | 99.92h | 86.92h |
| 2947 | 20.1 | спсиание материалов | 6h | 2026-09-01 09:00 | 2026-09-01 16:00 |  |  |  | 135.84d |  | start no earlier than 2026-09-01 09:00 | Шуранов Ю | 6h |  |
| 2948 | 20.2 | составить список остатков шнеков в таблицу зип | 2h | 2026-09-01 09:00 | 2026-09-01 11:00 |  |  |  | 136.34d |  | start no earlier than 2026-09-01 09:00 | Шуранов Ю | 2h |  |
| 2949 | 20.3 | подготовить спсток перчаток | 3h | 2026-03-19 09:00 A | 2026-03-19 12:00 A |  | 100% |  |  |  | start no earlier than 2026-03-19 08:00 | Зорькин В | 3h | 3h |
| 2950 | 20.4 | подготовка данных дебеторская задолжность | 3h | 2026-03-19 09:00 A | 2026-03-19 12:00 A |  | 100% |  |  |  | start no earlier than 2026-03-19 08:00 | Зорькин В | 3h | 3h |
| 2951 | 20.5 | договор по ремонту стиральных машинок. Переговоры | 1h | 2026-09-01 09:00 | 2026-09-01 10:00 |  |  |  | 136.47d |  | start no earlier than 2026-09-01 09:00 | Шуранов Ю | 1h |  |
| 2952 | 20.6 | Составить список на год ППР (планово-предупредительные работы) на оборудовании Цеха №1, Цеха №2, Цеха навесок. | 2h | 2026-09-01 09:00 | 2026-09-01 11:00 |  |  |  | 136.34d |  | start no earlier than 2026-09-01 09:00 | Шуранов Ю | 2h |  |

| ID | WBS | Task | Type | Duration | Start | Finish | Predecessors | Complete | Remaining | Total slack | Free slack | Constraint | Resources | Work | Actual work |
| --- | --- | --- | --- | --- | --- | --- | --- | --- | --- | --- | --- | --- | --- | --- | --- |
| 2953 | 20.7 | **Ключи на шкафы** |  | 101.25d | 2026-04-16 09:00 A | 2026-09-04 11:00 |  | 98% | 2.45d | 133.34d |  |  |  | 82.75h | 80.75h |
| 2954 | 20.7.1 | Заказать |  | 30min | 2026-04-16 09:00 A | 2026-04-16 09:30 A |  | 100% |  |  |  | start no earlier than 2026-04-16 09:00 | Зорькин В | 0.5h | 0.5h |
| 2955 | 20.7.2 | доставить |  | 10d | 2026-04-16 09:30 A | 2026-04-30 09:30 A | 2954 | 100% |  |  |  | start no earlier than 2026-04-14 09:00 | Карабанов | 80h | 80h |
| 2956 | 20.7.3 | контроль доставка |  | 15min | 2026-05-15 09:00 A | 2026-05-15 09:15 A |  | 100% |  |  |  | start no earlier than 2026-05-15 09:00 | Зорькин В | 0.25h | 0.25h |
| 2957 | 20.7.4 | Повешать на веревочку ключи на все шкафы ВРУ и электрощитки (ключи на складе, веревочки взять на производстве, нитки) |  | 2h | 2026-09-04 09:00 | 2026-09-04 11:00 | 2955 |  |  | 133.34d |  | start no earlier than 2026-09-04 09:00 | Бобренок В | 2h |  |
| 2958 | 20.8 | Расписаться в нашем кабинете |  | 10min | 2026-07-28 09:00 A | 2026-07-28 09:10 A |  | 100% |  |  |  | start no earlier than 2026-07-28 09:00 | Макаревич А | 0.17h | 0.17h |
| 2959 | 21 | **ТБ** |  | 920.25d? | 2023-06-06 09:00 A | 2026-12-15 11:00 |  | 39% | 561.43d? | 61.34d |  |  |  | 249.92h | 96.67h |
| 2960 | 21.1 | инструктаж по ТБ оформить |  | 1h | 2026-08-31 09:00 | 2026-08-31 10:00 |  |  |  | 137.47d |  | start no earlier than 2026-08-31 09:00 | Шуранов Ю | 1h |  |
| 2961 | 21.2 | выполнить перелкаду похарных шлангов офис, 1ц |  | 2h | 2026-12-15 09:00 | 2026-12-15 11:00 |  |  |  | 61.34d |  | start no earlier than 2026-12-15 09:00 | Некрасов А; Труфанов А | 4h |  |
| 2962 | 21.3 | маркировка лестниц / оформление журналов |  | 2h | 2026-08-31 09:00 | 2026-08-31 11:00 |  |  |  | 137.34d |  | start no earlier than 2026-08-31 09:00 | Шуранов Ю | 2h |  |
| 2963 | 21.4 | внеплановый инструктаж персонала при аварии на проризводстве |  | 2h | 2025-03-26 09:00 A | 2025-03-26 11:00 A |  | 100% |  |  |  | start no earlier than 2025-03-26 08:00 | Шуранов Ю | 2h | 2h |
| 2964 | 21.5 | заявка на табличики НЕ ВКЛЮЧАТЬ |  | 10min | 2025-03-26 09:00 A | 2025-03-26 09:10 A |  | 100% |  |  |  | start no earlier than 2025-03-26 08:00 | Шуранов Ю | 0.17h | 0.17h |
| 2965 | 21.6 | офорить наряд допуск на монтаж кабеля КПП |  | 30min | 2024-08-05 09:00 A | 2024-08-05 09:30 A |  | 100% |  |  |  | start no earlier than 2024-08-05 09:00 | Шуранов Ю | 0.5h | 0.5h |
| 2966 | 21.7 | составить схемы кабельных линий по производству |  | 5d | 2026-09-01 09:00 | 2026-09-07 18:00 |  |  |  | 131.59d |  | start no earlier than 2026-09-01 09:00 | Шуранов Ю | 40h |  |
| 2967 | 21.8 | организация аттестации электроперсонала |  | 10d | 2024-05-14 09:00 A | 2024-05-27 18:00 A |  | 100% |  |  |  | start no earlier than 2024-05-14 09:00 | Шуранов Ю | 80h | 80h |
| 2968 | 21.9 | расклеить таблички на стремянки |  | 1h | 2023-10-18 09:00 A | 2023-10-18 10:00 A |  | 100% |  |  |  | start no earlier than 2023-10-18 09:00 | Тимофеев В | 1h | 1h |
| 2969 | 21.10 | вести журнал учета такелажных средств, механизмов и приспособлений |  | 1h | 2026-09-01 09:00 | 2026-09-01 10:00 |  |  |  | 136.47d |  | start no earlier than 2026-09-01 09:00 | Шуранов Ю | 1h |  |
| 2970 | 21.11 | комплект сиз для высотных работ |  | 1h | 2023-06-09 09:00 A | 2023-06-09 10:00 A |  | 100% |  |  |  | start no earlier than 2023-06-09 09:00 | Лобанов И | 1h | 1h |
| 2971 | 21.12 | тестер индикторная отвертка |  | 1h | 2024-05-14 09:00 A | 2024-05-14 10:00 A |  | 100% |  |  |  | start no earlier than 2024-05-14 09:00 | Шуранов Ю | 1h | 1h |
| 2972 | 21.13 | заявка на диэл коврик, галоши, перчатки, маска, таблички |  | 1h | 2026-09-01 09:00 | 2026-09-01 10:00 |  |  |  | 136.47d |  | start no earlier than 2026-09-01 09:00 | Шуранов Ю | 1h |  |
| 2973 | 21.14 | заявка спецодежда наладчикам |  | 1d? | 2024-05-14 09:00 A | 2024-05-14 18:00 A |  | 100% |  |  |  | start no earlier than 2024-05-14 09:00 | Шуранов Ю | 8h | 8h |
| 2974 | 21.15 | аттестация охрана труда |  | 10d | 2024-05-14 09:00 | 2024-05-27 18:00 |  |  |  | 726.59d |  | start no earlier than 2024-05-14 09:00 | Шуранов Ю | 80h |  |
| 2975 | 21.16 | **испытание стеллажей** |  | 847d? | 2023-06-06 09:00 A | 2026-09-02 18:00 |  | 11% | 753.75d? | 134.59d |  |  |  | 27.25h | 3h |
| 2976 | 21.16.1 | оплата испытания стеллажей контроль | milestone | 0d | 2023-06-06 09:00 A | 2023-06-06 09:00 A |  | 100% |  |  |  | start no earlier than 2023-06-06 09:00 | Домоводов К |  |  |
| 2977 | 21.16.2 | орг испытание стеллажей |  | 1h | 2023-07-11 09:00 A | 2023-07-11 10:00 A |  | 100% |  |  |  | start no earlier than 2023-07-11 09:00 | Домоводов К | 1h | 1h |
| 2978 | 21.16.3 | график осмотров стеллажей |  | 1d? | 2026-08-31 09:00 | 2026-08-31 18:00 | 2976 |  |  | 134.59d | 0d | start no earlier than 2026-08-31 09:00 | Домоводов К | 8h |  |
| 2979 | 21.16.4 | табличка КП |  | 1d? | 2026-09-01 09:00 | 2026-09-01 18:00 | 2978 |  |  | 134.59d | 0d | start no earlier than 2023-04-27 08:00 | Домоводов К | 8h |  |
| 2980 | 21.16.5 | журнал технического освидетельствования стеллажей |  | 1d? | 2026-09-02 09:00 | 2026-09-02 18:00 | 2979 |  |  | 134.59d |  | start no earlier than 2023-04-27 08:00 | Домоводов К | 8h |  |
| 2981 | 21.16.6 | запрос стоимости ремонта стеллажей в 5ц |  | 2h | 2026-08-18 09:00 A | 2026-08-18 11:00 A |  | 100% |  |  |  | start no earlier than 2026-08-18 09:00 | Шуранов Ю | 2h | 2h |
| 2982 | 21.16.7 | контрольизг |  | 15min | 2026-08-27 09:00 | 2026-08-27 09:15 |  |  |  | 139.56d |  | start no earlier than 2026-08-27 09:00 | Шуранов Ю | 0.25h |  |

| ID | WBS | Task | Type | Duration | Start | Finish | Predecessors | Complete | Remaining | Total slack | Free slack | Constraint | Resources | Work | Actual work |
| --- | --- | --- | --- | --- | --- | --- | --- | --- | --- | --- | --- | --- | --- | --- | --- |
| 2983 | 22 | **офис** |  | 0.12d | 2025-06-11 09:00 A | 2025-06-11 10:00 A |  | 100% |  |  |  |  |  | 2h | 2h |
| 2984 | 22.1 | ремонт светильник моргает , бухгалтерия |  | 1h | 2025-06-11 09:00 A | 2025-06-11 10:00 A |  | 100% |  |  |  | start no earlier than 2025-06-11 09:00 | Тимофеев В; Дедов В | 2h | 2h |
| 2985 | 23 | **территория** |  | 403.5d? | 2025-02-20 09:00 A | 2026-09-08 13:00 |  | 52% | 193.28d? | 131.09d |  |  |  | 192.75h | 75.75h |
| 2986 | 23.1 | отсыпать спуск для парковки между цех 2 и 3 |  | 1d? | 2026-08-26 09:00 A | 2026-08-26 18:00 A |  | 100% |  |  |  | start no earlier than 2026-08-26 08:00 | Дворник | 8h | 8h |
| 2987 | 23.2 | отсыпать тропинку до КТПН |  | 1d? | 2026-08-27 09:00 | 2026-08-27 18:00 |  |  |  | 138.59d |  | start no earlier than 2026-08-27 09:00 | Дворник | 8h |  |
| 2988 | 23.3 | **орг водосток КПП - 5ц** |  | 0.03d | 2026-08-31 09:00 | 2026-08-31 09:15 |  |  |  | 137.56d |  |  |  | 0.25h |  |
| 2989 | 23.3.1 | получить КП от Вугара |  | 15min | 2026-08-31 09:00 | 2026-08-31 09:15 |  |  |  | 137.56d |  | start no earlier than 2026-08-31 09:00 | Домоводов К | 0.25h |  |
| 2990 | 23.4 | **орг водосток между 4 и5А** |  | 0.03d | 2026-08-31 09:00 | 2026-08-31 09:15 |  |  |  | 137.56d |  |  |  | 0.25h |  |
| 2991 | 23.4.1 | получить КП от Вугара |  | 15min | 2026-08-31 09:00 | 2026-08-31 09:15 |  |  |  | 137.56d |  | start no earlier than 2026-08-31 09:00 | Домоводов К | 0.25h |  |
| 2992 | 23.5 | **Белявский выравнивание стены** |  | 14.16d | 2026-08-13 09:00 A | 2026-09-02 10:15 |  | 13% | 12.33d | 135.44d |  |  |  | 2.58h | 0.33h |
| 2993 | 23.5.1 | оформить план работ, эскиз предложенный ГИП Глуходед |  | 1h | 2026-09-01 09:00 | 2026-09-01 10:00 |  |  |  | 135.44d | 0d | start no earlier than 2026-09-01 09:00 | Домоводов К | 1h |  |
| 2994 | 23.5.2 | поиск подрядчика на перекладку панели |  | 1h | 2026-09-01 09:00 | 2026-09-01 10:00 |  |  |  | 136.47d |  | start no earlier than 2026-09-01 09:00 | Домоводов К | 1h |  |
| 2995 | 23.5.3 | звонок по решению от варианта ремонта Белявского |  | 20min | 2026-08-13 09:00 A | 2026-08-13 09:20 A |  | 100% |  |  |  | start no earlier than 2026-08-13 09:00 | Домоводов К | 0.33h | 0.33h |
| 2996 | 23.5.4 | ожидание КП от бригады Белявского | milestone | 0d | 2026-08-20 09:00 A | 2026-08-20 09:00 A | 2995FS+1d | 100% |  |  |  | start no earlier than 2026-08-20 09:00 | Домоводов К |  |  |
| 2997 | 23.5.5 | согл работы с ГД | milestone | 0d | 2026-09-01 10:00 | 2026-09-01 10:00 | 2993, 2996FS+1d |  |  | 135.44d | 0d | start no earlier than 2026-08-31 09:00 | Домоводов К |  |  |
| 2998 | 23.5.6 | заказ кран |  | 15min | 2026-09-02 10:00 | 2026-09-02 10:15 | 2997FS+1d |  |  | 135.44d |  | start no earlier than 2026-08-13 09:00 | Зорькин В | 0.25h |  |
| 2999 | 23.6 | замена тусклых или не рабочих ламп на мухоловках 1,2,5 цех.Схемы расположения предоставлю (количество ламп, которые поменял указать в отчете) |  | 4h | 2026-08-06 09:00 A | 2026-08-06 13:00 A |  | 100% |  |  |  | start no earlier than 2026-08-06 08:00 | Труфанов А | 4h | 4h |
| 3000 | 23.7 | **КПП ревизия прожектор, не горит** |  | 1.12d | 2026-07-08 09:00 A | 2026-07-09 10:00 A |  | 100% |  |  |  |  |  | 1.33h | 1.33h |
| 3001 | 23.7.1 | Сфотать шильдик от прожектора кпп |  | 20min | 2026-07-08 09:00 A | 2026-07-08 09:20 A |  | 100% |  |  |  | start no earlier than 2026-07-08 08:00 | Бундин В | 0.33h | 0.33h |
| 3002 | 23.7.2 | монтаж прожетора |  | 1h | 2026-07-09 09:00 A | 2026-07-09 10:00 A |  | 100% |  |  |  | start no earlier than 2026-07-09 09:00 | Бобренок В | 1h | 1h |
| 3003 | 23.8 | установить люки колодцев на всей территории | manual | 4h | 2026-09-08 09:00 | 2026-09-08 13:00 |  |  |  |  |  | start no earlier than 2026-09-08 09:00 | Тимофеев В | 4h |  |
| 3004 | 23.9 | **установить пост для зарядки эл мобиль директору** |  | 1d? | 2026-06-03 09:00 | 2026-06-03 18:00 |  |  |  | 199.59d |  |  |  |  |  |
| 3005 | 23.9.1 | заявка на щиток / кабель |  | 1d? | 2026-06-03 09:00 | 2026-06-03 18:00 |  |  |  | 199.59d |  | start no earlier than 2026-06-03 08:00 |  |  |  |
| 3006 | 23.10 | уборка строительный мусор задний двор 5А склад |  | 2h | 2026-05-27 09:00 | 2026-05-27 11:00 |  |  |  | 205.34d |  | start no earlier than 2026-05-27 09:00 | оператор2 | 2h |  |
| 3007 | 23.11 | поправить бетонную крышку колодца. Дренаж вдоль забора колодец №2 |  | 2h | 2026-05-27 09:00 | 2026-05-27 11:00 |  |  |  | 205.34d |  | start no earlier than 2026-05-27 09:00 | оператор2 | 2h |  |
| 3008 | 23.12 | расчистить камни, для доступа к люку. Дренаж вдоль забора колодец №2 |  | 2h | 2026-05-27 09:00 | 2026-05-27 11:00 |  |  |  | 205.34d |  | start no earlier than 2026-05-27 09:00 | оператор2 | 2h |  |
| 3009 | 23.13 | проверка всех стемянок по цехам, приклеить бумажки о проверке |  | 1d? | 2026-06-26 09:00 A | 2026-06-26 18:00 A |  | 100% |  |  |  | start no earlier than 2026-06-26 09:00 | Шуранов Ю | 8h | 8h |
| 3010 | 23.14 | в 1,2,3 цехе ближе к утру выключить все оборудование, кроме камер охраны КПП- подготовка к фогации |  | 2h | 2026-04-30 08:00 A | 2026-04-30 11:00 A |  | 100% |  |  |  | start no earlier than 2026-04-30 08:00 | Дедов В | 2h | 2h |
| 3011 | 23.15 | заизолировать гофру в местах разрыва (гофра с кабелем для рефрежераторов возле нашего склада) | manual | 1h | 2026-04-26 09:00 A | 2026-04-26 10:00 A |  | 100% |  |  |  | start no earlier than 2026-04-26 09:00 | Макаревич А | 1h | 1h |
| 3012 | 23.16 | ремонт стен сосед Белявский |  | 5d | 2026-04-16 09:00 | 2026-04-22 18:00 |  |  |  | 229.59d |  | start no earlier than 2026-04-16 08:00 | Олег; Некрасов А | 80h |  |

| ID | WBS | Task | Type | Duration | Start | Finish | Predecessors | Complete | Remaining | Total slack | Free slack | Constraint | Resources | Work | Actual work |
| --- | --- | --- | --- | --- | --- | --- | --- | --- | --- | --- | --- | --- | --- | --- | --- |
| 3013 | 23.17 | **выезд ул.Писемского** |  | 15.03d | 2026-08-11 09:00 A | 2026-09-01 09:15 |  | 89% | 1.67d | 136.56d |  |  |  | 2.25h | 2h |
| 3014 | 23.17.1 | **топосъемка** |  | 15.03d | 2026-08-11 09:00 A | 2026-09-01 09:15 |  | 67% | 5.01d | 136.56d |  |  |  | 0.75h | 0.5h |
| 3015 | 23.17.1.1 | получить старт от ГД | milestone | 0d | 2026-08-31 09:00 | 2026-08-31 09:00 |  |  |  | 136.56d | 0d | start no earlier than 2026-08-31 09:00 | Домоводов К |  |  |
| 3016 | 23.17.1.2 | поск исполнителя / запрос счет |  | 30min | 2026-08-11 09:00 A | 2026-08-11 09:30 A |  | 100% |  |  |  | start no earlier than 2026-08-11 09:00 | Домоводов К | 0.5h | 0.5h |
| 3017 | 23.17.1.3 | контроль оплата |  | 15min | 2026-09-01 09:00 | 2026-09-01 09:15 | 3015FS+1d, 3016FS+5d |  |  | 136.56d | 0d | start no earlier than 2026-08-24 09:00 | Домоводов К | 0.25h |  |
| 3018 | 23.17.2 | **геология** |  | 15.03d | 2026-08-11 09:00 A | 2026-09-01 09:15 |  | 99% | 0d | 136.56d |  |  |  | 0.5h | 0.5h |
| 3019 | 23.17.2.1 | поск исполнителя / запрос счет |  | 30min | 2026-08-11 09:00 A | 2026-08-11 09:30 A |  | 100% |  |  |  | start no earlier than 2026-08-11 09:00 | Домоводов К | 0.5h | 0.5h |
| 3020 | 23.17.2.2 | контроль оплата | milestone | 0min | 2026-09-01 09:15 | 2026-09-01 09:15 | 3017, 3019FS+5d |  |  | 136.56d | 0d | start no earlier than 2026-08-10 08:00 | Домоводов К |  |  |
| 3021 | 23.17.3 | **проект дорога** |  | 15.03d | 2026-08-11 09:00 A | 2026-09-01 09:15 |  | 99% | 0d | 136.56d |  |  |  | 0.5h | 0.5h |
| 3022 | 23.17.3.1 | поск исполнителя / запрос счет |  | 30min | 2026-08-11 09:00 A | 2026-08-11 09:30 A |  | 100% |  |  |  | start no earlier than 2026-08-11 09:00 | Домоводов К | 0.5h | 0.5h |
| 3023 | 23.17.3.2 | получить счет / договор | milestone | 0d | 2026-08-13 09:00 A | 2026-08-13 09:00 A |  | 100% |  |  |  | start no earlier than 2026-08-13 09:00 | Домоводов К |  |  |
| 3024 | 23.17.3.3 | контроль оплата | milestone | 0min | 2026-09-01 09:15 | 2026-09-01 09:15 | 3020, 3022FS+5d |  |  | 136.56d | 0d | start no earlier than 2026-08-10 08:00 | Домоводов К |  |  |
| 3025 | 23.17.4 | **проект бетонная подушка** |  | 15.03d | 2026-08-11 09:00 A | 2026-09-01 09:15 |  | 99% | 0d | 136.56d |  |  |  | 0.5h | 0.5h |
| 3026 | 23.17.4.1 | поск исполнителя / запрос счет |  | 30min | 2026-08-11 09:00 A | 2026-08-11 09:30 A |  | 100% |  |  |  | start no earlier than 2026-08-11 09:00 | Домоводов К | 0.5h | 0.5h |
| 3027 | 23.17.4.2 | получить счет / договор | milestone | 0d | 2026-08-13 09:00 A | 2026-08-13 09:00 A |  | 100% |  |  |  | start no earlier than 2026-08-13 09:00 | Домоводов К |  |  |
| 3028 | 23.17.4.3 | контроль оплата | milestone | 0min | 2026-09-01 09:15 | 2026-09-01 09:15 | 3024, 3026FS+5d |  |  | 136.56d |  | start no earlier than 2026-08-10 08:00 | Домоводов К |  |  |
| 3029 | 23.18 | Сборка рамы и навеса для мусорки 2 ц возле 1 КПП |  | 4h | 2026-09-04 09:00 | 2026-09-04 13:00 |  |  |  | 133.09d |  | start no earlier than 2026-09-04 09:00 | Некрасов А; Макаревич А | 8h |  |
| 3030 | 23.19 | Покраска рамы новой мусорки, стоит у ворот навесок 2 цех |  | 1h | 2026-09-04 09:00 | 2026-09-04 10:00 |  |  |  | 133.47d |  | start no earlier than 2026-09-04 09:00 | Некрасов А; Макаревич А | 2h |  |
| 3031 | 23.20 | Монтаж дверей на мусорку собираем раму (петли привезем после обеда) |  | 3h | 2026-09-04 09:00 | 2026-09-04 12:00 |  |  |  | 133.22d |  | start no earlier than 2026-09-04 09:00 | Некрасов А; Макаревич А | 6h |  |
| 3032 | 23.21 | **асфальтирование дороги до 5ц** |  | 11.25d? | 2026-08-11 09:00 A | 2026-08-26 11:00 A |  | 100% |  |  |  |  |  | 36.5h | 36.5h |
| 3033 | 23.21.1 | составить схему площади дороги / 3 корректировки |  | 2h | 2026-08-11 09:00 A | 2026-08-11 11:00 A |  | 100% |  |  |  | start no earlier than 2026-08-11 09:00 | Зорькин В | 2h | 2h |
| 3034 | 23.21.2 | получить цену исполнителя |  | 1d | 2026-08-11 11:00 A | 2026-08-12 11:00 A | 3033 | 100% |  |  |  | start no earlier than 2026-08-10 08:00 | Домоводов К | 8h | 8h |
| 3035 | 23.21.3 | согл с ГД |  | 1d | 2026-08-11 09:00 A | 2026-08-11 18:00 A | 3034 | 100% |  |  |  | start no earlier than 2026-08-10 08:00 | Домоводов К | 8h | 8h |
| 3036 | 23.21.4 | получить счет от Вугара | milestone | 0h | 2026-08-12 09:00 A | 2026-08-12 09:00 A |  | 100% |  |  |  | start no earlier than 2026-08-12 09:00 | Домоводов К |  |  |
| 3037 | 23.21.5 | будет ли Вугар оформлятся как подрядчик? Соглаосвать с ГД |  | 15min | 2026-08-17 09:00 A | 2026-08-17 09:15 A |  | 100% |  |  |  | start no earlier than 2026-08-17 09:00 | Домоводов К | 0.25h | 0.25h |
| 3038 | 23.21.6 | корректировка чертеж объем работ |  | 1d? | 2026-08-20 09:00 A | 2026-08-20 18:00 A |  | 100% |  |  |  | start no earlier than 2026-08-20 09:00 | Домоводов К | 8h | 8h |
| 3039 | 23.21.7 | подготовка смета |  | 2h | 2026-08-26 09:00 A | 2026-08-26 11:00 A |  | 100% |  |  |  | start no earlier than 2026-08-26 09:00 | Домоводов К | 2h | 2h |
| 3040 | 23.21.8 | контроль сроков завоза техники |  | 15min | 2026-08-14 09:00 A | 2026-08-14 09:15 A |  | 100% |  |  |  | start no earlier than 2026-08-14 09:00 | Домоводов К | 0.25h | 0.25h |
| 3041 | 23.21.9 | монтаж |  | 1d? | 2026-08-19 09:00 A | 2026-08-19 18:00 A | 3035, 3036 | 100% |  |  |  | start no earlier than 2026-08-19 09:00 | Подрядчик | 8h | 8h |
| 3042 | 23.22 | взять роутер у нас в кабинете - подключить к UTP кабелю |  | 1d? | 2026-04-13 09:00 A | 2026-04-13 18:00 A |  | 100% |  |  |  | start no earlier than 2026-04-13 09:00 |  |  |  |
| 3043 | 23.23 | в цехе 2, 3, 4 и 5 убавить температуры на нагревателях и газ. Котлах |  | 4h | 2026-03-31 09:00 A | 2026-03-31 13:00 A |  | 100% |  |  |  | start no earlier than 2026-03-31 08:00 | Бундин В | 4h | 4h |
| 3044 | 23.24 | перенос камеры на 10см ниже КПП |  | 3h | 2026-03-21 09:00 A | 2026-03-23 12:00 A |  | 100% |  |  |  | start no earlier than 2026-03-21 09:00 | Бундин В | 3h | 3h |
| 3045 | 23.25 | запуск контейнер рэф |  | 2h | 2026-03-20 09:00 A | 2026-03-20 11:00 A |  | 100% |  |  |  | start no earlier than 2026-03-20 09:00 | Шуранов Ю | 2h | 2h |

| ID | WBS | Task | Duration | Start | Finish | Predecessors | Complete | Remaining | Total slack | Free slack | Constraint | Resources | Work | Actual work |
| --- | --- | --- | --- | --- | --- | --- | --- | --- | --- | --- | --- | --- | --- | --- |
| 3046 | 23.26 | **выровнить контейнеры, перекос двери** | 3.25d | 2026-03-19 09:00 A | 2026-03-24 11:00 A |  | 100% |  |  |  |  |  | 2.5h | 2.5h |
| 3047 | 23.26.1 | заявка кран | 30min | 2026-03-19 09:00 A | 2026-03-19 09:30 A |  | 100% |  |  |  | start no earlier than 2026-03-19 09:00 | Шуранов Ю | 0.5h | 0.5h |
| 3048 | 23.26.2 | работа по выравниванию | 2h | 2026-03-24 09:00 A | 2026-03-24 11:00 A | 3047FS+1d | 100% |  |  |  | start no earlier than 2026-03-24 09:00 | Некрасов А | 2h | 2h |
| 3049 | 23.27 | **двойной шлагбаум замрзает** | 5.01d | 2025-02-20 09:00 A | 2025-02-27 09:05 A |  | 100% |  |  |  |  |  | 1.08h | 1.08h |
| 3050 | 23.27.1 | вызов сервисного инженера контроль даты | 5min | 2025-02-27 09:00 A | 2025-02-27 09:05 A |  | 100% |  |  |  | start no earlier than 2025-02-27 09:00 | Шуранов Ю | 0.08h | 0.08h |
| 3051 | 23.27.2 | осмотр с сервисн инжзенером | 1h | 2025-02-20 09:00 A | 2025-02-20 10:00 A |  | 100% |  |  |  | start no earlier than 2025-02-20 09:00 | Шуранов Ю | 1h | 1h |
| 3052 | 24 | **ежедневные обходы и осмотры** | 473.5d | 2024-05-14 09:00 A | 2026-03-06 13:00 |  | 16% | 398.74d | 263.09d |  |  |  | 25.33h | 4h |
| 3053 | 24.1 | цех 1 | 20min | 2024-05-14 09:00 | 2024-05-14 09:20 |  |  |  | 734.01d | 0d | start no earlier than 2024-05-14 09:00 | Шуранов Ю | 0.33h |  |
| 3054 | 24.2 | цех 2 | 20min | 2024-05-14 09:00 | 2024-05-14 09:20 |  |  |  | 736.55d |  | start no earlier than 2024-05-14 09:00 | Шуранов Ю | 0.33h |  |
| 3055 | 24.3 | цех навесок | 20min | 2024-05-14 09:20 | 2024-05-14 09:40 | 3053 |  |  | 734.01d | 0d | start no earlier than 2024-05-14 09:00 | Шуранов Ю | 0.33h |  |
| 3056 | 24.4 | техника | 20h | 2024-05-14 09:40 | 2024-05-16 14:40 | 3055 |  |  | 734.01d |  | start no earlier than 2024-05-14 09:00 | Шуранов Ю | 20h |  |
| 3057 | 24.5 | вести журнал осмотров стеллажей | 20min | 2024-05-14 09:00 | 2024-05-14 09:20 |  |  |  | 736.55d |  | start no earlier than 2024-05-14 09:00 | Шуранов Ю | 0.33h |  |
| 3058 | 24.6 | оперативная работа | 4h | 2026-03-06 09:00 A | 2026-03-06 13:00 A |  | 100% |  |  |  | start no earlier than 2026-03-06 09:00 | Бобренок В | 4h | 4h |
| 3059 | 25 | **замена шнеков** | 882.5d? | 2023-03-29 09:00 A | 2026-08-14 13:00 |  | 2% | 864.01d? | 148.09d |  |  |  | 53h | 34h |
| 3060 | 25.1 | посчитать количество шнеков и гильз для цех1 и цех 2 | 2h | 2026-04-03 09:00 | 2026-04-03 11:00 |  |  |  | 243.34d |  | start no earlier than 2026-04-03 09:00 | Шуранов Ю | 2h |  |
| 3061 | 25.2 | вести список и учет замены шнеков | 1h | 2024-05-14 09:00 | 2024-05-14 10:00 |  |  |  | 736.47d |  | start no earlier than 2024-05-14 09:00 | Шуранов Ю | 1h |  |
| 3062 | 25.3 | линия 3 - было 3/приход спец12-3/спец14-9 | 1d? | 2024-04-15 09:00 A | 2024-04-15 18:00 A |  | 100% |  |  |  | start no earlier than 2024-04-15 08:00 |  |  |  |
| 3063 | 25.4 | линия3 | 42d | 2023-10-16 09:00 | 2023-12-12 18:00 |  |  |  | 845.59d |  | start no earlier than 2023-10-16 09:00 |  |  |  |
| 3064 | 25.5 | линия3 | 30d | 2023-12-12 09:00 | 2024-01-22 18:00 |  |  |  | 816.59d |  | start no earlier than 2023-12-12 09:00 |  |  |  |
| 3065 | 25.6 | линия3 | 45d | 2024-01-24 09:00 | 2024-03-26 18:00 |  |  |  | 770.59d |  | start no earlier than 2024-01-24 09:00 |  |  |  |
| 3066 | 25.7 | линия3 | 11d | 2023-03-29 09:00 | 2023-04-12 18:00 |  |  |  | 1019.59d |  | start no earlier than 2023-03-29 09:00 |  |  |  |
| 3067 | 25.8 | линия3 | 1d? | 2023-04-12 09:00 | 2023-04-12 18:00 |  |  |  | 1019.59d |  | start no earlier than 2023-04-12 09:00 |  |  |  |
| 3068 | 25.9 | линия 3 | 1.38d? | 2024-05-08 08:00 A | 2024-05-13 11:00 A |  | 100% |  |  |  | start no earlier than 2024-05-08 08:00 | Макаревич А; Некрасов А; Черепанов И | 26h | 26h |
| 3069 | 25.10 | диния 3 | 1d? | 2024-05-20 09:00 | 2024-05-20 18:00 |  |  |  | 731.59d |  | start no earlier than 2024-05-20 09:00 | Некрасов А; Тимофеев В | 16h |  |
| 3200 | 25.11 | замена линия 3, была струшка | 4h | 2026-08-14 09:00 A | 2026-08-14 13:00 A |  | 100% |  |  |  | start no earlier than 2026-08-14 09:00 | Некрасов А; Бундин В | 8h | 8h |
